| id | project_id | wbs_level | description | task_type | status | priority | progress | full_time_ratio | dependency_type | delay_count | plan_change_count | progress_record_count | assignee_id | start_date | end_date | is_six_day_week | planned_duration | warning_days | version | created_at | updated_at | sort_order | assignee_name | project_name | project_code | computed_status | computed_execution_status | computed_time_status | parent_id | duration | actual_start_date | actual_end_date | actual_duration | actual_cycle | last_plan_refresh_at |
| --- | --- | --- | --- | --- | --- | --- | --- | --- | --- | --- | --- | --- | --- | --- | --- | --- | --- | --- | --- | --- | --- | --- | --- | --- | --- | --- | --- | --- | --- | --- | --- | --- | --- | --- | --- |
| 271b47e3-0a5b-4763-8715-34e66f9e5850 | 16 | 1 | 2188显示屏固件开发 | firmware | not_started | medium | 0.00 | 100.00 | FS | 0 | 0 | 1 | 1609 | 2026-05-02T16:00:00.000Z | 2026-05-02T16:00:00.000Z | 0 | 1 | 3 | 1 | 2026-05-03T05:39:25.000Z | 2026-05-03T05:39:25.000Z | 58 | 胡斌 | 超高端心脏机 | 2188 | delayed | not_started | delayed |  |  |  |  |  |  |  |
| 97509e93-c6db-4447-aeb6-84f57fbb179d | 16 | 2 | 嵌入式变更方案设计完成 | other | not_started | medium | 0.00 | 100.00 | FS | 0 | 0 | 1 | 1609 | 2026-02-11T16:00:00.000Z | 2026-03-05T16:00:00.000Z | 0 | 23 | 3 | 1 | 2026-05-03T05:39:25.000Z | 2026-05-03T05:39:25.000Z | 60 | 胡斌 | 超高端心脏机 | 2188 | delayed | not_started | delayed | 271b47e3-0a5b-4763-8715-34e66f9e5850 | 17 |  |  |  |  |  |
| e398e1e8-357b-41bf-af4b-2fa2a027c7b6 | 16 | 2 | 嵌入式编写代码完成 | other | not_started | medium | 0.00 | 100.00 | FS | 0 | 0 | 1 | 1609 | 2026-03-08T16:00:00.000Z | 2026-03-12T16:00:00.000Z | 0 | 5 | 3 | 1 | 2026-05-03T05:39:25.000Z | 2026-05-03T05:39:25.000Z | 61 | 胡斌 | 超高端心脏机 | 2188 | delayed | not_started | delayed | 271b47e3-0a5b-4763-8715-34e66f9e5850 | 5 |  |  |  |  |  |
| a5f1cd27-4185-46e7-b0c7-5ac4fb70801c | 16 | 2 | 嵌入式调试自测试完成 | other | not_started | medium | 0.00 | 100.00 | FS | 0 | 0 | 1 | 1609 | 2026-03-15T16:00:00.000Z | 2026-03-19T16:00:00.000Z | 0 | 5 | 3 | 1 | 2026-05-03T05:39:25.000Z | 2026-05-03T05:39:25.000Z | 62 | 胡斌 | 超高端心脏机 | 2188 | delayed | not_started | delayed | 271b47e3-0a5b-4763-8715-34e66f9e5850 | 5 |  |  |  |  |  |
| d68d4138-b484-496e-a32b-957bd59e84a4 | 16 | 2 | 嵌入式版本发布完成 | other | not_started | medium | 0.00 | 100.00 | FS | 0 | 0 | 1 | 1609 | 2026-03-22T16:00:00.000Z | 2026-03-26T16:00:00.000Z | 0 | 5 | 3 | 1 | 2026-05-03T05:39:25.000Z | 2026-05-03T05:39:25.000Z | 63 | 胡斌 | 超高端心脏机 | 2188 | delayed | not_started | delayed | 271b47e3-0a5b-4763-8715-34e66f9e5850 | 5 |  |  |  |  |  |
| f1984559-7f26-4d63-a0fe-26defd6dc2b3 | 16 | 2 | 嵌入式测试过A完成 | other | not_started | medium | 0.00 | 100.00 | FS | 0 | 0 | 1 | 1609 | 2026-03-29T16:00:00.000Z | 2026-04-29T16:00:00.000Z | 0 | 32 | 3 | 1 | 2026-05-03T05:39:25.000Z | 2026-05-03T05:39:25.000Z | 64 | 胡斌 | 超高端心脏机 | 2188 | delayed | not_started | delayed | 271b47e3-0a5b-4763-8715-34e66f9e5850 | 23 |  |  |  |  |  |
| 75eadf7a-e102-41b5-a35f-582e53fa08ed | 16 | 2 | 嵌入式测试过B完成 | other | not_started | medium | 0.00 | 100.00 | FS | 0 | 0 | 1 | 1609 | 2026-04-29T16:00:00.000Z | 2026-06-03T16:00:00.000Z | 0 | 36 | 3 | 1 | 2026-05-03T05:39:25.000Z | 2026-05-03T05:39:25.000Z | 65 | 胡斌 | 超高端心脏机 | 2188 | not_started | not_started | normal | 271b47e3-0a5b-4763-8715-34e66f9e5850 | 22 |  |  |  |  |  |
| 5d8c6a75-82d1-4f34-b01a-231dc9e90037 | 18 | 1 | 3702_开关机子系统 | sys_design | not_started | medium | 0.00 | 100.00 | FS | 0 | 0 | 1 | 1609 | 2026-05-02T16:00:00.000Z | 2026-05-02T16:00:00.000Z | 0 | 1 | 3 | 1 | 2026-05-03T05:39:25.000Z | 2026-05-03T05:39:25.000Z | 66 | 胡斌 | 超极本 | 3702 | delayed | not_started | delayed |  |  |  |  |  |  |  |
| 40369f3e-f8c9-4284-8048-d3cdd5cb4164 | 18 | 2 | 用户需求分析 | other | not_started | medium | 0.00 | 100.00 | FS | 0 | 0 | 1 | 1609 | 2024-10-29T16:00:00.000Z | 2024-11-25T16:00:00.000Z | 0 | 28 | 3 | 3 | 2026-05-03T05:39:25.000Z | 2026-05-05T12:38:37.000Z | 100 | 胡斌 | 超极本 | 3702 | delayed | not_started | delayed | 5d8c6a75-82d1-4f34-b01a-231dc9e90037 | 20 |  |  |  |  |  |
| 7134c8be-4efa-49db-a1b3-1b2fded3fa55 | 18 | 2 | 用户需求评审 | other | not_started | medium | 0.00 | 100.00 | FS | 0 | 0 | 1 | 1609 | 2024-11-26T16:00:00.000Z | 2024-12-02T16:00:00.000Z | 0 | 7 | 3 | 3 | 2026-05-03T05:39:25.000Z | 2026-05-05T12:38:37.000Z | 200 | 胡斌 | 超极本 | 3702 | delayed | not_started | delayed | 5d8c6a75-82d1-4f34-b01a-231dc9e90037 | 5 |  |  |  |  |  |
| b3143ba4-e245-4c59-a35e-a56506819f4e | 18 | 2 | 设计需求定义 | other | not_started | medium | 0.00 | 100.00 | FS | 0 | 0 | 1 | 1609 | 2024-12-31T16:00:00.000Z | 2025-01-12T16:00:00.000Z | 0 | 13 | 3 | 3 | 2026-05-03T05:39:25.000Z | 2026-05-05T12:38:37.000Z | 300 | 胡斌 | 超极本 | 3702 | delayed | not_started | delayed | 5d8c6a75-82d1-4f34-b01a-231dc9e90037 | 9 |  |  |  |  |  |
| 385c73bd-883b-4c23-b909-6095d8caff7c | 18 | 2 | 设计需求评审 | other | not_started | medium | 0.00 | 100.00 | FS | 0 | 0 | 1 | 1609 | 2025-01-13T16:00:00.000Z | 2025-04-15T16:00:00.000Z | 0 | 93 | 3 | 3 | 2026-05-03T05:39:25.000Z | 2026-05-05T12:38:37.000Z | 400 | 胡斌 | 超极本 | 3702 | delayed | not_started | delayed | 5d8c6a75-82d1-4f34-b01a-231dc9e90037 | 67 |  |  |  |  |  |
| fc875bf5-477b-421d-aa49-98a74f221819 | 18 | 2 | 方案设计 | other | not_started | medium | 0.00 | 100.00 | FS | 0 | 0 | 1 | 1609 | 2024-12-03T16:00:00.000Z | 2025-01-06T16:00:00.000Z | 0 | 35 | 3 | 3 | 2026-05-03T05:39:25.000Z | 2026-05-05T12:38:37.000Z | 500 | 胡斌 | 超极本 | 3702 | delayed | not_started | delayed | 5d8c6a75-82d1-4f34-b01a-231dc9e90037 | 25 |  |  |  |  |  |
| 8d0882f5-c73e-4a5b-aefd-35ff5327e262 | 18 | 2 | 方案设计评审1 | other | not_started | medium | 0.00 | 100.00 | FS | 0 | 0 | 1 | 1609 | 2025-01-07T16:00:00.000Z | 2025-01-13T16:00:00.000Z | 0 | 7 | 3 | 3 | 2026-05-03T05:39:25.000Z | 2026-05-05T12:38:37.000Z | 600 | 胡斌 | 超极本 | 3702 | delayed | not_started | delayed | 5d8c6a75-82d1-4f34-b01a-231dc9e90037 | 5 |  |  |  |  |  |
| 1b3c5037-e180-42a7-96b9-050c7393ede7 | 18 | 2 | 方案设计评审2 | other | not_started | medium | 0.00 | 100.00 | FS | 0 | 0 | 1 | 1609 | 2025-01-14T16:00:00.000Z | 2025-04-17T16:00:00.000Z | 0 | 94 | 3 | 3 | 2026-05-03T05:39:25.000Z | 2026-05-05T12:38:37.000Z | 700 | 胡斌 | 超极本 | 3702 | delayed | not_started | delayed | 5d8c6a75-82d1-4f34-b01a-231dc9e90037 | 68 |  |  |  |  |  |
| b1b3e083-37d9-4af8-91b4-bf3579eed919 | 18 | 2 | 设计部署 | other | not_started | medium | 0.00 | 100.00 | FS | 0 | 0 | 1 | 1609 | 2025-01-14T16:00:00.000Z | 2025-09-22T16:00:00.000Z | 0 | 252 | 3 | 3 | 2026-05-03T05:39:25.000Z | 2026-05-05T12:38:37.000Z | 800 | 胡斌 | 超极本 | 3702 | delayed | not_started | delayed | 5d8c6a75-82d1-4f34-b01a-231dc9e90037 | 180 |  |  |  |  |  |
| 3d71fc03-0a63-4a99-af46-164d20dfd0ad | 18 | 2 | 设计确认与追溯 | other | not_started | medium | 0.00 | 100.00 | FS | 0 | 0 | 1 | 1609 | 2025-09-23T16:00:00.000Z | 2025-11-17T16:00:00.000Z | 0 | 56 | 3 | 3 | 2026-05-03T05:39:25.000Z | 2026-05-05T12:38:37.000Z | 900 | 胡斌 | 超极本 | 3702 | delayed | not_started | delayed | 5d8c6a75-82d1-4f34-b01a-231dc9e90037 | 40 |  |  |  |  |  |
| 73145bdc-8423-422d-a8f9-f54a0bc7bf2e | 18 | 2 | 验收评审 | other | not_started | medium | 0.00 | 100.00 | FS | 0 | 0 | 1 | 1609 | 2025-11-18T16:00:00.000Z | 2026-02-17T16:00:00.000Z | 0 | 92 | 3 | 3 | 2026-05-03T05:39:25.000Z | 2026-05-05T12:38:37.000Z | 1000 | 胡斌 | 超极本 | 3702 | delayed | not_started | delayed | 5d8c6a75-82d1-4f34-b01a-231dc9e90037 | 60 |  |  |  |  |  |
| b2329f6b-b929-4a3f-8e95-cfc746a20718 | 20 | 1 | Consona N10 | other | not_started | medium | 0.00 | 100.00 | FS | 0 | 0 | 1 | 1609 | 2026-05-02T16:00:00.000Z | 2026-05-02T16:00:00.000Z | 0 | 1 | 3 | 1 | 2026-05-03T05:39:25.000Z | 2026-05-03T05:39:25.000Z | 77 | 胡斌 | Consona N10 | 228A | delayed | not_started | delayed |  |  |  |  |  |  |  |
| 8e01d594-9e2a-4b71-b531-07c0bd030d56 | 20 | 2 | 物料线 | other | not_started | medium | 0.00 | 100.00 | FS | 0 | 0 | 1 | 1609 | 2026-05-02T16:00:00.000Z | 2026-05-02T16:00:00.000Z | 0 | 1 | 3 | 1 | 2026-05-03T05:39:25.000Z | 2026-05-03T05:39:25.000Z | 83 | 胡斌 | Consona N10 | 228A | delayed | not_started | delayed | b2329f6b-b929-4a3f-8e95-cfc746a20718 |  |  |  |  |  |  |
| 37e1df2f-24bf-4cd1-81b1-3d5033a5b387 | 20 | 3 | 摸底样机备料 | other | not_started | medium | 0.00 | 100.00 | FS | 0 | 0 | 1 | 1609 | 2025-04-08T16:00:00.000Z | 2025-04-21T16:00:00.000Z | 0 | 14 | 3 | 1 | 2026-05-03T05:39:25.000Z | 2026-05-03T05:39:25.000Z | 84 | 胡斌 | Consona N10 | 228A | delayed | not_started | delayed | 8e01d594-9e2a-4b71-b531-07c0bd030d56 | 10 |  |  |  |  |  |
| 58b14d01-b2df-4ec9-a831-03229b726b4a | 20 | 3 | 装机5台给到西安验证 | other | not_started | medium | 0.00 | 100.00 | FS | 0 | 0 | 1 | 1609 | 2025-04-08T16:00:00.000Z | 2025-07-03T16:00:00.000Z | 0 | 87 | 3 | 1 | 2026-05-03T05:39:25.000Z | 2026-05-03T05:39:25.000Z | 85 | 胡斌 | Consona N10 | 228A | delayed | not_started | delayed | 8e01d594-9e2a-4b71-b531-07c0bd030d56 | 63 |  |  |  |  |  |
| c9f121a9-37e9-4831-848a-c05185dd32d8 | 20 | 3 | 测试样机备料 | other | not_started | medium | 0.00 | 100.00 | FS | 0 | 0 | 1 | 1609 | 2025-04-22T16:00:00.000Z | 2025-08-21T16:00:00.000Z | 0 | 122 | 3 | 1 | 2026-05-03T05:39:25.000Z | 2026-05-03T05:39:25.000Z | 86 | 胡斌 | Consona N10 | 228A | delayed | not_started | delayed | 8e01d594-9e2a-4b71-b531-07c0bd030d56 | 88 |  |  |  |  |  |
| f88fc8a7-3b14-4860-a11d-8b39e297f9d7 | 20 | 2 | 质量线 | other | not_started | medium | 0.00 | 100.00 | FS | 0 | 0 | 1 | 1609 | 2026-05-02T16:00:00.000Z | 2026-05-02T16:00:00.000Z | 0 | 1 | 3 | 1 | 2026-05-03T05:39:25.000Z | 2026-05-03T05:39:25.000Z | 87 | 胡斌 | Consona N10 | 228A | delayed | not_started | delayed | b2329f6b-b929-4a3f-8e95-cfc746a20718 |  |  |  |  |  |  |
| 2478e816-3ee2-48be-9023-1b183ae61e4f | 20 | 3 | 物料定制规格书 | other | not_started | medium | 0.00 | 100.00 | FS | 0 | 0 | 1 | 1609 | 2025-04-09T16:00:00.000Z | 2025-04-14T16:00:00.000Z | 0 | 6 | 3 | 1 | 2026-05-03T05:39:25.000Z | 2026-05-03T05:39:25.000Z | 88 | 胡斌 | Consona N10 | 228A | delayed | not_started | delayed | f88fc8a7-3b14-4860-a11d-8b39e297f9d7 | 4 |  |  |  |  |  |
| 3922a54e-90aa-4a94-9b72-c495d83a8340 | 20 | 3 | 更改影响分析 | other | not_started | medium | 0.00 | 100.00 | FS | 0 | 0 | 1 | 1609 | 2025-04-09T16:00:00.000Z | 2025-04-14T16:00:00.000Z | 0 | 6 | 3 | 1 | 2026-05-03T05:39:25.000Z | 2026-05-03T05:39:25.000Z | 89 | 胡斌 | Consona N10 | 228A | delayed | not_started | delayed | f88fc8a7-3b14-4860-a11d-8b39e297f9d7 | 4 |  |  |  |  |  |
| b3855c5b-17cb-4e5b-8cfc-811b20ee893c | 20 | 3 | 物料设计审核 | other | not_started | medium | 0.00 | 100.00 | FS | 0 | 0 | 1 | 1609 | 2025-04-15T16:00:00.000Z | 2025-07-21T16:00:00.000Z | 0 | 98 | 3 | 1 | 2026-05-03T05:39:25.000Z | 2026-05-03T05:39:25.000Z | 90 | 胡斌 | Consona N10 | 228A | delayed | not_started | delayed | f88fc8a7-3b14-4860-a11d-8b39e297f9d7 | 70 |  |  |  |  |  |
| 8a28357c-ed7e-4d9b-a8a2-eb132eae628a | 20 | 3 | 物料测试验证 | other | not_started | medium | 0.00 | 100.00 | FS | 0 | 0 | 1 | 1609 | 2025-08-24T16:00:00.000Z | 2025-12-18T16:00:00.000Z | 0 | 117 | 3 | 1 | 2026-05-03T05:39:25.000Z | 2026-05-03T05:39:25.000Z | 91 | 胡斌 | Consona N10 | 228A | delayed | not_started | delayed | f88fc8a7-3b14-4860-a11d-8b39e297f9d7 | 85 |  |  |  |  |  |
| 54a9f70d-fb67-4a8f-aa30-6675f8b19c6c | 20 | 4 | 性能摸底测试 | other | not_started | medium | 0.00 | 100.00 | FS | 0 | 0 | 1 | 1609 | 2025-08-13T16:00:00.000Z | 2025-09-23T16:00:00.000Z | 0 | 42 | 3 | 1 | 2026-05-03T05:39:25.000Z | 2026-05-03T05:39:25.000Z | 92 | 胡斌 | Consona N10 | 228A | delayed | not_started | delayed | 8a28357c-ed7e-4d9b-a8a2-eb132eae628a | 30 |  |  |  |  |  |
| 1c0219b0-d1cc-4124-97f0-b82875cbab78 | 20 | 4 | 硬件测试 | other | not_started | medium | 0.00 | 100.00 | FS | 0 | 0 | 1 | 1609 | 2025-09-24T16:00:00.000Z | 2025-12-21T16:00:00.000Z | 0 | 89 | 3 | 1 | 2026-05-03T05:39:25.000Z | 2026-05-03T05:39:25.000Z | 93 | 胡斌 | Consona N10 | 228A | delayed | not_started | delayed | 8a28357c-ed7e-4d9b-a8a2-eb132eae628a | 63 |  |  |  |  |  |
| 99d7e081-ce59-4071-981e-9aeb149b7fa2 | 20 | 4 | 软件测试 | other | not_started | medium | 0.00 | 100.00 | FS | 0 | 0 | 1 | 1609 | 2025-09-24T16:00:00.000Z | 2025-12-21T16:00:00.000Z | 0 | 89 | 3 | 1 | 2026-05-03T05:39:25.000Z | 2026-05-03T05:39:25.000Z | 94 | 胡斌 | Consona N10 | 228A | delayed | not_started | delayed | 8a28357c-ed7e-4d9b-a8a2-eb132eae628a | 63 |  |  |  |  |  |
| 912f5db1-7d0c-475d-a2d6-b5a5ad6aff5d | 20 | 4 | EMC/可靠性测试 | other | not_started | medium | 0.00 | 100.00 | FS | 0 | 0 | 1 | 1609 | 2025-09-24T16:00:00.000Z | 2025-12-21T16:00:00.000Z | 0 | 89 | 3 | 1 | 2026-05-03T05:39:25.000Z | 2026-05-03T05:39:25.000Z | 95 | 胡斌 | Consona N10 | 228A | delayed | not_started | delayed | 8a28357c-ed7e-4d9b-a8a2-eb132eae628a | 63 |  |  |  |  |  |
| 2b77cbe5-53c3-454f-b2ef-8cbb9724cf25 | 20 | 4 | 工装生产测试 | other | not_started | medium | 0.00 | 100.00 | FS | 0 | 0 | 1 | 1609 | 2025-09-24T16:00:00.000Z | 2025-12-21T16:00:00.000Z | 0 | 89 | 3 | 1 | 2026-05-03T05:39:25.000Z | 2026-05-03T05:39:25.000Z | 96 | 胡斌 | Consona N10 | 228A | delayed | not_started | delayed | 8a28357c-ed7e-4d9b-a8a2-eb132eae628a | 63 |  |  |  |  |  |
| d13b4f0f-85e7-4537-a624-5f2378026dfc | 22 | 1 | Tesla U300E 导入 | material_import | not_started | medium | 0.00 | 100.00 | FS | 0 | 0 | 1 | 1609 | 2026-05-02T16:00:00.000Z | 2026-05-02T16:00:00.000Z | 0 | 1 | 3 | 1 | 2026-05-03T05:39:25.000Z | 2026-05-03T05:39:25.000Z | 97 | 胡斌 | Tesla | 240A | delayed | not_started | delayed |  |  |  |  |  |  |  |
| 6aa6cd27-136d-4943-85e1-4b567b43c74a | 22 | 2 | 合规线 | other | not_started | medium | 0.00 | 100.00 | FS | 0 | 0 | 1 | 1609 | 2026-05-02T16:00:00.000Z | 2026-05-02T16:00:00.000Z | 0 | 1 | 3 | 1 | 2026-05-03T05:39:25.000Z | 2026-05-03T05:39:25.000Z | 98 | 胡斌 | Tesla | 240A | delayed | not_started | delayed | d13b4f0f-85e7-4537-a624-5f2378026dfc |  |  |  |  |  |  |
| f778419f-58e8-4bfa-b064-4fd6eefda281 | 22 | 3 | 物料认证流程发起 | other | not_started | medium | 0.00 | 100.00 | FS | 0 | 0 | 1 | 1609 | 2025-12-07T16:00:00.000Z | 2026-02-22T16:00:00.000Z | 0 | 78 | 3 | 1 | 2026-05-03T05:39:26.000Z | 2026-05-03T05:39:26.000Z | 99 | 胡斌 | Tesla | 240A | delayed | not_started | delayed | 6aa6cd27-136d-4943-85e1-4b567b43c74a | 50 |  |  |  |  |  |
| b63c61e3-2262-401b-9ae1-1a48cf2b0806 | 22 | 3 | 采委会 | other | not_started | medium | 0.00 | 100.00 | FS | 0 | 0 | 1 | 1609 | 2026-02-15T16:00:00.000Z | 2026-03-12T16:00:00.000Z | 0 | 26 | 3 | 1 | 2026-05-03T05:39:26.000Z | 2026-05-03T05:39:26.000Z | 100 | 胡斌 | Tesla | 240A | delayed | not_started | delayed | 6aa6cd27-136d-4943-85e1-4b567b43c74a | 20 |  |  |  |  |  |
| 4b96e118-34db-425d-802f-c4e330eee1da | 22 | 3 | 物料选型通过 | other | not_started | medium | 0.00 | 100.00 | FS | 0 | 0 | 1 | 1609 | 2026-03-15T16:00:00.000Z | 2026-04-26T16:00:00.000Z | 0 | 43 | 3 | 1 | 2026-05-03T05:39:26.000Z | 2026-05-03T05:39:26.000Z | 101 | 胡斌 | Tesla | 240A | delayed | not_started | delayed | 6aa6cd27-136d-4943-85e1-4b567b43c74a | 30 |  |  |  |  |  |
| 946f8631-0125-4ad5-ab1e-5253b8fd4ee4 | 22 | 3 | 制造审厂 | other | not_started | medium | 0.00 | 100.00 | FS | 0 | 0 | 1 | 1609 | 2026-04-26T16:00:00.000Z | 2026-05-12T16:00:00.000Z | 0 | 17 | 3 | 1 | 2026-05-03T05:39:26.000Z | 2026-05-03T05:39:26.000Z | 102 | 胡斌 | Tesla | 240A | not_started | not_started | normal | 6aa6cd27-136d-4943-85e1-4b567b43c74a | 10 |  |  |  |  |  |
| 05e29703-1df6-495c-a3ac-9bdbd88378e7 | 22 | 3 | 物料认证通过 | other | not_started | medium | 0.00 | 100.00 | FS | 0 | 0 | 1 | 1609 | 2026-05-10T16:00:00.000Z | 2026-05-21T16:00:00.000Z | 0 | 12 | 3 | 1 | 2026-05-03T05:39:26.000Z | 2026-05-03T05:39:26.000Z | 103 | 胡斌 | Tesla | 240A | not_started | not_started | normal | 6aa6cd27-136d-4943-85e1-4b567b43c74a | 10 |  |  |  |  |  |
| 6ff85b89-0ec1-4c4a-8bac-4927095a1dc7 | 22 | 2 | 物料线 | other | not_started | medium | 0.00 | 100.00 | FS | 0 | 0 | 1 | 1609 | 2026-05-02T16:00:00.000Z | 2026-05-02T16:00:00.000Z | 0 | 1 | 3 | 1 | 2026-05-03T05:39:26.000Z | 2026-05-03T05:39:26.000Z | 104 | 胡斌 | Tesla | 240A | delayed | not_started | delayed | d13b4f0f-85e7-4537-a624-5f2378026dfc |  |  |  |  |  |  |
| 05a635c7-1a3d-4cb9-9f98-a56ff6af7f8b | 22 | 3 | 摸底样机备料 | other | not_started | medium | 0.00 | 100.00 | FS | 0 | 0 | 1 | 1609 | 2025-12-07T16:00:00.000Z | 2025-12-18T16:00:00.000Z | 0 | 12 | 3 | 1 | 2026-05-03T05:39:26.000Z | 2026-05-03T05:39:26.000Z | 105 | 胡斌 | Tesla | 240A | delayed | not_started | delayed | 6ff85b89-0ec1-4c4a-8bac-4927095a1dc7 | 10 |  |  |  |  |  |
| 4de01076-57ef-4a64-a202-889fb0df8ea6 | 22 | 3 | 开发样机备料 | other | not_started | medium | 0.00 | 100.00 | FS | 0 | 0 | 1 | 1609 | 2025-12-21T16:00:00.000Z | 2026-04-06T16:00:00.000Z | 0 | 107 | 3 | 1 | 2026-05-03T05:39:26.000Z | 2026-05-03T05:39:26.000Z | 106 | 胡斌 | Tesla | 240A | delayed | not_started | delayed | 6ff85b89-0ec1-4c4a-8bac-4927095a1dc7 | 70 |  |  |  |  |  |
| 357beea2-9d85-440d-bc14-5a130e0e1145 | 22 | 2 | 质量线 | other | not_started | medium | 0.00 | 100.00 | FS | 0 | 0 | 1 | 1609 | 2026-05-02T16:00:00.000Z | 2026-05-02T16:00:00.000Z | 0 | 1 | 3 | 1 | 2026-05-03T05:39:26.000Z | 2026-05-03T05:39:26.000Z | 107 | 胡斌 | Tesla | 240A | delayed | not_started | delayed | d13b4f0f-85e7-4537-a624-5f2378026dfc |  |  |  |  |  |  |
| 67d62678-c551-44e6-ba30-d77127f4954e | 22 | 3 | 物料定制规格书 | other | not_started | medium | 0.00 | 100.00 | FS | 0 | 0 | 1 | 1609 | 2025-11-30T16:00:00.000Z | 2025-12-03T16:00:00.000Z | 0 | 4 | 3 | 1 | 2026-05-03T05:39:26.000Z | 2026-05-03T05:39:26.000Z | 108 | 胡斌 | Tesla | 240A | delayed | not_started | delayed | 357beea2-9d85-440d-bc14-5a130e0e1145 | 4 |  |  |  |  |  |
| 8c2c4e5c-94f3-4f15-abc0-4a62771ff50b | 22 | 3 | 物料设计审核 | other | not_started | medium | 0.00 | 100.00 | FS | 0 | 0 | 1 | 1609 | 2025-12-04T16:00:00.000Z | 2026-01-15T16:00:00.000Z | 0 | 43 | 3 | 1 | 2026-05-03T05:39:26.000Z | 2026-05-03T05:39:26.000Z | 109 | 胡斌 | Tesla | 240A | delayed | not_started | delayed | 357beea2-9d85-440d-bc14-5a130e0e1145 | 30 |  |  |  |  |  |
| 1f7f459c-470e-4e08-850b-95f607540bf7 | 22 | 3 | 物料测试验证 | other | not_started | medium | 0.00 | 100.00 | FS | 0 | 0 | 1 | 1609 | 2026-03-29T16:00:00.000Z | 2026-06-25T16:00:00.000Z | 0 | 89 | 3 | 1 | 2026-05-03T05:39:26.000Z | 2026-05-03T05:39:26.000Z | 110 | 胡斌 | Tesla | 240A | not_started | not_started | normal | 357beea2-9d85-440d-bc14-5a130e0e1145 | 60 |  |  |  |  |  |
| 97128def-cc65-4100-a154-46b268ea6525 | 22 | 4 | 硬件测试 | other | not_started | medium | 0.00 | 100.00 | FS | 0 | 0 | 1 | 1609 | 2026-01-15T16:00:00.000Z | 2026-03-18T16:00:00.000Z | 0 | 63 | 3 | 1 | 2026-05-03T05:39:26.000Z | 2026-05-03T05:39:26.000Z | 111 | 胡斌 | Tesla | 240A | delayed | not_started | delayed | 1f7f459c-470e-4e08-850b-95f607540bf7 | 40 |  |  |  |  |  |
| eb080c92-50db-43e2-b3f4-f038a3d36142 | 22 | 4 | 软件测试 | other | not_started | medium | 0.00 | 100.00 | FS | 0 | 0 | 1 | 1609 | 2026-01-15T16:00:00.000Z | 2026-03-18T16:00:00.000Z | 0 | 63 | 3 | 1 | 2026-05-03T05:39:26.000Z | 2026-05-03T05:39:26.000Z | 112 | 胡斌 | Tesla | 240A | delayed | not_started | delayed | 1f7f459c-470e-4e08-850b-95f607540bf7 | 40 |  |  |  |  |  |
| 2eadd0d9-f7c2-4a03-9526-4b0418df45f0 | 22 | 4 | EMC/可靠性测试 | other | not_started | medium | 0.00 | 100.00 | FS | 0 | 0 | 1 | 1609 | 2026-01-15T16:00:00.000Z | 2026-03-18T16:00:00.000Z | 0 | 63 | 3 | 1 | 2026-05-03T05:39:26.000Z | 2026-05-03T05:39:26.000Z | 113 | 胡斌 | Tesla | 240A | delayed | not_started | delayed | 1f7f459c-470e-4e08-850b-95f607540bf7 | 40 |  |  |  |  |  |
| afe28da1-a0c3-4789-873f-a9052c428342 | 22 | 4 | 工装生产测试 | other | not_started | medium | 0.00 | 100.00 | FS | 0 | 0 | 1 | 1609 | 2026-01-15T16:00:00.000Z | 2026-03-18T16:00:00.000Z | 0 | 63 | 3 | 1 | 2026-05-03T05:39:26.000Z | 2026-05-03T05:39:26.000Z | 114 | 胡斌 | Tesla | 240A | delayed | not_started | delayed | 1f7f459c-470e-4e08-850b-95f607540bf7 | 40 |  |  |  |  |  |
| f2fcf5ee-bee7-4674-a7f3-1cbefd168dfb | 24 | 1 | 探头XP9-2T电机固件 | firmware | not_started | medium | 0.00 | 100.00 | FS | 0 | 0 | 1 | 1609 | 2025-03-18T16:00:00.000Z | 2026-06-14T16:00:00.000Z | 0 | 454 | 3 | 2 | 2026-05-03T05:39:26.000Z | 2026-05-05T00:48:07.000Z | 100 | 胡斌 | 预研项目 | X_1 | not_started | not_started | normal |  | 313 |  |  |  |  |  |
| 5daed108-99d6-4985-b43e-1a8914ee428a | 24 | 2 | 需求阶段 | other | not_started | medium | 0.00 | 100.00 | FS | 0 | 0 | 1 | 1609 | 2025-03-18T16:00:00.000Z | 2025-06-23T16:00:00.000Z | 0 | 98 | 3 | 2 | 2026-05-03T05:39:26.000Z | 2026-05-05T00:48:07.000Z | 200 | 胡斌 | 预研项目 | X_1 | delayed | not_started | delayed | f2fcf5ee-bee7-4674-a7f3-1cbefd168dfb | 70 |  |  |  |  |  |
| 456babcd-957b-4707-98f8-8b5ec2a01e45 | 24 | 3 | 需求收集 | other | not_started | medium | 0.00 | 100.00 | FS | 0 | 0 | 1 | 1609 | 2025-06-24T16:00:00.000Z | 2025-06-25T16:00:00.000Z | 0 | 2 | 3 | 2 | 2026-05-03T05:39:26.000Z | 2026-05-05T00:48:07.000Z | 300 | 胡斌 | 预研项目 | X_1 | delayed | not_started | delayed | 5daed108-99d6-4985-b43e-1a8914ee428a | 2 |  |  |  |  |  |
| 8223336d-3b67-4a89-8960-b4ce336ec57e | 24 | 3 | 需求评审及更改 | other | not_started | medium | 0.00 | 100.00 | FS | 0 | 0 | 1 | 1609 | 2025-06-26T16:00:00.000Z | 2025-06-29T16:00:00.000Z | 0 | 4 | 3 | 2 | 2026-05-03T05:39:26.000Z | 2026-05-05T00:48:07.000Z | 400 | 胡斌 | 预研项目 | X_1 | delayed | not_started | delayed | 5daed108-99d6-4985-b43e-1a8914ee428a | 2 |  |  |  |  |  |
| f6bf0889-6a35-42d5-b008-ce384831b9fb | 24 | 2 | 方案阶段 | other | not_started | medium | 0.00 | 100.00 | FS | 0 | 0 | 1 | 1609 | 2026-02-28T16:00:00.000Z | 2026-04-09T16:00:00.000Z | 0 | 41 | 3 | 2 | 2026-05-03T05:39:26.000Z | 2026-05-05T00:48:07.000Z | 500 | 胡斌 | 预研项目 | X_1 | delayed | not_started | delayed | f2fcf5ee-bee7-4674-a7f3-1cbefd168dfb | 30 |  |  |  |  |  |
| a7c89c51-ec9e-4620-a4e0-d38f353c0926 | 24 | 3 | 方案收集 | other | not_started | medium | 0.00 | 100.00 | FS | 0 | 0 | 1 | 1609 | 2026-04-12T16:00:00.000Z | 2026-09-02T16:00:00.000Z | 0 | 144 | 3 | 2 | 2026-05-03T05:39:26.000Z | 2026-05-05T00:48:07.000Z | 600 | 胡斌 | 预研项目 | X_1 | not_started | not_started | normal | f6bf0889-6a35-42d5-b008-ce384831b9fb | 100 |  |  |  |  |  |
| d03bb499-aa17-4d41-8eb7-225fadfc5c6d | 24 | 3 | 方案评审及更改 | other | not_started | medium | 0.00 | 100.00 | FS | 0 | 0 | 1 | 1609 | 2026-08-30T16:00:00.000Z | 2026-10-22T16:00:00.000Z | 0 | 54 | 3 | 2 | 2026-05-03T05:39:26.000Z | 2026-05-05T00:48:07.000Z | 700 | 胡斌 | 预研项目 | X_1 | not_started | not_started | normal | f6bf0889-6a35-42d5-b008-ce384831b9fb | 35 |  |  |  |  |  |
| 87d2f313-95d2-42de-a032-ef55585de7db | 24 | 2 | 固件编辑和调试阶段 | other | not_started | medium | 0.00 | 100.00 | FS | 0 | 0 | 1 | 1609 | 2026-10-18T16:00:00.000Z | 2026-10-29T16:00:00.000Z | 0 | 12 | 3 | 2 | 2026-05-03T05:39:26.000Z | 2026-05-05T00:48:07.000Z | 800 | 胡斌 | 预研项目 | X_1 | not_started | not_started | normal | f2fcf5ee-bee7-4674-a7f3-1cbefd168dfb | 10 |  |  |  |  |  |
| 331c1db8-6016-4aef-96c8-590eca16242b | 24 | 3 | 固件编辑 | other | not_started | medium | 0.00 | 100.00 | FS | 0 | 0 | 1 | 1609 | 2026-10-18T16:00:00.000Z | 2026-10-22T16:00:00.000Z | 0 | 5 | 3 | 2 | 2026-05-03T05:39:26.000Z | 2026-05-05T00:48:07.000Z | 900 | 胡斌 | 预研项目 | X_1 | not_started | not_started | normal | 87d2f313-95d2-42de-a032-ef55585de7db | 5 |  |  |  |  |  |
| 45b12bf7-fe46-40f6-b4b9-134c51c094ef | 24 | 3 | 固件调试 | other | not_started | medium | 0.00 | 100.00 | FS | 0 | 0 | 1 | 1609 | 2026-04-12T16:00:00.000Z | 2026-04-16T16:00:00.000Z | 0 | 5 | 3 | 2 | 2026-05-03T05:39:26.000Z | 2026-05-05T00:48:07.000Z | 1000 | 胡斌 | 预研项目 | X_1 | delayed | not_started | delayed | 87d2f313-95d2-42de-a032-ef55585de7db | 5 |  |  |  |  |  |
| e968af89-5644-4a37-a2cd-5b0cdc8e1ba5 | 24 | 2 | 版本发布(按照版本发布时间填写) | other | not_started | medium | 0.00 | 100.00 | FS | 0 | 0 | 1 | 1609 | 2026-04-12T16:00:00.000Z | 2026-05-14T16:00:00.000Z | 0 | 33 | 3 | 2 | 2026-05-03T05:39:26.000Z | 2026-05-05T00:48:07.000Z | 1100 | 胡斌 | 预研项目 | X_1 | not_started | not_started | normal | f2fcf5ee-bee7-4674-a7f3-1cbefd168dfb | 22 |  |  |  |  |  |
| 2991a2f3-aeda-40fc-bf46-7452370be863 | 24 | 3 | CodeReview | other | not_started | medium | 0.00 | 100.00 | FS | 0 | 0 | 1 | 1609 | 2026-05-12T16:00:00.000Z | 2026-08-04T16:00:00.000Z | 0 | 85 | 3 | 2 | 2026-05-03T05:39:26.000Z | 2026-05-05T00:48:07.000Z | 1200 | 胡斌 | 预研项目 | X_1 | not_started | not_started | normal | e968af89-5644-4a37-a2cd-5b0cdc8e1ba5 | 60 |  |  |  |  |  |
| c184f4d0-d6f3-4353-9a4e-b119e774e367 | 24 | 3 | 临时版本发布(第一版) | other | not_started | medium | 0.00 | 100.00 | FS | 0 | 0 | 1 | 1609 | 2026-08-30T16:00:00.000Z | 2026-08-31T16:00:00.000Z | 0 | 2 | 3 | 2 | 2026-05-03T05:39:26.000Z | 2026-05-05T00:48:07.000Z | 1300 | 胡斌 | 预研项目 | X_1 | not_started | not_started | normal | e968af89-5644-4a37-a2cd-5b0cdc8e1ba5 | 2 |  |  |  |  |  |
| f1383957-d175-41b7-8701-fa7b9f250751 | 24 | 3 | 正式版本发布(第一版) | other | not_started | medium | 0.00 | 100.00 | FS | 0 | 0 | 1 | 1609 | 2026-11-01T16:00:00.000Z | 2026-12-10T16:00:00.000Z | 0 | 40 | 3 | 2 | 2026-05-03T05:39:26.000Z | 2026-05-05T00:48:07.000Z | 1400 | 胡斌 | 预研项目 | X_1 | not_started | not_started | normal | e968af89-5644-4a37-a2cd-5b0cdc8e1ba5 | 30 |  |  |  |  |  |
| 482547f8-b9bc-4b5d-856f-b485d4cc7746 | 24 | 3 | 正式版本发布(第二版) | other | not_started | medium | 0.00 | 100.00 | FS | 0 | 0 | 1 | 1609 | 2026-12-13T16:00:00.000Z | 2026-12-24T16:00:00.000Z | 0 | 12 | 3 | 2 | 2026-05-03T05:39:26.000Z | 2026-05-05T00:48:07.000Z | 1500 | 胡斌 | 预研项目 | X_1 | not_started | not_started | normal | e968af89-5644-4a37-a2cd-5b0cdc8e1ba5 | 10 |  |  |  |  |  |
| 37a527e3-6bb4-4888-be19-5460ce83603f | 25 | 1 | TEST-TASK-AUTO-001 自动化测试任务（已编辑） | other | early_completed | high | 0.00 | 100.00 | FS | 0 | 0 | 1 | 1606 | 2026-05-05T16:00:00.000Z | 2026-05-11T16:00:00.000Z | 0 | 7 | 3 | 7 | 2026-05-05T15:41:33.000Z | 2026-05-06T03:34:06.000Z | 100 | 张达 | 测试项目-任务测试 | TEST-PROJ-001 | early_completed | completed | normal |  | 5 | 2026-05-05T16:00:00.000Z | 2026-05-07T16:00:00.000Z | 3 | 3 | 2026-05-05T15:53:24.000Z |
| a2be3455-5328-41c2-9de5-a86213019693 | 18 | 1 | 3702核心风险（开机和触摸） | core_risk | not_started | medium | 0.00 | 100.00 | FS | 0 | 0 | 1 |  | 2026-05-02T16:00:00.000Z | 2026-05-02T16:00:00.000Z | 0 | 1 | 3 | 1 | 2026-05-03T05:39:26.000Z | 2026-05-03T05:39:26.000Z | 115 |  | 超极本 | 3702 | delayed | not_started | delayed |  |  |  |  |  |  |  |
| 6e9b4329-d8a7-4078-a556-d8f93917b31c | 18 | 2 | 原因分析阶段 | other | not_started | medium | 0.00 | 100.00 | FS | 0 | 0 | 1 | 1609 | 2025-06-22T16:00:00.000Z | 2025-07-07T16:00:00.000Z | 0 | 16 | 3 | 1 | 2026-05-03T05:39:26.000Z | 2026-05-03T05:39:26.000Z | 116 | 胡斌 | 超极本 | 3702 | delayed | not_started | delayed | a2be3455-5328-41c2-9de5-a86213019693 | 12 |  |  |  |  |  |
| 84f28862-2e62-47f6-bc00-2988e8ca1079 | 18 | 3 | 提交关键失效原因分析 | other | not_started | medium | 0.00 | 100.00 | FS | 0 | 0 | 1 | 1609 | 2025-06-22T16:00:00.000Z | 2025-06-29T16:00:00.000Z | 0 | 8 | 3 | 1 | 2026-05-03T05:39:26.000Z | 2026-05-03T05:39:26.000Z | 117 | 胡斌 | 超极本 | 3702 | delayed | not_started | delayed | 6e9b4329-d8a7-4078-a556-d8f93917b31c | 6 |  |  |  |  |  |

| id | project_id | wbs_level | description | task_type | status | priority | progress | full_time_ratio | dependency_type | delay_count | plan_change_count | progress_record_count | assignee_id | start_date | end_date | is_six_day_week | planned_duration | warning_days | version | created_at | updated_at | sort_order | assignee_name | project_name | project_code | computed_status | computed_execution_status | computed_time_status | parent_id | duration |
| --- | --- | --- | --- | --- | --- | --- | --- | --- | --- | --- | --- | --- | --- | --- | --- | --- | --- | --- | --- | --- | --- | --- | --- | --- | --- | --- | --- | --- | --- | --- |
| 45fcf68b-d99a-45b9-b6ae-ad1da18ebfb4 | 18 | 3 | 确认核心物料及其关键特性 | other | not_started | medium | 0.00 | 100.00 | FS | 0 | 0 | 1 | 1609 | 2025-06-30T16:00:00.000Z | 2025-07-03T16:00:00.000Z | 0 | 4 | 3 | 1 | 2026-05-03T05:39:26.000Z | 2026-05-03T05:39:26.000Z | 118 | 胡斌 | 超极本 | 3702 | delayed | not_started | delayed | 6e9b4329-d8a7-4078-a556-d8f93917b31c | 4 |
| 54bc5918-91a2-4b71-b45c-105f27729aa7 | 18 | 3 | 原因分析评审 | other | not_started | medium | 0.00 | 100.00 | FS | 0 | 0 | 1 | 1609 | 2025-07-06T16:00:00.000Z | 2025-07-07T16:00:00.000Z | 0 | 2 | 3 | 1 | 2026-05-03T05:39:26.000Z | 2026-05-03T05:39:26.000Z | 119 | 胡斌 | 超极本 | 3702 | delayed | not_started | delayed | 6e9b4329-d8a7-4078-a556-d8f93917b31c | 2 |
| 43ef62d9-bdd4-473d-ae87-731b64fcf041 | 18 | 2 | 措施制定阶段 | other | not_started | medium | 0.00 | 100.00 | FS | 0 | 0 | 1 | 1609 | 2025-07-08T16:00:00.000Z | 2025-08-28T16:00:00.000Z | 0 | 52 | 3 | 1 | 2026-05-03T05:39:26.000Z | 2026-05-03T05:39:26.000Z | 120 | 胡斌 | 超极本 | 3702 | delayed | not_started | delayed | a2be3455-5328-41c2-9de5-a86213019693 | 38 |
| a1a62962-3955-4ff7-aa10-c511f031fb98 | 18 | 3 | 提交设计管控措施 | other | not_started | medium | 0.00 | 100.00 | FS | 0 | 0 | 1 | 1609 | 2025-07-08T16:00:00.000Z | 2025-08-28T16:00:00.000Z | 0 | 52 | 3 | 1 | 2026-05-03T05:39:26.000Z | 2026-05-03T05:39:26.000Z | 121 | 胡斌 | 超极本 | 3702 | delayed | not_started | delayed | 43ef62d9-bdd4-473d-ae87-731b64fcf041 | 38 |
| 238e6cf3-7476-4a2e-b7ea-b7f0895c2ae2 | 18 | 3 | 提交物料管控措施 | other | not_started | medium | 0.00 | 100.00 | FS | 0 | 0 | 1 | 1609 | 2025-07-08T16:00:00.000Z | 2025-08-28T16:00:00.000Z | 0 | 52 | 3 | 1 | 2026-05-03T05:39:26.000Z | 2026-05-03T05:39:26.000Z | 122 | 胡斌 | 超极本 | 3702 | delayed | not_started | delayed | 43ef62d9-bdd4-473d-ae87-731b64fcf041 | 38 |
| d373a11f-5763-4754-9523-d4fed1db2673 | 18 | 3 | 提交工艺管控措施 | other | not_started | medium | 0.00 | 100.00 | FS | 0 | 0 | 1 | 1609 | 2025-07-08T16:00:00.000Z | 2025-08-28T16:00:00.000Z | 0 | 52 | 3 | 1 | 2026-05-03T05:39:26.000Z | 2026-05-03T05:39:26.000Z | 123 | 胡斌 | 超极本 | 3702 | delayed | not_started | delayed | 43ef62d9-bdd4-473d-ae87-731b64fcf041 | 38 |
| 91478381-4869-4c2f-86a5-eea80a516469 | 18 | 2 | 控制措施评审 | other | not_started | medium | 0.00 | 100.00 | FS | 0 | 0 | 1 | 1609 | 2025-08-31T16:00:00.000Z | 2025-10-21T16:00:00.000Z | 0 | 52 | 3 | 1 | 2026-05-03T05:39:26.000Z | 2026-05-03T05:39:26.000Z | 124 | 胡斌 | 超极本 | 3702 | delayed | not_started | delayed | a2be3455-5328-41c2-9de5-a86213019693 | 38 |
| a3e93af0-79f0-42d2-8469-3b66b6d85772 | 18 | 2 | 设计管控措施落地 | other | not_started | medium | 0.00 | 100.00 | FS | 0 | 0 | 1 | 1609 | 2025-08-31T16:00:00.000Z | 2025-12-18T16:00:00.000Z | 0 | 110 | 3 | 1 | 2026-05-03T05:39:26.000Z | 2026-05-03T05:39:26.000Z | 125 | 胡斌 | 超极本 | 3702 | delayed | not_started | delayed | a2be3455-5328-41c2-9de5-a86213019693 | 80 |
| 4019c74a-e5c5-4fb0-a0d3-733b80548cd4 | 18 | 2 | 设计验证方案&用例 | other | not_started | medium | 0.00 | 100.00 | FS | 0 | 0 | 1 | 1609 | 2025-12-21T16:00:00.000Z | 2026-04-20T16:00:00.000Z | 0 | 121 | 3 | 1 | 2026-05-03T05:39:26.000Z | 2026-05-03T05:39:26.000Z | 126 | 胡斌 | 超极本 | 3702 | delayed | not_started | delayed | a2be3455-5328-41c2-9de5-a86213019693 | 80 |
| 28acbc47-6eb6-469f-8670-88bb8ec921ba | 18 | 2 | 设计验证落地 | other | not_started | medium | 0.00 | 100.00 | FS | 0 | 0 | 1 | 1609 | 2026-04-12T16:00:00.000Z | 2026-08-05T16:00:00.000Z | 0 | 116 | 3 | 1 | 2026-05-03T05:39:26.000Z | 2026-05-03T05:39:26.000Z | 127 | 胡斌 | 超极本 | 3702 | not_started | not_started | normal | a2be3455-5328-41c2-9de5-a86213019693 | 80 |
| 2dcb255a-945c-4c51-84fe-6e09186d8e59 | 18 | 2 | 物料管控措施落地 | other | not_started | medium | 0.00 | 100.00 | FS | 0 | 0 | 1 | 1609 | 2026-08-02T16:00:00.000Z | 2026-08-27T16:00:00.000Z | 0 | 26 | 3 | 1 | 2026-05-03T05:39:26.000Z | 2026-05-03T05:39:26.000Z | 128 | 胡斌 | 超极本 | 3702 | not_started | not_started | normal | a2be3455-5328-41c2-9de5-a86213019693 | 20 |
| 1761a8c7-2f1f-498c-9260-580aadb8637f | 18 | 2 | 生产管控措施落地 | other | not_started | medium | 0.00 | 100.00 | FS | 0 | 0 | 1 | 1609 | 2026-08-30T16:00:00.000Z | 2026-09-24T16:00:00.000Z | 0 | 26 | 3 | 1 | 2026-05-03T05:39:26.000Z | 2026-05-03T05:39:26.000Z | 129 | 胡斌 | 超极本 | 3702 | not_started | not_started | normal | a2be3455-5328-41c2-9de5-a86213019693 | 20 |
| 2334d112-97bd-4e0a-b164-b219390d155a | 23 | 1 | 微波消融固件开发 | firmware | not_started | medium | 0.00 | 100.00 | FS | 0 | 0 | 1 | 1609 | 2026-05-02T16:00:00.000Z | 2026-05-02T16:00:00.000Z | 0 | 1 | 3 | 1 | 2026-05-03T05:39:26.000Z | 2026-05-03T05:39:26.000Z | 130 | 胡斌 | 微波消融 | 280X | delayed | not_started | delayed |  |  |
| a571cc1e-be3f-4fd7-b6c0-fb81d4060bef | 23 | 2 | 固件联调 | other | not_started | medium | 0.00 | 100.00 | FS | 0 | 0 | 1 | 1609 | 2025-11-18T16:00:00.000Z | 2025-12-11T16:00:00.000Z | 0 | 24 | 3 | 1 | 2026-05-03T05:39:26.000Z | 2026-05-03T05:39:26.000Z | 131 | 胡斌 | 微波消融 | 280X | delayed | not_started | delayed | 2334d112-97bd-4e0a-b164-b219390d155a | 18 |
| 168e7dfa-8384-4efe-84d7-2983f8d42d96 | 23 | 2 | 需求分析 | other | not_started | medium | 0.00 | 100.00 | FS | 0 | 0 | 1 | 1609 | 2025-12-14T16:00:00.000Z | 2026-02-15T16:00:00.000Z | 0 | 64 | 3 | 1 | 2026-05-03T05:39:26.000Z | 2026-05-03T05:39:26.000Z | 132 | 胡斌 | 微波消融 | 280X | delayed | not_started | delayed | 2334d112-97bd-4e0a-b164-b219390d155a | 40 |
| 64936265-b7bd-4c09-b8ee-cc66d8f60f36 | 23 | 2 | 概要设计 | other | not_started | medium | 0.00 | 100.00 | FS | 0 | 0 | 1 | 1609 | 2026-02-08T16:00:00.000Z | 2026-03-05T16:00:00.000Z | 0 | 26 | 3 | 1 | 2026-05-03T05:39:26.000Z | 2026-05-03T05:39:26.000Z | 133 | 胡斌 | 微波消融 | 280X | delayed | not_started | delayed | 2334d112-97bd-4e0a-b164-b219390d155a | 20 |
| aa2ca38b-2a81-49b0-9c7f-d6b9c37c278f | 23 | 2 | 详细设计 | other | not_started | medium | 0.00 | 100.00 | FS | 0 | 0 | 1 | 1609 | 2026-03-08T16:00:00.000Z | 2026-04-19T16:00:00.000Z | 0 | 43 | 3 | 1 | 2026-05-03T05:39:26.000Z | 2026-05-03T05:39:26.000Z | 134 | 胡斌 | 微波消融 | 280X | delayed | not_started | delayed | 2334d112-97bd-4e0a-b164-b219390d155a | 30 |
| 3de93e81-b9fc-416f-becb-6a1570bddde8 | 23 | 2 | 编写代码 | other | delay_warning | medium | 0.00 | 100.00 | FS | 0 | 0 | 1 | 1609 | 2026-04-19T16:00:00.000Z | 2026-05-05T16:00:00.000Z | 0 | 17 | 3 | 3 | 2026-05-03T05:39:26.000Z | 2026-05-05T17:00:00.000Z | 135 | 胡斌 | 微波消融 | 280X | delay_warning | not_started | warning | 2334d112-97bd-4e0a-b164-b219390d155a | 10 |
| 500bed1f-2ca9-4c59-8629-dc6935f47be5 | 23 | 2 | 调试自测试 | other | not_started | medium | 0.00 | 100.00 | FS | 0 | 0 | 1 | 1609 | 2026-05-03T16:00:00.000Z | 2026-05-17T16:00:00.000Z | 0 | 15 | 3 | 1 | 2026-05-03T05:39:26.000Z | 2026-05-03T05:39:26.000Z | 136 | 胡斌 | 微波消融 | 280X | not_started | not_started | normal | 2334d112-97bd-4e0a-b164-b219390d155a | 10 |
| 822c01a6-e50c-4c47-be7f-abf789411eb2 | 23 | 2 | 版本发布 | other | not_started | medium | 0.00 | 100.00 | FS | 0 | 0 | 1 | 1609 | 2026-05-17T16:00:00.000Z | 2026-05-18T16:00:00.000Z | 0 | 2 | 3 | 1 | 2026-05-03T05:39:26.000Z | 2026-05-03T05:39:26.000Z | 137 | 胡斌 | 微波消融 | 280X | not_started | not_started | normal | 2334d112-97bd-4e0a-b164-b219390d155a | 2 |
| 0673ddec-22bf-4427-b8e4-3a558b12e0a3 | 14 | 1 | 激光器固件多波长支持 | firmware | not_started | medium | 0.00 | 100.00 | FS | 0 | 0 | 1 | 1609 | 2026-05-02T16:00:00.000Z | 2026-05-02T16:00:00.000Z | 0 | 1 | 3 | 1 | 2026-05-03T05:39:26.000Z | 2026-05-03T05:39:26.000Z | 138 | 胡斌 | 国产光声机 | 2173 | delayed | not_started | delayed |  |  |
| 71b0f4b6-4b16-4e19-bd79-c73eb6dc2d48 | 14 | 2 | 变更澄清和需求分析 | other | not_started | medium | 0.00 | 100.00 | FS | 0 | 0 | 1 | 1609 | 2025-08-24T16:00:00.000Z | 2025-08-27T16:00:00.000Z | 0 | 4 | 3 | 1 | 2026-05-03T05:39:26.000Z | 2026-05-03T05:39:26.000Z | 139 | 胡斌 | 国产光声机 | 2173 | delayed | not_started | delayed | 0673ddec-22bf-4427-b8e4-3a558b12e0a3 | 4 |
| 4df84e61-c227-4f6b-86ad-428921e244cb | 14 | 2 | 方案设计 | other | not_started | medium | 0.00 | 100.00 | FS | 0 | 0 | 1 | 1609 | 2025-08-28T16:00:00.000Z | 2025-09-01T16:00:00.000Z | 0 | 5 | 3 | 1 | 2026-05-03T05:39:26.000Z | 2026-05-03T05:39:26.000Z | 140 | 胡斌 | 国产光声机 | 2173 | delayed | not_started | delayed | 0673ddec-22bf-4427-b8e4-3a558b12e0a3 | 3 |
| 680cec92-1edf-48ba-b1cf-23423f0fd29b | 14 | 2 | 编写代码 | other | not_started | medium | 0.00 | 100.00 | FS | 0 | 0 | 1 | 1609 | 2025-09-02T16:00:00.000Z | 2025-09-15T16:00:00.000Z | 0 | 14 | 3 | 1 | 2026-05-03T05:39:26.000Z | 2026-05-03T05:39:26.000Z | 141 | 胡斌 | 国产光声机 | 2173 | delayed | not_started | delayed | 0673ddec-22bf-4427-b8e4-3a558b12e0a3 | 10 |
| 4bd62d4d-a1f4-40c2-9ace-4a0b1da9f051 | 14 | 2 | 调试自测试 | other | not_started | medium | 0.00 | 100.00 | FS | 0 | 0 | 1 | 1609 | 2025-09-16T16:00:00.000Z | 2026-02-10T16:00:00.000Z | 0 | 148 | 3 | 1 | 2026-05-03T05:39:26.000Z | 2026-05-03T05:39:26.000Z | 142 | 胡斌 | 国产光声机 | 2173 | delayed | not_started | delayed | 0673ddec-22bf-4427-b8e4-3a558b12e0a3 | 100 |
| 8ba64cc1-988b-4d79-90f2-5b3cca00a6a6 | 14 | 2 | 版本发布 | other | not_started | medium | 0.00 | 100.00 | FS | 0 | 0 | 1 | 1609 | 2026-02-03T16:00:00.000Z | 2026-03-16T16:00:00.000Z | 0 | 42 | 3 | 1 | 2026-05-03T05:39:26.000Z | 2026-05-03T05:39:26.000Z | 143 | 胡斌 | 国产光声机 | 2173 | delayed | not_started | delayed | 0673ddec-22bf-4427-b8e4-3a558b12e0a3 | 30 |
| 63b51e26-2887-45f4-89cb-2da81b24d5f7 | 17 | 1 | MX20 PC模块导入 | material_import | not_started | medium | 0.00 | 100.00 | FS | 0 | 0 | 1 |  | 2026-05-02T16:00:00.000Z | 2026-05-02T16:00:00.000Z | 0 | 1 | 3 | 1 | 2026-05-03T05:39:26.000Z | 2026-05-03T05:39:26.000Z | 144 |  | MX20 | 2198 | delayed | not_started | delayed |  |  |
| e434b99d-343c-4688-8877-7b2f07bd89bf | 17 | 2 | 物料导入合规线 | other | not_started | medium | 0.00 | 100.00 | FS | 0 | 0 | 1 |  | 2026-05-02T16:00:00.000Z | 2026-05-02T16:00:00.000Z | 0 | 1 | 3 | 1 | 2026-05-03T05:39:26.000Z | 2026-05-03T05:39:26.000Z | 145 |  | MX20 | 2198 | delayed | not_started | delayed | 63b51e26-2887-45f4-89cb-2da81b24d5f7 |  |
| 074acd8c-7840-45a8-a74a-ba9b5eba7952 | 17 | 3 | 物料策划 | other | not_started | medium | 0.00 | 100.00 | FS | 0 | 0 | 1 | 1609 | 2025-03-23T16:00:00.000Z | 2025-04-29T16:00:00.000Z | 0 | 38 | 3 | 1 | 2026-05-03T05:39:26.000Z | 2026-05-03T05:39:26.000Z | 146 | 胡斌 | MX20 | 2198 | delayed | not_started | delayed | e434b99d-343c-4688-8877-7b2f07bd89bf | 28 |
| 8fee211e-7dbc-4039-be9c-a1d01b889ac4 | 17 | 3 | 物料需求管理 | other | not_started | medium | 0.00 | 100.00 | FS | 0 | 0 | 1 | 1609 | 2025-04-30T16:00:00.000Z | 2025-06-10T16:00:00.000Z | 0 | 42 | 3 | 1 | 2026-05-03T05:39:26.000Z | 2026-05-03T05:39:26.000Z | 147 | 胡斌 | MX20 | 2198 | delayed | not_started | delayed | e434b99d-343c-4688-8877-7b2f07bd89bf | 30 |
| a65655a3-c189-47b9-bb4c-7e5f12f62a18 | 17 | 3 | 选型选厂 | other | not_started | medium | 0.00 | 100.00 | FS | 0 | 0 | 1 | 1609 | 2025-06-11T16:00:00.000Z | 2025-09-02T16:00:00.000Z | 0 | 84 | 3 | 1 | 2026-05-03T05:39:26.000Z | 2026-05-03T05:39:26.000Z | 148 | 胡斌 | MX20 | 2198 | delayed | not_started | delayed | e434b99d-343c-4688-8877-7b2f07bd89bf | 60 |
| 997e511c-a139-4372-9ed7-268014515eb2 | 17 | 3 | 选型通过 | other | not_started | medium | 0.00 | 100.00 | FS | 0 | 0 | 1 | 1609 | 2025-09-03T16:00:00.000Z | 2025-09-23T16:00:00.000Z | 0 | 21 | 3 | 1 | 2026-05-03T05:39:26.000Z | 2026-05-03T05:39:26.000Z | 149 | 胡斌 | MX20 | 2198 | delayed | not_started | delayed | e434b99d-343c-4688-8877-7b2f07bd89bf | 15 |
| 077984bc-5430-466d-bb81-93d047758f8e | 17 | 3 | 认证通过 | other | not_started | medium | 0.00 | 100.00 | FS | 0 | 0 | 1 | 1609 | 2025-09-24T16:00:00.000Z | 2026-06-17T16:00:00.000Z | 0 | 267 | 3 | 1 | 2026-05-03T05:39:26.000Z | 2026-05-03T05:39:26.000Z | 150 | 胡斌 | MX20 | 2198 | not_started | not_started | normal | e434b99d-343c-4688-8877-7b2f07bd89bf | 180 |
| 96d48e2e-607c-4302-8413-eb1e7806de48 | 17 | 2 | 质量线 | other | not_started | medium | 0.00 | 100.00 | FS | 0 | 0 | 1 |  | 2026-05-02T16:00:00.000Z | 2026-05-02T16:00:00.000Z | 0 | 1 | 3 | 1 | 2026-05-03T05:39:26.000Z | 2026-05-03T05:39:26.000Z | 151 |  | MX20 | 2198 | delayed | not_started | delayed | 63b51e26-2887-45f4-89cb-2da81b24d5f7 |  |
| b9771d85-cc76-411a-b73f-22b82b8b9af6 | 17 | 3 | BIOS定制规格书制定 | other | not_started | medium | 0.00 | 100.00 | FS | 0 | 0 | 1 | 1609 | 2025-02-09T16:00:00.000Z | 2025-02-20T16:00:00.000Z | 0 | 12 | 3 | 1 | 2026-05-03T05:39:26.000Z | 2026-05-03T05:39:26.000Z | 152 | 胡斌 | MX20 | 2198 | delayed | not_started | delayed | 96d48e2e-607c-4302-8413-eb1e7806de48 | 10 |
| ed606ea7-a0a0-450d-b7e4-27edffd2864c | 17 | 3 | 初版BIOS验证 | other | not_started | medium | 0.00 | 100.00 | FS | 0 | 0 | 1 | 1609 | 2025-02-23T16:00:00.000Z | 2025-03-06T16:00:00.000Z | 0 | 12 | 3 | 1 | 2026-05-03T05:39:26.000Z | 2026-05-03T05:39:26.000Z | 153 | 胡斌 | MX20 | 2198 | delayed | not_started | delayed | 96d48e2e-607c-4302-8413-eb1e7806de48 | 10 |
| 141b07f6-753f-4ce6-a9c5-f18d08c53e0a | 17 | 3 | 基线版本BIOS验证 | other | not_started | medium | 0.00 | 100.00 | FS | 0 | 0 | 1 | 1609 | 2025-03-09T16:00:00.000Z | 2025-04-03T16:00:00.000Z | 0 | 26 | 3 | 1 | 2026-05-03T05:39:26.000Z | 2026-05-03T05:39:26.000Z | 154 | 胡斌 | MX20 | 2198 | delayed | not_started | delayed | 96d48e2e-607c-4302-8413-eb1e7806de48 | 20 |
| 3237b3ff-8b34-437a-84bb-7258836e0373 | 17 | 3 | PC模块开发质量活动 | other | not_started | medium | 0.00 | 100.00 | FS | 0 | 0 | 1 | 1609 | 2025-04-06T16:00:00.000Z | 2025-09-23T16:00:00.000Z | 0 | 171 | 3 | 1 | 2026-05-03T05:39:26.000Z | 2026-05-03T05:39:26.000Z | 155 | 胡斌 | MX20 | 2198 | delayed | not_started | delayed | 96d48e2e-607c-4302-8413-eb1e7806de48 | 123 |
| ffe261a8-0557-41ea-8516-41b06a88869a | 17 | 3 | PC模块验证质量活动 | other | not_started | medium | 0.00 | 100.00 | FS | 0 | 0 | 1 | 1609 | 2025-09-24T16:00:00.000Z | 2026-03-18T16:00:00.000Z | 0 | 176 | 3 | 1 | 2026-05-03T05:39:26.000Z | 2026-05-03T05:39:26.000Z | 156 | 胡斌 | MX20 | 2198 | delayed | not_started | delayed | 96d48e2e-607c-4302-8413-eb1e7806de48 | 120 |
| bab406cf-d45c-4f32-844d-2642fc7f2a38 | 17 | 2 | 物料线 | other | not_started | medium | 0.00 | 100.00 | FS | 0 | 0 | 1 |  | 2026-05-02T16:00:00.000Z | 2026-05-02T16:00:00.000Z | 0 | 1 | 3 | 1 | 2026-05-03T05:39:26.000Z | 2026-05-03T05:39:26.000Z | 157 |  | MX20 | 2198 | delayed | not_started | delayed | 63b51e26-2887-45f4-89cb-2da81b24d5f7 |  |
| 6aeb83c6-c869-4f2f-9292-9aeb0fac5812 | 17 | 3 | 开发样机备料 | other | not_started | medium | 0.00 | 100.00 | FS | 0 | 0 | 1 | 1609 | 2025-03-02T16:00:00.000Z | 2025-05-22T16:00:00.000Z | 0 | 82 | 3 | 1 | 2026-05-03T05:39:26.000Z | 2026-05-03T05:39:26.000Z | 158 | 胡斌 | MX20 | 2198 | delayed | not_started | delayed | bab406cf-d45c-4f32-844d-2642fc7f2a38 | 60 |
| e8f3ef8c-18c2-4fa4-82e5-223f4fc0be4e | 17 | 3 | 注册样机备料 | other | not_started | medium | 0.00 | 100.00 | FS | 0 | 0 | 1 | 1609 | 2025-05-25T16:00:00.000Z | 2025-09-11T16:00:00.000Z | 0 | 110 | 3 | 1 | 2026-05-03T05:39:26.000Z | 2026-05-03T05:39:26.000Z | 159 | 胡斌 | MX20 | 2198 | delayed | not_started | delayed | bab406cf-d45c-4f32-844d-2642fc7f2a38 | 80 |
| ac393f69-0fc8-4001-b45c-63ff2d8b4074 | 17 | 3 | 工程样机备料 | other | not_started | medium | 0.00 | 100.00 | FS | 0 | 0 | 1 | 1609 | 2025-09-14T16:00:00.000Z | 2026-03-22T16:00:00.000Z | 0 | 190 | 3 | 1 | 2026-05-03T05:39:26.000Z | 2026-05-03T05:39:26.000Z | 160 | 胡斌 | MX20 | 2198 | delayed | not_started | delayed | bab406cf-d45c-4f32-844d-2642fc7f2a38 | 130 |
| 5f39fca0-15fa-4676-95ac-b516cebcebc0 | 17 | 3 | 试产样机备料 | other | not_started | medium | 0.00 | 100.00 | FS | 0 | 0 | 1 | 1609 | 2026-03-15T16:00:00.000Z | 2026-06-11T16:00:00.000Z | 0 | 89 | 3 | 1 | 2026-05-03T05:39:26.000Z | 2026-05-03T05:39:26.000Z | 161 | 胡斌 | MX20 | 2198 | not_started | not_started | normal | bab406cf-d45c-4f32-844d-2642fc7f2a38 | 60 |
| b0092a12-7a5b-49fb-98d6-178bc6d76722 | 22 | 1 | TEX9硬件接口人 | contact | not_started | medium | 0.00 | 100.00 | FS | 0 | 0 | 1 | 1604 | 2025-11-13T16:00:00.000Z | 2026-10-21T16:00:00.000Z | 0 | 343 | 3 | 1 | 2026-05-03T05:39:26.000Z | 2026-05-03T05:39:26.000Z | 177 | 陈理 | Tesla | 240A | not_started | not_started | normal |  | 229 |
| 45e09897-753a-4aed-8652-e8c777c57e99 | 22 | 2 | 开发样机阶段 | other | not_started | medium | 0.00 | 100.00 | FS | 0 | 0 | 1 | 1604 | 2025-11-02T16:00:00.000Z | 2026-02-08T16:00:00.000Z | 0 | 99 | 3 | 1 | 2026-05-03T05:39:26.000Z | 2026-05-03T05:39:26.000Z | 178 | 陈理 | Tesla | 240A | delayed | not_started | delayed | b0092a12-7a5b-49fb-98d6-178bc6d76722 | 65 |
| 049d0f73-8c10-4d1f-94e0-eb1c8727ae80 | 22 | 2 | 内部临床样机阶段 | other | not_started | medium | 0.00 | 100.00 | FS | 0 | 0 | 1 | 1604 | 2026-02-01T16:00:00.000Z | 2026-06-07T16:00:00.000Z | 0 | 127 | 3 | 1 | 2026-05-03T05:39:26.000Z | 2026-05-03T05:39:26.000Z | 179 | 陈理 | Tesla | 240A | not_started | not_started | normal | b0092a12-7a5b-49fb-98d6-178bc6d76722 | 85 |
| 06a4963f-ce5e-4d04-8374-63d34e73d0ee | 22 | 2 | 工程样机阶段 | other | not_started | medium | 0.00 | 100.00 | FS | 0 | 0 | 1 | 1604 | 2026-05-31T16:00:00.000Z | 2026-09-17T16:00:00.000Z | 0 | 110 | 3 | 1 | 2026-05-03T05:39:26.000Z | 2026-05-03T05:39:26.000Z | 180 | 陈理 | Tesla | 240A | not_started | not_started | normal | b0092a12-7a5b-49fb-98d6-178bc6d76722 | 80 |
| 7c470e6c-fd37-49a9-9399-30379bb90599 | 22 | 2 | 试产样机阶段 | other | not_started | medium | 0.00 | 100.00 | FS | 0 | 0 | 1 | 1604 | 2026-09-20T16:00:00.000Z | 2026-09-29T16:00:00.000Z | 0 | 10 | 3 | 1 | 2026-05-03T05:39:26.000Z | 2026-05-03T05:39:26.000Z | 181 | 陈理 | Tesla | 240A | not_started | not_started | normal | b0092a12-7a5b-49fb-98d6-178bc6d76722 | 8 |
| bcd642d7-b537-4aa9-bc16-013c80342584 | 22 | 2 | 故障封闭阶段 | other | not_started | medium | 0.00 | 100.00 | FS | 0 | 0 | 1 | 1604 | 2026-04-30T16:00:00.000Z | 2026-09-02T16:00:00.000Z | 0 | 126 | 3 | 1 | 2026-05-03T05:39:26.000Z | 2026-05-03T05:39:26.000Z | 182 | 陈理 | Tesla | 240A | not_started | not_started | normal | b0092a12-7a5b-49fb-98d6-178bc6d76722 | 87 |
| 1b7fb840-ce14-4eca-9402-1c7586746622 | 17 | 1 | MX20开关机子系统 | sys_design | not_started | medium | 0.00 | 100.00 | FS | 0 | 0 | 1 | 1604 | 2024-09-04T16:00:00.000Z | 2026-03-30T16:00:00.000Z | 0 | 573 | 3 | 1 | 2026-05-03T05:39:26.000Z | 2026-05-03T05:39:26.000Z | 183 | 陈理 | MX20 | 2198 | delayed | not_started | delayed |  | 403 |
| eb7732c0-9322-45d3-a21b-fd01556a16dd | 17 | 2 | 初期-策划阶段 | other | not_started | medium | 0.00 | 100.00 | FS | 0 | 0 | 1 | 1604 | 2024-09-04T16:00:00.000Z | 2024-09-12T16:00:00.000Z | 0 | 9 | 3 | 1 | 2026-05-03T05:39:26.000Z | 2026-05-03T05:39:26.000Z | 184 | 陈理 | MX20 | 2198 | delayed | not_started | delayed | 1b7fb840-ce14-4eca-9402-1c7586746622 | 7 |
| ee2389b0-1686-4bf4-a87a-fbee10fb3e78 | 17 | 2 | 初期-用户需求 | other | not_started | medium | 0.00 | 100.00 | FS | 0 | 0 | 1 | 1604 | 2024-09-19T16:00:00.000Z | 2024-10-07T16:00:00.000Z | 0 | 19 | 3 | 1 | 2026-05-03T05:39:26.000Z | 2026-05-03T05:39:26.000Z | 185 | 陈理 | MX20 | 2198 | delayed | not_started | delayed | 1b7fb840-ce14-4eca-9402-1c7586746622 | 13 |
| 062ac020-6676-496b-b41d-392156fd5d52 | 17 | 2 | 初期-需求分析 | other | not_started | medium | 0.00 | 100.00 | FS | 0 | 0 | 1 | 1604 | 2024-10-14T16:00:00.000Z | 2024-10-29T16:00:00.000Z | 0 | 16 | 3 | 1 | 2026-05-03T05:39:26.000Z | 2026-05-03T05:39:26.000Z | 186 | 陈理 | MX20 | 2198 | delayed | not_started | delayed | 1b7fb840-ce14-4eca-9402-1c7586746622 | 12 |
| 07ea11ca-548c-425c-97ac-df777abd60c3 | 17 | 2 | 初期-硬件影响传递 | other | not_started | medium | 0.00 | 100.00 | FS | 0 | 0 | 1 | 1604 | 2024-10-29T16:00:00.000Z | 2024-12-24T16:00:00.000Z | 0 | 57 | 3 | 1 | 2026-05-03T05:39:26.000Z | 2026-05-03T05:39:26.000Z | 187 | 陈理 | MX20 | 2198 | delayed | not_started | delayed | 1b7fb840-ce14-4eca-9402-1c7586746622 | 41 |
| 8ee84c1a-2f78-46e8-8693-cda81f760bf4 | 17 | 2 | 中期-设计需求定义 | other | not_started | medium | 0.00 | 100.00 | FS | 0 | 0 | 1 | 1604 | 2024-11-14T16:00:00.000Z | 2025-01-15T16:00:00.000Z | 0 | 63 | 3 | 1 | 2026-05-03T05:39:26.000Z | 2026-05-03T05:39:26.000Z | 188 | 陈理 | MX20 | 2198 | delayed | not_started | delayed | 1b7fb840-ce14-4eca-9402-1c7586746622 | 45 |
| a8015ead-d137-483b-a340-1bfae3bcf8a9 | 17 | 2 | 中期-方案设计 | other | not_started | medium | 0.00 | 100.00 | FS | 0 | 0 | 1 | 1604 | 2025-01-16T16:00:00.000Z | 2025-03-13T16:00:00.000Z | 0 | 57 | 3 | 1 | 2026-05-03T05:39:26.000Z | 2026-05-03T05:39:26.000Z | 189 | 陈理 | MX20 | 2198 | delayed | not_started | delayed | 1b7fb840-ce14-4eca-9402-1c7586746622 | 41 |
| 8bd5f02a-1a59-4a72-9cec-1105a2a3dc8d | 17 | 2 | 后期-设计部署 | other | not_started | medium | 0.00 | 100.00 | FS | 0 | 0 | 1 | 1604 | 2025-02-28T16:00:00.000Z | 2026-04-07T16:00:00.000Z | 0 | 404 | 3 | 1 | 2026-05-03T05:39:26.000Z | 2026-05-03T05:39:26.000Z | 190 | 陈理 | MX20 | 2198 | delayed | not_started | delayed | 1b7fb840-ce14-4eca-9402-1c7586746622 | 282 |
| 66d2fb78-7c9c-4330-aa16-ff9b4f01c2e0 | 17 | 2 | 后期-二级追溯 | other | not_started | medium | 0.00 | 100.00 | FS | 0 | 0 | 1 | 1604 | 2025-10-07T16:00:00.000Z | 2026-05-13T16:00:00.000Z | 0 | 219 | 3 | 1 | 2026-05-03T05:39:26.000Z | 2026-05-03T05:39:26.000Z | 191 | 陈理 | MX20 | 2198 | not_started | not_started | normal | 1b7fb840-ce14-4eca-9402-1c7586746622 | 147 |
| 6548fbd3-a3f3-40f7-9425-2d63b6b39ba0 | 17 | 2 | 后期-测试验证 | other | not_started | medium | 0.00 | 100.00 | FS | 0 | 0 | 1 | 1604 | 2025-11-02T16:00:00.000Z | 2026-06-14T16:00:00.000Z | 0 | 225 | 3 | 1 | 2026-05-03T05:39:26.000Z | 2026-05-03T05:39:26.000Z | 192 | 陈理 | MX20 | 2198 | not_started | not_started | normal | 1b7fb840-ce14-4eca-9402-1c7586746622 | 150 |
| 83898da2-bec8-4d5a-9908-00f4256c7575 | 17 | 2 | 后期-场景验收 | other | not_started | medium | 0.00 | 100.00 | FS | 0 | 0 | 1 | 1604 | 2025-12-15T16:00:00.000Z | 2026-07-14T16:00:00.000Z | 0 | 212 | 3 | 1 | 2026-05-03T05:39:26.000Z | 2026-05-03T05:39:26.000Z | 193 | 陈理 | MX20 | 2198 | not_started | not_started | normal | 1b7fb840-ce14-4eca-9402-1c7586746622 | 141 |
| 924646b5-6b9b-4ea1-b1ed-f328eb211b6f | 17 | 1 | MX20开关机核心风险 | core_risk | not_started | medium | 0.00 | 100.00 | FS | 0 | 0 | 1 | 1604 | 2025-06-16T16:00:00.000Z | 2026-05-13T16:00:00.000Z | 0 | 332 | 3 | 1 | 2026-05-03T05:39:26.000Z | 2026-05-03T05:39:26.000Z | 194 | 陈理 | MX20 | 2198 | not_started | not_started | normal |  | 228 |
| 23a93d65-c13d-4965-a8cb-452f8b1506e4 | 17 | 2 | 原因分析阶段 | other | not_started | medium | 0.00 | 100.00 | FS | 0 | 0 | 1 | 1604 | 2025-06-16T16:00:00.000Z | 2025-07-10T16:00:00.000Z | 0 | 25 | 3 | 1 | 2026-05-03T05:39:26.000Z | 2026-05-03T05:39:26.000Z | 195 | 陈理 | MX20 | 2198 | delayed | not_started | delayed | 924646b5-6b9b-4ea1-b1ed-f328eb211b6f | 19 |
| 4f966f6c-9559-4a18-8ecc-4669213b9561 | 17 | 2 | 提交关键失效原因分析 | other | not_started | medium | 0.00 | 100.00 | FS | 0 | 0 | 1 | 1604 | 2025-07-13T16:00:00.000Z | 2025-07-24T16:00:00.000Z | 0 | 12 | 3 | 1 | 2026-05-03T05:39:26.000Z | 2026-05-03T05:39:26.000Z | 196 | 陈理 | MX20 | 2198 | delayed | not_started | delayed | 924646b5-6b9b-4ea1-b1ed-f328eb211b6f | 10 |
| 72e6fb38-8e3f-4d94-b0ab-f1696a2cfad9 | 17 | 2 | 确认核心物料及其关键特性 | other | not_started | medium | 0.00 | 100.00 | FS | 0 | 0 | 1 | 1604 | 2025-07-27T16:00:00.000Z | 2025-08-14T16:00:00.000Z | 0 | 19 | 3 | 1 | 2026-05-03T05:39:26.000Z | 2026-05-03T05:39:26.000Z | 197 | 陈理 | MX20 | 2198 | delayed | not_started | delayed | 924646b5-6b9b-4ea1-b1ed-f328eb211b6f | 15 |
| 06b3c0d8-217f-4ac3-b2c8-db68d959fe28 | 17 | 2 | 原因分析评审 | other | not_started | medium | 0.00 | 100.00 | FS | 0 | 0 | 1 | 1604 | 2025-08-17T16:00:00.000Z | 2025-08-31T16:00:00.000Z | 0 | 15 | 3 | 1 | 2026-05-03T05:39:26.000Z | 2026-05-03T05:39:26.000Z | 198 | 陈理 | MX20 | 2198 | delayed | not_started | delayed | 924646b5-6b9b-4ea1-b1ed-f328eb211b6f | 11 |
| 89bfce7b-6edb-4a50-8185-b32984d81d16 | 17 | 2 | 措施制定阶段 | other | not_started | medium | 0.00 | 100.00 | FS | 0 | 0 | 1 | 1604 | 2025-09-01T16:00:00.000Z | 2025-09-29T16:00:00.000Z | 0 | 29 | 3 | 1 | 2026-05-03T05:39:26.000Z | 2026-05-03T05:39:27.000Z | 199 | 陈理 | MX20 | 2198 | delayed | not_started | delayed | 924646b5-6b9b-4ea1-b1ed-f328eb211b6f | 21 |
| 40331939-8ec3-41e8-91aa-7178277ecd6e | 17 | 2 | 提交设计管控措施 | other | not_started | medium | 0.00 | 100.00 | FS | 0 | 0 | 1 | 1604 | 2025-09-30T16:00:00.000Z | 2025-10-30T16:00:00.000Z | 0 | 31 | 3 | 1 | 2026-05-03T05:39:27.000Z | 2026-05-03T05:39:27.000Z | 200 | 陈理 | MX20 | 2198 | delayed | not_started | delayed | 924646b5-6b9b-4ea1-b1ed-f328eb211b6f | 23 |
| 604b68ca-85ea-4631-aad6-340bd6f356ad | 17 | 2 | 提交物料管控措施 | other | not_started | medium | 0.00 | 100.00 | FS | 0 | 0 | 1 | 1604 | 2025-11-02T16:00:00.000Z | 2025-11-27T16:00:00.000Z | 0 | 26 | 3 | 1 | 2026-05-03T05:39:27.000Z | 2026-05-03T05:39:27.000Z | 201 | 陈理 | MX20 | 2198 | delayed | not_started | delayed | 924646b5-6b9b-4ea1-b1ed-f328eb211b6f | 20 |
| 981e265d-e952-404b-930a-7468dfcac9d6 | 17 | 2 | 提交工艺管控措施 | other | not_started | medium | 0.00 | 100.00 | FS | 0 | 0 | 1 | 1604 | 2025-11-30T16:00:00.000Z | 2025-12-30T16:00:00.000Z | 0 | 31 | 3 | 1 | 2026-05-03T05:39:27.000Z | 2026-05-03T05:39:27.000Z | 202 | 陈理 | MX20 | 2198 | delayed | not_started | delayed | 924646b5-6b9b-4ea1-b1ed-f328eb211b6f | 23 |

| id | project_id | wbs_level | description | task_type | status | priority | progress | full_time_ratio | dependency_type | delay_count | plan_change_count | progress_record_count | assignee_id | start_date | end_date | is_six_day_week | planned_duration | warning_days | version | created_at | updated_at | sort_order | assignee_name | project_name | project_code | computed_status | computed_execution_status | computed_time_status | parent_id | duration |
| --- | --- | --- | --- | --- | --- | --- | --- | --- | --- | --- | --- | --- | --- | --- | --- | --- | --- | --- | --- | --- | --- | --- | --- | --- | --- | --- | --- | --- | --- | --- |
| cc7d2bd0-447e-4b33-a039-af49e7d4a44c | 17 | 2 | 控制措施评审 | other | not_started | medium | 0.00 | 100.00 | FS | 0 | 0 | 1 | 1604 | 2025-12-31T16:00:00.000Z | 2026-02-05T16:00:00.000Z | 0 | 37 | 3 | 1 | 2026-05-03T05:39:27.000Z | 2026-05-03T05:39:27.000Z | 203 | 陈理 | MX20 | 2198 | delayed | not_started | delayed | 924646b5-6b9b-4ea1-b1ed-f328eb211b6f | 22 |
| 5aec9c85-2f66-4896-8d47-2c5cf75c0580 | 17 | 2 | 设计管控措施落地 | other | not_started | medium | 0.00 | 100.00 | FS | 0 | 0 | 1 | 1604 | 2026-02-01T16:00:00.000Z | 2026-02-15T16:00:00.000Z | 0 | 15 | 3 | 1 | 2026-05-03T05:39:27.000Z | 2026-05-03T05:39:27.000Z | 204 | 陈理 | MX20 | 2198 | delayed | not_started | delayed | 924646b5-6b9b-4ea1-b1ed-f328eb211b6f | 10 |
| 3650bbc4-aa1c-4355-a2b4-f82318751401 | 17 | 2 | 设计验证方案&用例 | other | not_started | medium | 0.00 | 100.00 | FS | 0 | 0 | 1 | 1604 | 2026-02-15T16:00:00.000Z | 2026-02-26T16:00:00.000Z | 0 | 12 | 3 | 1 | 2026-05-03T05:39:27.000Z | 2026-05-03T05:39:27.000Z | 205 | 陈理 | MX20 | 2198 | delayed | not_started | delayed | 924646b5-6b9b-4ea1-b1ed-f328eb211b6f | 10 |
| b3baf98d-208d-4b85-8da2-8641dd72af63 | 17 | 2 | 设计验证落地 | other | not_started | medium | 0.00 | 100.00 | FS | 0 | 0 | 1 | 1604 | 2026-03-01T16:00:00.000Z | 2026-03-19T16:00:00.000Z | 0 | 19 | 3 | 1 | 2026-05-03T05:39:27.000Z | 2026-05-03T05:39:27.000Z | 206 | 陈理 | MX20 | 2198 | delayed | not_started | delayed | 924646b5-6b9b-4ea1-b1ed-f328eb211b6f | 15 |
| be966479-71a5-4be0-a8c7-ba4f6c5ee1c7 | 17 | 2 | 物料管控措施落地 | other | not_started | medium | 0.00 | 100.00 | FS | 0 | 0 | 1 | 1604 | 2026-03-22T16:00:00.000Z | 2026-03-30T16:00:00.000Z | 0 | 9 | 3 | 1 | 2026-05-03T05:39:27.000Z | 2026-05-03T05:39:27.000Z | 207 | 陈理 | MX20 | 2198 | delayed | not_started | delayed | 924646b5-6b9b-4ea1-b1ed-f328eb211b6f | 7 |
| 9b066872-87a3-417b-a3cc-7a7337692227 | 17 | 2 | 生产管控措施落地 | other | delay_warning | medium | 0.00 | 100.00 | FS | 0 | 0 | 1 | 1604 | 2026-03-31T16:00:00.000Z | 2026-05-05T16:00:00.000Z | 0 | 36 | 3 | 3 | 2026-05-03T05:39:27.000Z | 2026-05-05T17:00:00.000Z | 208 | 陈理 | MX20 | 2198 | delay_warning | not_started | warning | 924646b5-6b9b-4ea1-b1ed-f328eb211b6f | 22 |
| b98b99c1-7986-4ab0-939c-155a6be0f2af | 25 | 1 | TEST-TASK-DEP-A 依赖测试任务A | other | delay_warning | medium | 0.00 | 100.00 | FS | 0 | 0 | 1 |  | 2026-05-05T16:00:00.000Z | 2026-05-07T16:00:00.000Z | 0 | 3 | 3 | 3 | 2026-05-05T16:07:04.000Z | 2026-05-06T03:34:06.000Z | 200 |  | 测试项目-任务测试 | TEST-PROJ-001 | delay_warning | not_started | warning |  | 3 |
| 8d350a82-26aa-4dcc-a0c7-92cec4e62ca3 | 17 | 1 | 智锐通 EC固件 | material_import | not_started | medium | 0.00 | 100.00 | FS | 0 | 0 | 1 | 1604 | 2025-11-06T16:00:00.000Z | 2026-02-08T16:00:00.000Z | 0 | 95 | 3 | 1 | 2026-05-03T05:39:27.000Z | 2026-05-03T05:39:27.000Z | 209 | 陈理 | MX20 | 2198 | delayed | not_started | delayed |  | 61 |
| fc7c0c00-2c5e-422d-9d07-e7e2d931c0c8 | 17 | 2 | 需求阶段 | other | not_started | medium | 0.00 | 100.00 | FS | 0 | 0 | 1 | 1604 | 2025-11-30T16:00:00.000Z | 2025-12-09T16:00:00.000Z | 0 | 10 | 3 | 1 | 2026-05-03T05:39:27.000Z | 2026-05-03T05:39:27.000Z | 210 | 陈理 | MX20 | 2198 | delayed | not_started | delayed | 8d350a82-26aa-4dcc-a0c7-92cec4e62ca3 | 8 |
| 4353863e-7ffe-4cb4-aa98-e8f9c3c88890 | 17 | 3 | 需求收集 | other | not_started | medium | 0.00 | 100.00 | FS | 0 | 0 | 1 | 1604 | 2025-12-10T16:00:00.000Z | 2025-12-16T16:00:00.000Z | 0 | 7 | 3 | 1 | 2026-05-03T05:39:27.000Z | 2026-05-03T05:39:27.000Z | 211 | 陈理 | MX20 | 2198 | delayed | not_started | delayed | fc7c0c00-2c5e-422d-9d07-e7e2d931c0c8 | 5 |
| 63571880-d434-4080-831c-ce6cef74cb7b | 17 | 3 | 需求评审及更改 | other | not_started | medium | 0.00 | 100.00 | FS | 0 | 0 | 1 | 1604 | 2025-12-17T16:00:00.000Z | 2025-12-23T16:00:00.000Z | 0 | 7 | 3 | 1 | 2026-05-03T05:39:27.000Z | 2026-05-03T05:39:27.000Z | 212 | 陈理 | MX20 | 2198 | delayed | not_started | delayed | fc7c0c00-2c5e-422d-9d07-e7e2d931c0c8 | 5 |
| 041f1f4f-3040-45d9-82c4-8420b491e940 | 17 | 3 | 方案阶段 | other | not_started | medium | 0.00 | 100.00 | FS | 0 | 0 | 1 | 1604 | 2025-12-24T16:00:00.000Z | 2025-12-30T16:00:00.000Z | 0 | 7 | 3 | 1 | 2026-05-03T05:39:27.000Z | 2026-05-03T05:39:27.000Z | 213 | 陈理 | MX20 | 2198 | delayed | not_started | delayed | fc7c0c00-2c5e-422d-9d07-e7e2d931c0c8 | 5 |
| efb48aa0-879b-4a14-abe9-efc4c71fdab3 | 17 | 3 | 嵌入式概要设计、嵌入式详细设计 | other | not_started | medium | 0.00 | 100.00 | FS | 0 | 0 | 1 | 1604 | 2025-12-24T16:00:00.000Z | 2025-12-30T16:00:00.000Z | 0 | 7 | 3 | 1 | 2026-05-03T05:39:27.000Z | 2026-05-03T05:39:27.000Z | 214 | 陈理 | MX20 | 2198 | delayed | not_started | delayed | fc7c0c00-2c5e-422d-9d07-e7e2d931c0c8 | 5 |
| c87facbb-473f-4b0d-9196-5037aba56779 | 17 | 3 | 方案评审及更改 | other | not_started | medium | 0.00 | 100.00 | FS | 0 | 0 | 1 | 1604 | 2025-12-31T16:00:00.000Z | 2026-01-06T16:00:00.000Z | 0 | 7 | 3 | 1 | 2026-05-03T05:39:27.000Z | 2026-05-03T05:39:27.000Z | 215 | 陈理 | MX20 | 2198 | delayed | not_started | delayed | fc7c0c00-2c5e-422d-9d07-e7e2d931c0c8 | 5 |
| 8cc2d2e6-88d1-4943-921c-9a6a45f2df3b | 17 | 3 | 固件编辑 | other | not_started | medium | 0.00 | 100.00 | FS | 0 | 0 | 1 | 1604 | 2026-01-07T16:00:00.000Z | 2026-01-13T16:00:00.000Z | 0 | 7 | 3 | 1 | 2026-05-03T05:39:27.000Z | 2026-05-03T05:39:27.000Z | 216 | 陈理 | MX20 | 2198 | delayed | not_started | delayed | fc7c0c00-2c5e-422d-9d07-e7e2d931c0c8 | 5 |
| 6cd8e4c5-6ede-4f38-8acd-44bac0c58a6c | 17 | 3 | 固件调试 | other | not_started | medium | 0.00 | 100.00 | FS | 0 | 0 | 1 | 1604 | 2026-01-14T16:00:00.000Z | 2026-01-20T16:00:00.000Z | 0 | 7 | 3 | 1 | 2026-05-03T05:39:27.000Z | 2026-05-03T05:39:27.000Z | 217 | 陈理 | MX20 | 2198 | delayed | not_started | delayed | fc7c0c00-2c5e-422d-9d07-e7e2d931c0c8 | 5 |
| 4d6c29c8-da6f-4437-9ae9-a8ad58583e01 | 17 | 3 | 版本发布(按照版本发布时间填写) | other | not_started | medium | 0.00 | 100.00 | FS | 0 | 0 | 1 | 1604 | 2026-01-21T16:00:00.000Z | 2026-02-03T16:00:00.000Z | 0 | 14 | 3 | 1 | 2026-05-03T05:39:27.000Z | 2026-05-03T05:39:27.000Z | 218 | 陈理 | MX20 | 2198 | delayed | not_started | delayed | fc7c0c00-2c5e-422d-9d07-e7e2d931c0c8 | 5 |
| 4d4d5f92-bb8b-4f07-9cf8-0ce4352d0bab | 17 | 3 | 可诊断性设计 | other | not_started | medium | 0.00 | 100.00 | FS | 0 | 0 | 1 | 1604 | 2026-01-28T16:00:00.000Z | 2026-02-08T16:00:00.000Z | 0 | 12 | 3 | 1 | 2026-05-03T05:39:27.000Z | 2026-05-03T05:39:27.000Z | 219 | 陈理 | MX20 | 2198 | delayed | not_started | delayed | fc7c0c00-2c5e-422d-9d07-e7e2d931c0c8 | 5 |
| 52076d46-43ca-4e22-9ecc-0f6f9b1ed0a0 | 17 | 3 | CodeReview | other | not_started | medium | 0.00 | 100.00 | FS | 0 | 0 | 1 | 1604 | 2026-02-04T16:00:00.000Z | 2026-02-10T16:00:00.000Z | 0 | 7 | 3 | 1 | 2026-05-03T05:39:27.000Z | 2026-05-03T05:39:27.000Z | 220 | 陈理 | MX20 | 2198 | delayed | not_started | delayed | fc7c0c00-2c5e-422d-9d07-e7e2d931c0c8 | 5 |
| 7eb05d2c-979b-42bb-82be-1e560578be17 | 17 | 3 | 正式版本发布 | other | not_started | medium | 0.00 | 100.00 | FS | 0 | 0 | 1 | 1604 | 2026-05-02T16:00:00.000Z | 2026-05-02T16:00:00.000Z | 0 | 1 | 3 | 1 | 2026-05-03T05:39:27.000Z | 2026-05-03T05:39:27.000Z | 221 | 陈理 | MX20 | 2198 | delayed | not_started | delayed | fc7c0c00-2c5e-422d-9d07-e7e2d931c0c8 |  |
| 2d9d10d4-f66c-4cc5-86f5-9c852215d658 | 17 | 1 | 度量模型 | other | not_started | medium | 0.00 | 100.00 | FS | 0 | 0 | 1 | 1604 | 2026-01-18T16:00:00.000Z | 2026-06-28T16:00:00.000Z | 0 | 162 | 3 | 1 | 2026-05-03T05:39:27.000Z | 2026-05-03T05:39:27.000Z | 222 | 陈理 | MX20 | 2198 | not_started | not_started | normal |  | 106 |
| 49f125f4-d0e0-4d3d-9413-348e60806fa2 | 17 | 2 | 需求分析（指标分解） | other | not_started | medium | 0.00 | 100.00 | FS | 0 | 0 | 1 | 1604 | 2026-01-18T16:00:00.000Z | 2026-02-19T16:00:00.000Z | 0 | 33 | 3 | 1 | 2026-05-03T05:39:27.000Z | 2026-05-03T05:39:27.000Z | 223 | 陈理 | MX20 | 2198 | delayed | not_started | delayed | 2d9d10d4-f66c-4cc5-86f5-9c852215d658 | 20 |
| f7856c5a-f1b7-485c-8bfe-c4645eaa91f3 | 17 | 3 | 方案设计（架构设计） | other | not_started | medium | 0.00 | 100.00 | FS | 0 | 0 | 1 | 1604 | 2026-02-15T16:00:00.000Z | 2026-03-12T16:00:00.000Z | 0 | 26 | 3 | 1 | 2026-05-03T05:39:27.000Z | 2026-05-03T05:39:27.000Z | 224 | 陈理 | MX20 | 2198 | delayed | not_started | delayed | 49f125f4-d0e0-4d3d-9413-348e60806fa2 | 20 |
| ebdc0a2a-de07-4aee-8bd8-9ab5431da046 | 17 | 3 | 模型部署（Agent） | other | not_started | medium | 0.00 | 100.00 | FS | 0 | 0 | 1 | 1604 | 2026-03-15T16:00:00.000Z | 2026-04-15T16:00:00.000Z | 0 | 32 | 3 | 1 | 2026-05-03T05:39:27.000Z | 2026-05-03T05:39:27.000Z | 225 | 陈理 | MX20 | 2198 | delayed | not_started | delayed | 49f125f4-d0e0-4d3d-9413-348e60806fa2 | 23 |
| 4d417c67-68cf-49ec-8e41-65ace29c1480 | 17 | 3 | 平台试用 | other | not_started | medium | 0.00 | 100.00 | FS | 0 | 0 | 1 | 1604 | 2026-04-15T16:00:00.000Z | 2026-06-21T16:00:00.000Z | 0 | 68 | 3 | 1 | 2026-05-03T05:39:27.000Z | 2026-05-03T05:39:27.000Z | 226 | 陈理 | MX20 | 2198 | not_started | not_started | normal | 49f125f4-d0e0-4d3d-9413-348e60806fa2 | 44 |
| 9958ed45-7bdc-4671-9eec-e403cefc715c | 17 | 3 | 总部与反馈 | other | not_started | medium | 0.00 | 100.00 | FS | 0 | 0 | 1 | 1604 | 2026-06-16T16:00:00.000Z | 2026-06-29T16:00:00.000Z | 0 | 14 | 3 | 1 | 2026-05-03T05:39:27.000Z | 2026-05-03T05:39:27.000Z | 227 | 陈理 | MX20 | 2198 | not_started | not_started | normal | 49f125f4-d0e0-4d3d-9413-348e60806fa2 | 10 |
| 283f5511-5712-4e55-9d35-eefa9dd6899d | 17 | 1 | Mx20驱动接口 | interface | not_started | medium | 0.00 | 100.00 | FS | 0 | 0 | 1 | 1607 | 2024-12-31T16:00:00.000Z | 2026-05-13T16:00:00.000Z | 0 | 499 | 3 | 1 | 2026-05-03T05:39:27.000Z | 2026-05-03T05:39:27.000Z | 228 | 陈霄 | MX20 | 2198 | not_started | not_started | normal |  | 347 |
| 13ff4af2-4bea-443c-9169-7d1c4c1cd484 | 17 | 2 | 原理样机联调 | other | not_started | medium | 0.00 | 100.00 | FS | 0 | 0 | 1 | 1607 | 2025-02-24T16:00:00.000Z | 2025-03-09T16:00:00.000Z | 0 | 14 | 3 | 1 | 2026-05-03T05:39:27.000Z | 2026-05-03T05:39:27.000Z | 229 | 陈霄 | MX20 | 2198 | delayed | not_started | delayed | 283f5511-5712-4e55-9d35-eefa9dd6899d | 10 |
| 9b3554ed-d2fb-429e-9838-e012db6f8185 | 17 | 2 | 需求整理 | other | not_started | medium | 0.00 | 100.00 | FS | 0 | 0 | 1 | 1607 | 2025-03-09T16:00:00.000Z | 2025-04-03T16:00:00.000Z | 0 | 26 | 3 | 1 | 2026-05-03T05:39:27.000Z | 2026-05-03T05:39:27.000Z | 230 | 陈霄 | MX20 | 2198 | delayed | not_started | delayed | 283f5511-5712-4e55-9d35-eefa9dd6899d | 20 |
| 08023dd1-e474-4ee6-b340-b3613f417deb | 17 | 2 | 需求评审 | other | not_started | medium | 0.00 | 100.00 | FS | 0 | 0 | 1 | 1607 | 2025-03-16T16:00:00.000Z | 2025-04-03T16:00:00.000Z | 0 | 19 | 3 | 1 | 2026-05-03T05:39:27.000Z | 2026-05-03T05:39:27.000Z | 231 | 陈霄 | MX20 | 2198 | delayed | not_started | delayed | 283f5511-5712-4e55-9d35-eefa9dd6899d | 15 |
| ef7b1c17-3456-4232-8c7c-77f568279f1c | 17 | 2 | 方案设计 | other | not_started | medium | 0.00 | 100.00 | FS | 0 | 0 | 1 | 1607 | 2025-04-20T16:00:00.000Z | 2025-12-11T16:00:00.000Z | 0 | 236 | 3 | 1 | 2026-05-03T05:39:27.000Z | 2026-05-03T05:39:27.000Z | 232 | 陈霄 | MX20 | 2198 | delayed | not_started | delayed | 283f5511-5712-4e55-9d35-eefa9dd6899d | 170 |
| f8ea80d7-c66d-4294-9a01-2557018bdc23 | 17 | 2 | 方案评审 | other | not_started | medium | 0.00 | 100.00 | FS | 0 | 0 | 1 | 1607 | 2025-05-28T16:00:00.000Z | 2025-12-11T16:00:00.000Z | 0 | 198 | 3 | 1 | 2026-05-03T05:39:27.000Z | 2026-05-03T05:39:27.000Z | 233 | 陈霄 | MX20 | 2198 | delayed | not_started | delayed | 283f5511-5712-4e55-9d35-eefa9dd6899d | 142 |
| 37b675d5-fe29-4522-85e7-fc05ad3c909a | 17 | 2 | 代码编写 | other | not_started | medium | 0.00 | 100.00 | FS | 0 | 0 | 1 | 1607 | 2025-06-01T16:00:00.000Z | 2025-12-16T16:00:00.000Z | 0 | 199 | 3 | 1 | 2026-05-03T05:39:27.000Z | 2026-05-03T05:39:27.000Z | 234 | 陈霄 | MX20 | 2198 | delayed | not_started | delayed | 283f5511-5712-4e55-9d35-eefa9dd6899d | 143 |
| 4b2b5ff4-b6c7-4526-af55-27387b66b7dd | 17 | 2 | CodeReview | other | not_started | medium | 0.00 | 100.00 | FS | 0 | 0 | 1 | 1607 | 2025-06-08T16:00:00.000Z | 2026-01-25T16:00:00.000Z | 0 | 232 | 3 | 1 | 2026-05-03T05:39:27.000Z | 2026-05-03T05:39:27.000Z | 235 | 陈霄 | MX20 | 2198 | delayed | not_started | delayed | 283f5511-5712-4e55-9d35-eefa9dd6899d | 165 |
| 54426c1c-0e21-4127-99da-32e5cf93979d | 17 | 2 | 版本发布 | other | not_started | medium | 0.00 | 100.00 | FS | 0 | 0 | 1 | 1607 | 2025-06-16T16:00:00.000Z | 2026-01-25T16:00:00.000Z | 0 | 224 | 3 | 1 | 2026-05-03T05:39:27.000Z | 2026-05-03T05:39:27.000Z | 236 | 陈霄 | MX20 | 2198 | delayed | not_started | delayed | 283f5511-5712-4e55-9d35-eefa9dd6899d | 159 |
| e8c1cfc1-f12e-4cc4-9156-5bf8065658ae | 17 | 2 | 故障排查 | other | not_started | medium | 0.00 | 100.00 | FS | 0 | 0 | 1 | 1607 | 2025-06-26T16:00:00.000Z | 2026-05-13T16:00:00.000Z | 0 | 322 | 3 | 1 | 2026-05-03T05:39:27.000Z | 2026-05-03T05:39:27.000Z | 237 | 陈霄 | MX20 | 2198 | not_started | not_started | normal | 283f5511-5712-4e55-9d35-eefa9dd6899d | 220 |
| 74a9c16f-ab98-4a4e-a2c8-a3a710dca877 | 17 | 2 | 版本发布 | other | not_started | medium | 0.00 | 100.00 | FS | 0 | 0 | 1 | 1607 | 2025-07-06T16:00:00.000Z | 2026-05-13T16:00:00.000Z | 0 | 312 | 3 | 1 | 2026-05-03T05:39:27.000Z | 2026-05-03T05:39:27.000Z | 238 | 陈霄 | MX20 | 2198 | not_started | not_started | normal | 283f5511-5712-4e55-9d35-eefa9dd6899d | 214 |
| 2bbdb5cb-c082-4837-8982-bb89d56a0ead | 17 | 1 | Mx20画屏固件 | firmware | not_started | medium | 0.00 | 100.00 | FS | 0 | 0 | 1 | 1607 | 2024-12-31T16:00:00.000Z | 2026-05-13T16:00:00.000Z | 0 | 499 | 3 | 1 | 2026-05-03T05:39:27.000Z | 2026-05-03T05:39:27.000Z | 239 | 陈霄 | MX20 | 2198 | not_started | not_started | normal |  | 347 |
| d498b034-48ea-4b16-9fc5-04344137c548 | 17 | 2 | 需求整理 | other | not_started | medium | 0.00 | 100.00 | FS | 0 | 0 | 1 | 1607 | 2025-04-23T16:00:00.000Z | 2025-05-08T16:00:00.000Z | 0 | 16 | 3 | 1 | 2026-05-03T05:39:27.000Z | 2026-05-03T05:39:27.000Z | 240 | 陈霄 | MX20 | 2198 | delayed | not_started | delayed | 2bbdb5cb-c082-4837-8982-bb89d56a0ead | 12 |
| f9634eb9-afa8-4641-86bf-a91714a478ab | 17 | 2 | 需求评审 | other | not_started | medium | 0.00 | 100.00 | FS | 0 | 0 | 1 | 1607 | 2025-05-13T16:00:00.000Z | 2025-05-14T16:00:00.000Z | 0 | 2 | 3 | 1 | 2026-05-03T05:39:27.000Z | 2026-05-03T05:39:27.000Z | 241 | 陈霄 | MX20 | 2198 | delayed | not_started | delayed | 2bbdb5cb-c082-4837-8982-bb89d56a0ead | 2 |
| af8edab9-9269-46db-8039-23791dc5a82f | 17 | 2 | 方案设计 | other | not_started | medium | 0.00 | 100.00 | FS | 0 | 0 | 1 | 1607 | 2025-05-14T16:00:00.000Z | 2026-01-21T16:00:00.000Z | 0 | 253 | 3 | 1 | 2026-05-03T05:39:27.000Z | 2026-05-03T05:39:27.000Z | 242 | 陈霄 | MX20 | 2198 | delayed | not_started | delayed | 2bbdb5cb-c082-4837-8982-bb89d56a0ead | 180 |
| e4cc28e3-24f0-4df7-abce-75dc62afa392 | 17 | 2 | 方案评审 | other | not_started | medium | 0.00 | 100.00 | FS | 0 | 0 | 1 | 1607 | 2025-06-25T16:00:00.000Z | 2026-01-21T16:00:00.000Z | 0 | 211 | 3 | 1 | 2026-05-03T05:39:27.000Z | 2026-05-03T05:39:27.000Z | 243 | 陈霄 | MX20 | 2198 | delayed | not_started | delayed | 2bbdb5cb-c082-4837-8982-bb89d56a0ead | 150 |
| 742b8183-cdcc-4c42-a023-d02e61e6a688 | 17 | 2 | 代码编写 | other | not_started | medium | 0.00 | 100.00 | FS | 0 | 0 | 1 | 1607 | 2025-06-30T16:00:00.000Z | 2026-02-15T16:00:00.000Z | 0 | 231 | 3 | 1 | 2026-05-03T05:39:27.000Z | 2026-05-03T05:39:27.000Z | 244 | 陈霄 | MX20 | 2198 | delayed | not_started | delayed | 2bbdb5cb-c082-4837-8982-bb89d56a0ead | 159 |
| 1062bb3c-22c1-49f6-a0f1-347239656d65 | 17 | 2 | 功能调试 | other | not_started | medium | 0.00 | 100.00 | FS | 0 | 0 | 1 | 1607 | 2025-07-22T16:00:00.000Z | 2026-02-18T16:00:00.000Z | 0 | 212 | 3 | 1 | 2026-05-03T05:39:27.000Z | 2026-05-03T05:39:27.000Z | 245 | 陈霄 | MX20 | 2198 | delayed | not_started | delayed | 2bbdb5cb-c082-4837-8982-bb89d56a0ead | 146 |
| 0978eb4b-3298-4642-8ff2-e3ce770b88f5 | 17 | 2 | CodeReview | other | not_started | medium | 0.00 | 100.00 | FS | 0 | 0 | 1 | 1607 | 2025-07-10T16:00:00.000Z | 2026-03-08T16:00:00.000Z | 0 | 242 | 3 | 1 | 2026-05-03T05:39:27.000Z | 2026-05-03T05:39:27.000Z | 246 | 陈霄 | MX20 | 2198 | delayed | not_started | delayed | 2bbdb5cb-c082-4837-8982-bb89d56a0ead | 166 |
| 60fd7d1a-6b8d-425b-b0d7-44168841dac1 | 17 | 2 | 版本发布 | other | not_started | medium | 0.00 | 100.00 | FS | 0 | 0 | 1 | 1607 | 2025-08-03T16:00:00.000Z | 2026-03-08T16:00:00.000Z | 0 | 218 | 3 | 1 | 2026-05-03T05:39:27.000Z | 2026-05-03T05:39:27.000Z | 247 | 陈霄 | MX20 | 2198 | delayed | not_started | delayed | 2bbdb5cb-c082-4837-8982-bb89d56a0ead | 150 |
| 33ec15f8-3eae-40a9-8c40-428e241de309 | 17 | 2 | 故障排查 | other | not_started | medium | 0.00 | 100.00 | FS | 0 | 0 | 1 | 1607 | 2025-08-07T16:00:00.000Z | 2026-05-13T16:00:00.000Z | 0 | 280 | 3 | 1 | 2026-05-03T05:39:27.000Z | 2026-05-03T05:39:27.000Z | 248 | 陈霄 | MX20 | 2198 | not_started | not_started | normal | 2bbdb5cb-c082-4837-8982-bb89d56a0ead | 190 |
| c128374a-4300-4e11-85fc-019932cb8209 | 17 | 2 | 版本发布 | other | not_started | medium | 0.00 | 100.00 | FS | 0 | 0 | 1 | 1607 | 2025-08-24T16:00:00.000Z | 2026-05-13T16:00:00.000Z | 0 | 263 | 3 | 1 | 2026-05-03T05:39:27.000Z | 2026-05-03T05:39:27.000Z | 249 | 陈霄 | MX20 | 2198 | not_started | not_started | normal | 2bbdb5cb-c082-4837-8982-bb89d56a0ead | 179 |
| f6078d4a-92ae-4bd3-950f-f237a47a1652 | 17 | 1 | Mx20台车电池固件 | firmware | not_started | medium | 0.00 | 100.00 | FS | 0 | 0 | 1 | 1607 | 2025-06-04T16:00:00.000Z | 2026-07-14T16:00:00.000Z | 0 | 406 | 3 | 1 | 2026-05-03T05:39:27.000Z | 2026-05-03T05:39:27.000Z | 250 | 陈霄 | MX20 | 2198 | not_started | not_started | normal |  | 279 |
| 2fa4344d-ee17-4c36-b102-536cee08feb9 | 17 | 2 | 需求整理 | other | not_started | medium | 0.00 | 100.00 | FS | 0 | 0 | 1 | 1607 | 2025-06-04T16:00:00.000Z | 2025-09-04T16:00:00.000Z | 0 | 93 | 3 | 1 | 2026-05-03T05:39:27.000Z | 2026-05-03T05:39:27.000Z | 251 | 陈霄 | MX20 | 2198 | delayed | not_started | delayed | f6078d4a-92ae-4bd3-950f-f237a47a1652 | 67 |
| 866837c5-82d0-43db-b7b7-0b56fd721f24 | 17 | 2 | 需求评审 | other | not_started | medium | 0.00 | 100.00 | FS | 0 | 0 | 1 | 1607 | 2025-06-19T16:00:00.000Z | 2025-09-04T16:00:00.000Z | 0 | 78 | 3 | 1 | 2026-05-03T05:39:27.000Z | 2026-05-03T05:39:27.000Z | 252 | 陈霄 | MX20 | 2198 | delayed | not_started | delayed | f6078d4a-92ae-4bd3-950f-f237a47a1652 | 56 |
| 51c9dbfb-3561-440d-9812-fb33bb9bc600 | 17 | 2 | 概要设计&评审 | other | not_started | medium | 0.00 | 100.00 | FS | 0 | 0 | 1 | 1607 | 2025-06-24T16:00:00.000Z | 2026-03-29T16:00:00.000Z | 0 | 279 | 3 | 1 | 2026-05-03T05:39:27.000Z | 2026-05-03T05:39:27.000Z | 253 | 陈霄 | MX20 | 2198 | delayed | not_started | delayed | f6078d4a-92ae-4bd3-950f-f237a47a1652 | 193 |
| f11405e8-4046-401e-a845-ba84abd3d086 | 17 | 2 | 详细设计&评审 | other | not_started | medium | 0.00 | 100.00 | FS | 0 | 0 | 1 | 1607 | 2025-07-09T16:00:00.000Z | 2026-04-13T16:00:00.000Z | 0 | 279 | 3 | 1 | 2026-05-03T05:39:27.000Z | 2026-05-03T05:39:27.000Z | 254 | 陈霄 | MX20 | 2198 | delayed | not_started | delayed | f6078d4a-92ae-4bd3-950f-f237a47a1652 | 192 |
| 20b96c87-b2cc-4e9b-b78d-1c877b1c70cb | 17 | 2 | 代码编写 | other | delay_warning | medium | 0.00 | 100.00 | FS | 0 | 0 | 1 | 1607 | 2025-07-13T16:00:00.000Z | 2026-05-07T16:00:00.000Z | 0 | 299 | 3 | 3 | 2026-05-03T05:39:27.000Z | 2026-05-05T17:00:00.000Z | 255 | 陈霄 | MX20 | 2198 | delay_warning | not_started | warning | f6078d4a-92ae-4bd3-950f-f237a47a1652 | 205 |
| e633cf28-a9c5-4df1-8422-2d0418b7ae37 | 17 | 2 | 功能调试 | other | not_started | medium | 0.00 | 100.00 | FS | 0 | 0 | 1 | 1607 | 2025-07-21T16:00:00.000Z | 2026-06-07T16:00:00.000Z | 0 | 322 | 3 | 1 | 2026-05-03T05:39:27.000Z | 2026-05-03T05:39:27.000Z | 256 | 陈霄 | MX20 | 2198 | not_started | not_started | normal | f6078d4a-92ae-4bd3-950f-f237a47a1652 | 219 |
| b3fd305c-cfeb-4073-9ae0-cd8b0a50e174 | 17 | 2 | CodeReview | other | not_started | medium | 0.00 | 100.00 | FS | 0 | 0 | 1 | 1607 | 2025-08-05T16:00:00.000Z | 2026-06-07T16:00:00.000Z | 0 | 307 | 3 | 1 | 2026-05-03T05:39:27.000Z | 2026-05-03T05:39:27.000Z | 257 | 陈霄 | MX20 | 2198 | not_started | not_started | normal | f6078d4a-92ae-4bd3-950f-f237a47a1652 | 208 |
| 66f2f808-0f0a-468e-b2e9-c9b455c67659 | 17 | 2 | 版本发布 | other | not_started | medium | 0.00 | 100.00 | FS | 0 | 0 | 1 | 1607 | 2025-08-13T16:00:00.000Z | 2026-06-14T16:00:00.000Z | 0 | 306 | 3 | 1 | 2026-05-03T05:39:27.000Z | 2026-05-03T05:39:27.000Z | 258 | 陈霄 | MX20 | 2198 | not_started | not_started | normal | f6078d4a-92ae-4bd3-950f-f237a47a1652 | 207 |
| a5f235ac-71f2-4297-80f5-d6452df5db2d | 17 | 2 | 故障排查 | other | not_started | medium | 0.00 | 100.00 | FS | 0 | 0 | 1 | 1607 | 2025-08-18T16:00:00.000Z | 2026-06-14T16:00:00.000Z | 0 | 301 | 3 | 1 | 2026-05-03T05:39:27.000Z | 2026-05-03T05:39:27.000Z | 259 | 陈霄 | MX20 | 2198 | not_started | not_started | normal | f6078d4a-92ae-4bd3-950f-f237a47a1652 | 204 |
| a84ab5a4-23d8-464c-b065-3dc218e6a95e | 17 | 2 | 版本发布 | other | not_started | medium | 0.00 | 100.00 | FS | 0 | 0 | 1 | 1607 | 2025-08-26T16:00:00.000Z | 2026-07-14T16:00:00.000Z | 0 | 323 | 3 | 1 | 2026-05-03T05:39:27.000Z | 2026-05-03T05:39:27.000Z | 260 | 陈霄 | MX20 | 2198 | not_started | not_started | normal | f6078d4a-92ae-4bd3-950f-f237a47a1652 | 220 |
| a0118f90-7013-488c-831a-b636092d5c06 | 17 | 1 | 杂项 | other | not_started | medium | 0.00 | 100.00 | FS | 0 | 0 | 1 | 1607 | 2026-05-02T16:00:00.000Z | 2026-05-02T16:00:00.000Z | 0 | 1 | 3 | 1 | 2026-05-03T05:39:27.000Z | 2026-05-03T05:39:27.000Z | 261 | 陈霄 | MX20 | 2198 | delayed | not_started | delayed |  |  |
| 6b26d5b8-3d47-4154-b69d-26079151066d | 17 | 2 | 2188 A20心脏机驱动接口恢复包变更需求 | other | not_started | medium | 0.00 | 100.00 | FS | 0 | 0 | 1 | 1607 | 2025-10-12T16:00:00.000Z | 2026-05-13T16:00:00.000Z | 0 | 214 | 3 | 1 | 2026-05-03T05:39:27.000Z | 2026-05-03T05:39:27.000Z | 262 | 陈霄 | MX20 | 2198 | not_started | not_started | normal | a0118f90-7013-488c-831a-b636092d5c06 | 144 |
| 27762b4b-a87e-459f-bcaa-ac28ea6acd8e | 17 | 2 | 2198工装自检固件 | other | not_started | medium | 0.00 | 100.00 | FS | 0 | 0 | 1 | 1607 | 2025-10-13T16:00:00.000Z | 2026-06-14T16:00:00.000Z | 0 | 245 | 3 | 1 | 2026-05-03T05:39:27.000Z | 2026-05-03T05:39:27.000Z | 263 | 陈霄 | MX20 | 2198 | not_started | not_started | normal | a0118f90-7013-488c-831a-b636092d5c06 | 164 |
| 9c8487ad-b19c-4b8b-8668-debb5b81dbd6 | 17 | 2 | N10驱动接口 | other | not_started | medium | 0.00 | 100.00 | FS | 0 | 0 | 1 | 1607 | 2025-12-09T16:00:00.000Z | 2026-05-13T16:00:00.000Z | 0 | 156 | 3 | 1 | 2026-05-03T05:39:27.000Z | 2026-05-03T05:39:27.000Z | 264 | 陈霄 | MX20 | 2198 | not_started | not_started | normal | a0118f90-7013-488c-831a-b636092d5c06 | 102 |
| 7a8170ab-c472-4e9b-ab1e-7ac91f6e8425 | 17 | 2 | R9肝纤探头接口 | other | not_started | medium | 0.00 | 100.00 | FS | 0 | 0 | 1 | 1607 | 2026-02-01T16:00:00.000Z | 2026-02-15T16:00:00.000Z | 0 | 15 | 3 | 1 | 2026-05-03T05:39:27.000Z | 2026-05-03T05:39:27.000Z | 265 | 陈霄 | MX20 | 2198 | delayed | not_started | delayed | a0118f90-7013-488c-831a-b636092d5c06 | 10 |
| 1b1dc5eb-196c-46b7-8c40-1419c642fdbd | 17 | 2 | Magic Windows切换（恢复包、接口、恢复包） | other | delay_warning | medium | 0.00 | 100.00 | FS | 0 | 0 | 1 | 1607 | 2026-03-03T16:00:00.000Z | 2026-05-05T16:00:00.000Z | 0 | 64 | 3 | 3 | 2026-05-03T05:39:27.000Z | 2026-05-05T17:00:00.000Z | 266 | 陈霄 | MX20 | 2198 | delay_warning | not_started | warning | a0118f90-7013-488c-831a-b636092d5c06 | 42 |
| 173e0af3-e203-4a3a-a928-79928802bd65 | 17 | 1 | MX20画屏板开发改版 | board | not_started | medium | 0.00 | 100.00 | FS | 0 | 0 | 1 | 1606 | 2025-11-14T16:00:00.000Z | 2026-04-07T16:00:00.000Z | 0 | 145 | 3 | 1 | 2026-05-03T05:39:27.000Z | 2026-05-03T05:39:27.000Z | 267 | 张达 | MX20 | 2198 | delayed | not_started | delayed |  | 97 |
| 66640081-3f2b-473f-85bb-bbe0e6da34d1 | 17 | 2 | 需求 | other | not_started | medium | 0.00 | 100.00 | FS | 0 | 0 | 1 | 1606 | 2025-11-23T16:00:00.000Z | 2025-12-22T16:00:00.000Z | 0 | 30 | 3 | 1 | 2026-05-03T05:39:27.000Z | 2026-05-03T05:39:27.000Z | 268 | 张达 | MX20 | 2198 | delayed | not_started | delayed | 173e0af3-e203-4a3a-a928-79928802bd65 | 22 |
| 05a15687-1fd9-43a8-b1ce-01a33b7a1514 | 17 | 3 | 画屏物料确定 | other | not_started | medium | 0.00 | 100.00 | FS | 0 | 0 | 1 | 1606 | 2025-10-27T16:00:00.000Z | 2025-10-30T16:00:00.000Z | 0 | 4 | 3 | 1 | 2026-05-03T05:39:27.000Z | 2026-05-03T05:39:27.000Z | 269 | 张达 | MX20 | 2198 | delayed | not_started | delayed | 66640081-3f2b-473f-85bb-bbe0e6da34d1 | 4 |
| 5302e850-5b5c-484e-a5cc-43f1eaf4ff19 | 17 | 3 | 画屏板初版DXF | other | not_started | medium | 0.00 | 100.00 | FS | 0 | 0 | 1 | 1606 | 2025-10-27T16:00:00.000Z | 2025-11-09T16:00:00.000Z | 0 | 14 | 3 | 1 | 2026-05-03T05:39:27.000Z | 2026-05-03T05:39:27.000Z | 270 | 张达 | MX20 | 2198 | delayed | not_started | delayed | 66640081-3f2b-473f-85bb-bbe0e6da34d1 | 10 |
| fdbf50cf-dcb5-4ab7-9d9c-b0e1cade0392 | 17 | 3 | 画屏板测试 | other | not_started | medium | 0.00 | 100.00 | FS | 0 | 0 | 1 | 1606 | 2025-11-12T16:00:00.000Z | 2025-12-16T16:00:00.000Z | 0 | 35 | 3 | 1 | 2026-05-03T05:39:27.000Z | 2026-05-03T05:39:27.000Z | 271 | 张达 | MX20 | 2198 | delayed | not_started | delayed | 66640081-3f2b-473f-85bb-bbe0e6da34d1 | 25 |

| id | project_id | wbs_level | description | task_type | status | priority | progress | full_time_ratio | dependency_type | delay_count | plan_change_count | progress_record_count | assignee_id | start_date | end_date | is_six_day_week | planned_duration | warning_days | version | created_at | updated_at | sort_order | assignee_name | project_name | project_code | computed_status | computed_execution_status | computed_time_status | parent_id | duration |
| --- | --- | --- | --- | --- | --- | --- | --- | --- | --- | --- | --- | --- | --- | --- | --- | --- | --- | --- | --- | --- | --- | --- | --- | --- | --- | --- | --- | --- | --- | --- |
| 40d3f4d7-0987-413c-a9fa-8d9574d71674 | 17 | 3 | 画屏需求收集 | other | not_started | medium | 0.00 | 100.00 | FS | 0 | 0 | 1 | 1606 | 2025-11-16T16:00:00.000Z | 2025-12-18T16:00:00.000Z | 0 | 33 | 3 | 1 | 2026-05-03T05:39:27.000Z | 2026-05-03T05:39:27.000Z | 272 | 张达 | MX20 | 2198 | delayed | not_started | delayed | 66640081-3f2b-473f-85bb-bbe0e6da34d1 | 25 |
| e3a476da-068e-4497-b04c-03dc5e7a32fe | 17 | 3 | 画屏板需求评审 | other | not_started | medium | 0.00 | 100.00 | FS | 0 | 0 | 1 | 1606 | 2025-12-21T16:00:00.000Z | 2025-12-22T16:00:00.000Z | 0 | 2 | 3 | 1 | 2026-05-03T05:39:27.000Z | 2026-05-03T05:39:27.000Z | 273 | 张达 | MX20 | 2198 | delayed | not_started | delayed | 66640081-3f2b-473f-85bb-bbe0e6da34d1 | 2 |
| d4fad289-b66e-41ec-b892-a925b4f3c7ec | 17 | 2 | 方案 | other | not_started | medium | 0.00 | 100.00 | FS | 0 | 0 | 1 | 1606 | 2025-12-08T16:00:00.000Z | 2025-12-30T16:00:00.000Z | 0 | 23 | 3 | 1 | 2026-05-03T05:39:27.000Z | 2026-05-03T05:39:27.000Z | 274 | 张达 | MX20 | 2198 | delayed | not_started | delayed | 173e0af3-e203-4a3a-a928-79928802bd65 | 17 |
| f0ee1d6e-413e-495b-9ab7-42ab482a513a | 17 | 3 | 电源树设计 | other | not_started | medium | 0.00 | 100.00 | FS | 0 | 0 | 1 | 1606 | 2025-12-23T16:00:00.000Z | 2025-12-23T16:00:00.000Z | 0 | 1 | 3 | 1 | 2026-05-03T05:39:27.000Z | 2026-05-03T05:39:27.000Z | 275 | 张达 | MX20 | 2198 | delayed | not_started | delayed | d4fad289-b66e-41ec-b892-a925b4f3c7ec | 1 |
| 73d41f2f-ee35-4d5c-b4c4-a05742adc30a | 17 | 3 | 方案设计 | other | not_started | medium | 0.00 | 100.00 | FS | 0 | 0 | 1 | 1606 | 2025-12-23T16:00:00.000Z | 2025-12-28T16:00:00.000Z | 0 | 6 | 3 | 1 | 2026-05-03T05:39:27.000Z | 2026-05-03T05:39:27.000Z | 276 | 张达 | MX20 | 2198 | delayed | not_started | delayed | d4fad289-b66e-41ec-b892-a925b4f3c7ec | 4 |
| 306d4aba-b571-4967-a77c-7e82faeae9bc | 17 | 3 | 方案评审 | other | not_started | medium | 0.00 | 100.00 | FS | 0 | 0 | 1 | 1606 | 2025-12-29T16:00:00.000Z | 2025-12-30T16:00:00.000Z | 0 | 2 | 3 | 1 | 2026-05-03T05:39:27.000Z | 2026-05-03T05:39:27.000Z | 277 | 张达 | MX20 | 2198 | delayed | not_started | delayed | d4fad289-b66e-41ec-b892-a925b4f3c7ec | 2 |
| 34d313ed-9d34-4d3c-be1f-d54b4dd38a22 | 17 | 2 | 原理图评审 | other | not_started | medium | 0.00 | 100.00 | FS | 0 | 0 | 1 | 1606 | 2025-12-17T16:00:00.000Z | 2026-01-15T16:00:00.000Z | 0 | 30 | 3 | 1 | 2026-05-03T05:39:27.000Z | 2026-05-03T05:39:27.000Z | 278 | 张达 | MX20 | 2198 | delayed | not_started | delayed | 173e0af3-e203-4a3a-a928-79928802bd65 | 21 |
| 17577908-fcc4-4d1c-9f0d-d7143bb03f78 | 17 | 3 | 原理图设计 | other | not_started | medium | 0.00 | 100.00 | FS | 0 | 0 | 1 | 1606 | 2026-01-04T16:00:00.000Z | 2026-01-08T16:00:00.000Z | 0 | 5 | 3 | 1 | 2026-05-03T05:39:27.000Z | 2026-05-03T05:39:27.000Z | 279 | 张达 | MX20 | 2198 | delayed | not_started | delayed | 34d313ed-9d34-4d3c-be1f-d54b4dd38a22 | 5 |
| 865c4861-7c66-4536-9bda-e4ae23f33236 | 17 | 3 | 自查原理图质量活动 | other | not_started | medium | 0.00 | 100.00 | FS | 0 | 0 | 1 | 1606 | 2026-01-04T16:00:00.000Z | 2026-01-12T16:00:00.000Z | 0 | 9 | 3 | 1 | 2026-05-03T05:39:27.000Z | 2026-05-03T05:39:27.000Z | 280 | 张达 | MX20 | 2198 | delayed | not_started | delayed | 34d313ed-9d34-4d3c-be1f-d54b4dd38a22 | 7 |
| 1df981bf-862f-47a1-ba2b-ac39b23895ac | 17 | 3 | 原理图评审 | other | not_started | medium | 0.00 | 100.00 | FS | 0 | 0 | 1 | 1606 | 2026-01-11T16:00:00.000Z | 2026-01-14T16:00:00.000Z | 0 | 4 | 3 | 1 | 2026-05-03T05:39:27.000Z | 2026-05-03T05:39:27.000Z | 281 | 张达 | MX20 | 2198 | delayed | not_started | delayed | 34d313ed-9d34-4d3c-be1f-d54b4dd38a22 | 4 |
| dea1126b-ce00-462c-84b9-f804694e8590 | 17 | 2 | 设计输入 | other | not_started | medium | 0.00 | 100.00 | FS | 0 | 0 | 1 | 1606 | 2025-12-29T16:00:00.000Z | 2026-01-18T16:00:00.000Z | 0 | 21 | 3 | 1 | 2026-05-03T05:39:27.000Z | 2026-05-03T05:39:27.000Z | 282 | 张达 | MX20 | 2198 | delayed | not_started | delayed | 173e0af3-e203-4a3a-a928-79928802bd65 | 14 |
| 3336f6e0-192a-4302-9dc5-38a39ad31f33 | 17 | 2 | 布局 | other | not_started | medium | 0.00 | 100.00 | FS | 0 | 0 | 1 | 1606 | 2026-01-18T16:00:00.000Z | 2026-01-26T16:00:00.000Z | 0 | 9 | 3 | 1 | 2026-05-03T05:39:27.000Z | 2026-05-03T05:39:27.000Z | 283 | 张达 | MX20 | 2198 | delayed | not_started | delayed | 173e0af3-e203-4a3a-a928-79928802bd65 | 7 |
| c7b52e1b-8ab1-402f-9c24-b0305e653a8c | 17 | 3 | 布局 | other | not_started | medium | 0.00 | 100.00 | FS | 0 | 0 | 1 | 1606 | 2026-01-18T16:00:00.000Z | 2026-01-22T16:00:00.000Z | 0 | 5 | 3 | 1 | 2026-05-03T05:39:27.000Z | 2026-05-03T05:39:27.000Z | 284 | 张达 | MX20 | 2198 | delayed | not_started | delayed | 3336f6e0-192a-4302-9dc5-38a39ad31f33 | 5 |
| 6ee50283-a511-4e60-a2b7-af8961a275fc | 17 | 3 | 收集布局审核意见 | other | not_started | medium | 0.00 | 100.00 | FS | 0 | 0 | 1 | 1606 | 2026-01-25T16:00:00.000Z | 2026-01-25T16:00:00.000Z | 0 | 1 | 3 | 1 | 2026-05-03T05:39:27.000Z | 2026-05-03T05:39:27.000Z | 285 | 张达 | MX20 | 2198 | delayed | not_started | delayed | 3336f6e0-192a-4302-9dc5-38a39ad31f33 | 1 |
| d2d9588e-88cd-4f89-bff4-7149619d10ce | 17 | 3 | 布局评审 | other | not_started | medium | 0.00 | 100.00 | FS | 0 | 0 | 1 | 1606 | 2026-01-25T16:00:00.000Z | 2026-01-26T16:00:00.000Z | 0 | 2 | 3 | 1 | 2026-05-03T05:39:27.000Z | 2026-05-03T05:39:27.000Z | 286 | 张达 | MX20 | 2198 | delayed | not_started | delayed | 3336f6e0-192a-4302-9dc5-38a39ad31f33 | 2 |
| 096d6899-0ab1-48e6-868e-34f710ecd058 | 17 | 2 | 布线 | other | not_started | medium | 0.00 | 100.00 | FS | 0 | 0 | 1 | 1606 | 2026-01-27T16:00:00.000Z | 2026-03-11T16:00:00.000Z | 0 | 44 | 3 | 1 | 2026-05-03T05:39:27.000Z | 2026-05-03T05:39:27.000Z | 287 | 张达 | MX20 | 2198 | delayed | not_started | delayed | 173e0af3-e203-4a3a-a928-79928802bd65 | 28 |
| 98da0b9f-7b93-4d49-bdb5-96a25a755152 | 17 | 3 | 布线设计 | other | not_started | medium | 0.00 | 100.00 | FS | 0 | 0 | 1 | 1606 | 2026-01-27T16:00:00.000Z | 2026-03-09T16:00:00.000Z | 0 | 42 | 3 | 1 | 2026-05-03T05:39:27.000Z | 2026-05-03T05:39:27.000Z | 288 | 张达 | MX20 | 2198 | delayed | not_started | delayed | 096d6899-0ab1-48e6-868e-34f710ecd058 | 26 |
| df276483-9491-4f03-a14b-1aeb0f6892e6 | 17 | 3 | 收集布线审核意见 | other | not_started | medium | 0.00 | 100.00 | FS | 0 | 0 | 1 | 1606 | 2026-03-03T16:00:00.000Z | 2026-03-04T16:00:00.000Z | 0 | 2 | 3 | 1 | 2026-05-03T05:39:27.000Z | 2026-05-03T05:39:27.000Z | 289 | 张达 | MX20 | 2198 | delayed | not_started | delayed | 096d6899-0ab1-48e6-868e-34f710ecd058 | 2 |
| abc6fda3-709b-4bd8-981f-ad6914609306 | 17 | 3 | 布线评审 | other | not_started | medium | 0.00 | 100.00 | FS | 0 | 0 | 1 | 1606 | 2026-01-22T16:00:00.000Z | 2026-03-12T16:00:00.000Z | 0 | 50 | 3 | 1 | 2026-05-03T05:39:27.000Z | 2026-05-03T05:39:27.000Z | 290 | 张达 | MX20 | 2198 | delayed | not_started | delayed | 096d6899-0ab1-48e6-868e-34f710ecd058 | 31 |
| 4d2e9546-3f90-4c9e-ada3-73f43c39a93d | 17 | 2 | 投板 | other | not_started | medium | 0.00 | 100.00 | FS | 0 | 0 | 1 | 1606 | 2026-01-29T16:00:00.000Z | 2026-03-09T16:00:00.000Z | 0 | 40 | 3 | 1 | 2026-05-03T05:39:27.000Z | 2026-05-03T05:39:27.000Z | 291 | 张达 | MX20 | 2198 | delayed | not_started | delayed | 173e0af3-e203-4a3a-a928-79928802bd65 | 26 |
| 84999f88-3f4d-47d7-9e82-be2562d22ae0 | 17 | 1 | MX20PHV固件开发 | firmware | not_started | medium | 0.00 | 100.00 | FS | 0 | 0 | 1 | 1606 | 2024-12-31T16:00:00.000Z | 2026-05-13T16:00:00.000Z | 0 | 499 | 3 | 1 | 2026-05-03T05:39:27.000Z | 2026-05-03T05:39:27.000Z | 292 | 张达 | MX20 | 2198 | not_started | not_started | normal |  | 347 |
| 5d5f788e-37a8-4d39-8645-92e0562cc9d3 | 17 | 2 | 调试版本固件编写与发布 | other | not_started | medium | 0.00 | 100.00 | FS | 0 | 0 | 1 | 1606 | 2025-02-17T16:00:00.000Z | 2025-04-29T16:00:00.000Z | 0 | 72 | 3 | 1 | 2026-05-03T05:39:27.000Z | 2026-05-03T05:39:27.000Z | 293 | 张达 | MX20 | 2198 | delayed | not_started | delayed | 84999f88-3f4d-47d7-9e82-be2562d22ae0 | 52 |
| 4f1678d7-430f-490b-aa39-580bee77ed3c | 17 | 2 | 需求收集与评审 | other | not_started | medium | 0.00 | 100.00 | FS | 0 | 0 | 1 | 1606 | 2025-03-02T16:00:00.000Z | 2025-03-27T16:00:00.000Z | 0 | 26 | 3 | 1 | 2026-05-03T05:39:27.000Z | 2026-05-03T05:39:27.000Z | 294 | 张达 | MX20 | 2198 | delayed | not_started | delayed | 84999f88-3f4d-47d7-9e82-be2562d22ae0 | 20 |
| 29c7183e-7a4e-4b7d-bbcf-67aa00caaa25 | 17 | 2 | 嵌入式概要设计 | other | not_started | medium | 0.00 | 100.00 | FS | 0 | 0 | 1 | 1606 | 2025-05-04T16:00:00.000Z | 2026-01-07T16:00:00.000Z | 0 | 249 | 3 | 1 | 2026-05-03T05:39:27.000Z | 2026-05-03T05:39:27.000Z | 295 | 张达 | MX20 | 2198 | delayed | not_started | delayed | 84999f88-3f4d-47d7-9e82-be2562d22ae0 | 178 |
| b069112e-d201-497f-a8d7-296dcb92cfa5 | 17 | 2 | 嵌入式详细设计 | other | not_started | medium | 0.00 | 100.00 | FS | 0 | 0 | 1 | 1606 | 2025-12-10T16:00:00.000Z | 2026-01-21T16:00:00.000Z | 0 | 43 | 3 | 1 | 2026-05-03T05:39:27.000Z | 2026-05-03T05:39:27.000Z | 296 | 张达 | MX20 | 2198 | delayed | not_started | delayed | 84999f88-3f4d-47d7-9e82-be2562d22ae0 | 30 |
| 0e54666d-a2fa-402d-ba5e-f51b4f2bc5f4 | 17 | 3 | 嵌入式编写代码 | other | not_started | medium | 0.00 | 100.00 | FS | 0 | 0 | 1 | 1606 | 2025-12-28T16:00:00.000Z | 2026-02-15T16:00:00.000Z | 0 | 50 | 3 | 1 | 2026-05-03T05:39:28.000Z | 2026-05-03T05:39:28.000Z | 297 | 张达 | MX20 | 2198 | delayed | not_started | delayed | b069112e-d201-497f-a8d7-296dcb92cfa5 | 30 |
| ac41077b-1b4c-4617-b5fd-4ac9c334b609 | 17 | 3 | 正式版本初次发布 | other | not_started | medium | 0.00 | 100.00 | FS | 0 | 0 | 1 | 1606 | 2026-01-25T16:00:00.000Z | 2026-02-17T16:00:00.000Z | 0 | 24 | 3 | 1 | 2026-05-03T05:39:28.000Z | 2026-05-03T05:39:28.000Z | 298 | 张达 | MX20 | 2198 | delayed | not_started | delayed | b069112e-d201-497f-a8d7-296dcb92cfa5 | 13 |
| 455a33c3-b258-47cf-abe8-8ab96ad8dc45 | 17 | 3 | 封闭故障与处理新增需求版本发布 | other | delay_warning | medium | 0.00 | 100.00 | FS | 0 | 0 | 1 | 1606 | 2026-02-08T16:00:00.000Z | 2026-05-05T16:00:00.000Z | 0 | 87 | 3 | 3 | 2026-05-03T05:39:28.000Z | 2026-05-05T17:00:00.000Z | 299 | 张达 | MX20 | 2198 | delay_warning | not_started | warning | b069112e-d201-497f-a8d7-296dcb92cfa5 | 59 |
| 7605efb9-de2f-4639-851d-c1db269b75a5 | 13 | 1 | 超高端2TSSD导入 | material_import | not_started | medium | 0.00 | 100.00 | FS | 0 | 0 | 1 | 1606 | 2024-10-31T16:00:00.000Z | 2025-04-29T16:00:00.000Z | 0 | 181 | 3 | 1 | 2026-05-03T05:39:28.000Z | 2026-05-03T05:39:28.000Z | 300 | 张达 | 超高端全身机 | 2169 | delayed | not_started | delayed |  | 129 |
| 78a2d208-8124-46bc-bfef-347dd3184ca0 | 13 | 2 | 质量线-质量活动 | other | not_started | medium | 0.00 | 100.00 | FS | 0 | 0 | 1 | 1606 | 2024-12-31T16:00:00.000Z | 2025-04-29T16:00:00.000Z | 0 | 120 | 3 | 1 | 2026-05-03T05:39:28.000Z | 2026-05-03T05:39:28.000Z | 301 | 张达 | 超高端全身机 | 2169 | delayed | not_started | delayed | 7605efb9-de2f-4639-851d-c1db269b75a5 | 86 |
| e8a9a64c-7827-4d68-8c88-fc8a41503a62 | 13 | 3 | 软件测试 | other | not_started | medium | 0.00 | 100.00 | FS | 0 | 0 | 1 | 1606 | 2025-02-23T16:00:00.000Z | 2025-07-30T16:00:00.000Z | 0 | 158 | 3 | 1 | 2026-05-03T05:39:28.000Z | 2026-05-03T05:39:28.000Z | 302 | 张达 | 超高端全身机 | 2169 | delayed | not_started | delayed | 78a2d208-8124-46bc-bfef-347dd3184ca0 | 114 |
| 5becfe7c-105b-41ad-aa74-092739629baf | 13 | 3 | 硬件测试 | other | not_started | medium | 0.00 | 100.00 | FS | 0 | 0 | 1 | 1606 | 2025-02-23T16:00:00.000Z | 2025-03-30T16:00:00.000Z | 0 | 36 | 3 | 1 | 2026-05-03T05:39:28.000Z | 2026-05-03T05:39:28.000Z | 303 | 张达 | 超高端全身机 | 2169 | delayed | not_started | delayed | 78a2d208-8124-46bc-bfef-347dd3184ca0 | 26 |
| 35a8075b-3385-4674-b3fc-0584f3451d5b | 13 | 2 | 物料线-备料 | other | not_started | medium | 0.00 | 100.00 | FS | 0 | 0 | 1 | 1606 | 2024-12-31T16:00:00.000Z | 2025-07-30T16:00:00.000Z | 0 | 212 | 3 | 1 | 2026-05-03T05:39:28.000Z | 2026-05-03T05:39:28.000Z | 304 | 张达 | 超高端全身机 | 2169 | delayed | not_started | delayed | 7605efb9-de2f-4639-851d-c1db269b75a5 | 152 |
| 39d670d3-a693-4995-90e4-76ec7e790ab2 | 13 | 3 | 测试备料 | other | not_started | medium | 0.00 | 100.00 | FS | 0 | 0 | 1 | 1606 | 2025-02-23T16:00:00.000Z | 2025-02-25T16:00:00.000Z | 0 | 3 | 3 | 1 | 2026-05-03T05:39:28.000Z | 2026-05-03T05:39:28.000Z | 305 | 张达 | 超高端全身机 | 2169 | delayed | not_started | delayed | 35a8075b-3385-4674-b3fc-0584f3451d5b | 3 |
| f4fac16e-8760-47de-81dd-a4bdc9ec858e | 13 | 3 | 试产备料 | other | not_started | medium | 0.00 | 100.00 | FS | 0 | 0 | 1 | 1606 | 2025-03-16T16:00:00.000Z | 2025-07-30T16:00:00.000Z | 0 | 137 | 3 | 1 | 2026-05-03T05:39:28.000Z | 2026-05-03T05:39:28.000Z | 306 | 张达 | 超高端全身机 | 2169 | delayed | not_started | delayed | 35a8075b-3385-4674-b3fc-0584f3451d5b | 99 |
| d70d5e02-33ab-4e9a-867d-e3d25f6bca37 | 13 | 2 | 合规线-归档 | other | not_started | medium | 0.00 | 100.00 | FS | 0 | 0 | 1 | 1606 | 2024-12-31T16:00:00.000Z | 2025-04-29T16:00:00.000Z | 0 | 120 | 3 | 1 | 2026-05-03T05:39:28.000Z | 2026-05-03T05:39:28.000Z | 307 | 张达 | 超高端全身机 | 2169 | delayed | not_started | delayed | 7605efb9-de2f-4639-851d-c1db269b75a5 | 86 |
| 4f728abc-6cc5-4e03-885b-e3809e5ae525 | 13 | 3 | 采委会通过 | other | not_started | medium | 0.00 | 100.00 | FS | 0 | 0 | 1 | 1606 | 2025-02-16T16:00:00.000Z | 2025-03-06T16:00:00.000Z | 0 | 19 | 3 | 1 | 2026-05-03T05:39:28.000Z | 2026-05-03T05:39:28.000Z | 308 | 张达 | 超高端全身机 | 2169 | delayed | not_started | delayed | d70d5e02-33ab-4e9a-867d-e3d25f6bca37 | 15 |
| 0397f496-8b9d-47dc-92f4-5a4f41b75e41 | 13 | 3 | 选型通过 | other | not_started | medium | 0.00 | 100.00 | FS | 0 | 0 | 1 | 1606 | 2025-03-09T16:00:00.000Z | 2025-03-11T16:00:00.000Z | 0 | 3 | 3 | 1 | 2026-05-03T05:39:28.000Z | 2026-05-03T05:39:28.000Z | 309 | 张达 | 超高端全身机 | 2169 | delayed | not_started | delayed | d70d5e02-33ab-4e9a-867d-e3d25f6bca37 | 3 |
| 62f36acc-cb84-4ae5-8633-32b3746c4e93 | 13 | 3 | 认证通过 | other | not_started | medium | 0.00 | 100.00 | FS | 0 | 0 | 1 | 1606 | 2025-03-16T16:00:00.000Z | 2025-04-14T16:00:00.000Z | 0 | 30 | 3 | 1 | 2026-05-03T05:39:28.000Z | 2026-05-03T05:39:28.000Z | 310 | 张达 | 超高端全身机 | 2169 | delayed | not_started | delayed | d70d5e02-33ab-4e9a-867d-e3d25f6bca37 | 22 |
| 3a8914db-35a9-46e3-bff5-6e0b2cf770e4 | 25 | 1 | TEST-TASK-DEP-B 依赖测试任务B | other | delay_warning | medium | 0.00 | 100.00 | FS | 0 | 0 | 1 |  | 2026-05-05T16:00:00.000Z | 2026-05-07T16:00:00.000Z | 0 | 3 | 3 | 3 | 2026-05-05T16:17:06.000Z | 2026-05-06T03:34:06.000Z | 300 |  | 测试项目-任务测试 | TEST-PROJ-001 | delay_warning | not_started | warning |  | 3 |
| 2f20fbe6-9a37-4d41-85eb-05697aafe3af | 17 | 1 | 2198 512G SSD导入 | material_import | not_started | medium | 0.00 | 100.00 | FS | 0 | 0 | 1 | 1606 | 2024-10-31T16:00:00.000Z | 2025-12-30T16:00:00.000Z | 0 | 426 | 3 | 1 | 2026-05-03T05:39:28.000Z | 2026-05-03T05:39:28.000Z | 311 | 张达 | MX20 | 2198 | delayed | not_started | delayed |  | 304 |
| 412d1261-37a6-47a6-b268-60d052e1aea2 | 17 | 2 | 质量线-质量活动 | other | not_started | medium | 0.00 | 100.00 | FS | 0 | 0 | 1 | 1606 | 2025-03-26T16:00:00.000Z | 2026-06-14T16:00:00.000Z | 0 | 446 | 3 | 1 | 2026-05-03T05:39:28.000Z | 2026-05-03T05:39:28.000Z | 312 | 张达 | MX20 | 2198 | not_started | not_started | normal | 2f20fbe6-9a37-4d41-85eb-05697aafe3af | 307 |
| daa1642b-a1d9-470f-aa97-fa82017a78f8 | 17 | 3 | 导入自测 | other | not_started | medium | 0.00 | 100.00 | FS | 0 | 0 | 1 | 1606 | 2025-07-20T16:00:00.000Z | 2025-10-29T16:00:00.000Z | 0 | 102 | 3 | 1 | 2026-05-03T05:39:28.000Z | 2026-05-03T05:39:28.000Z | 313 | 张达 | MX20 | 2198 | delayed | not_started | delayed | 412d1261-37a6-47a6-b268-60d052e1aea2 | 74 |
| c44fefd1-d943-4e77-9072-3cb53b9ef30b | 17 | 3 | 软件测试 | other | not_started | medium | 0.00 | 100.00 | FS | 0 | 0 | 1 | 1606 | 2025-07-31T16:00:00.000Z | 2026-02-08T16:00:00.000Z | 0 | 193 | 3 | 1 | 2026-05-03T05:39:28.000Z | 2026-05-03T05:39:28.000Z | 314 | 张达 | MX20 | 2198 | delayed | not_started | delayed | 412d1261-37a6-47a6-b268-60d052e1aea2 | 131 |
| f3b44cae-d664-4161-b74e-be444b2d4964 | 17 | 3 | 硬件测试 | other | not_started | medium | 0.00 | 100.00 | FS | 0 | 0 | 1 | 1606 | 2025-07-31T16:00:00.000Z | 2026-04-08T16:00:00.000Z | 0 | 252 | 3 | 1 | 2026-05-03T05:39:28.000Z | 2026-05-03T05:39:28.000Z | 315 | 张达 | MX20 | 2198 | delayed | not_started | delayed | 412d1261-37a6-47a6-b268-60d052e1aea2 | 173 |
| a3a4bc58-3e0f-4004-a40d-6e60601483fe | 17 | 2 | 物料线-备料 | other | not_started | medium | 0.00 | 100.00 | FS | 0 | 0 | 1 | 1606 | 2024-12-31T16:00:00.000Z | 2026-05-13T16:00:00.000Z | 0 | 499 | 3 | 1 | 2026-05-03T05:39:28.000Z | 2026-05-03T05:39:28.000Z | 316 | 张达 | MX20 | 2198 | not_started | not_started | normal | 2f20fbe6-9a37-4d41-85eb-05697aafe3af | 347 |
| 6ebc7634-59e7-456e-9324-ed6563c61e52 | 17 | 3 | 工程样机 | other | not_started | medium | 0.00 | 100.00 | FS | 0 | 0 | 1 | 1606 | 2025-04-14T16:00:00.000Z | 2025-07-17T16:00:00.000Z | 0 | 95 | 3 | 1 | 2026-05-03T05:39:28.000Z | 2026-05-03T05:39:28.000Z | 317 | 张达 | MX20 | 2198 | delayed | not_started | delayed | a3a4bc58-3e0f-4004-a40d-6e60601483fe | 69 |
| ec0913bf-84fb-471c-8024-27c293a79fa2 | 17 | 2 | 合规线-归档 | other | not_started | medium | 0.00 | 100.00 | FS | 0 | 0 | 1 | 1606 | 2024-12-31T16:00:00.000Z | 2025-12-30T16:00:00.000Z | 0 | 365 | 3 | 1 | 2026-05-03T05:39:28.000Z | 2026-05-03T05:39:28.000Z | 318 | 张达 | MX20 | 2198 | delayed | not_started | delayed | 2f20fbe6-9a37-4d41-85eb-05697aafe3af | 261 |
| bc34817e-74fc-4d1f-a0d3-dbb84406a35d | 17 | 3 | 采委会通过 | other | not_started | medium | 0.00 | 100.00 | FS | 0 | 0 | 1 | 1606 | 2025-03-25T16:00:00.000Z | 2025-10-23T16:00:00.000Z | 0 | 213 | 3 | 1 | 2026-05-03T05:39:28.000Z | 2026-05-03T05:39:28.000Z | 319 | 张达 | MX20 | 2198 | delayed | not_started | delayed | ec0913bf-84fb-471c-8024-27c293a79fa2 | 153 |
| 456bbb89-ed00-4396-8bbd-8dad35a22e2e | 17 | 3 | 选型通过 | other | not_started | medium | 0.00 | 100.00 | FS | 0 | 0 | 1 | 1606 | 2025-03-09T16:00:00.000Z | 2026-02-08T16:00:00.000Z | 0 | 337 | 3 | 1 | 2026-05-03T05:39:28.000Z | 2026-05-03T05:39:28.000Z | 320 | 张达 | MX20 | 2198 | delayed | not_started | delayed | ec0913bf-84fb-471c-8024-27c293a79fa2 | 235 |
| be9cce00-ef04-4e8f-88f1-68489a9f93e5 | 17 | 3 | 认证通过 | other | not_started | medium | 0.00 | 100.00 | FS | 0 | 0 | 1 | 1606 | 2025-03-16T16:00:00.000Z | 2026-03-08T16:00:00.000Z | 0 | 358 | 3 | 1 | 2026-05-03T05:39:28.000Z | 2026-05-03T05:39:28.000Z | 321 | 张达 | MX20 | 2198 | delayed | not_started | delayed | ec0913bf-84fb-471c-8024-27c293a79fa2 | 250 |
| bfc3da41-d8e0-40af-b0e1-d86a097bf324 | 17 | 1 | DDR4 8G 内存条改代 | material_import | not_started | medium | 0.00 | 100.00 | FS | 0 | 0 | 1 | 1606 | 2025-11-30T16:00:00.000Z | 2026-03-22T16:00:00.000Z | 0 | 113 | 3 | 1 | 2026-05-03T05:39:28.000Z | 2026-05-03T05:39:28.000Z | 322 | 张达 | MX20 | 2198 | delayed | not_started | delayed |  | 75 |
| b07479de-92ad-4299-9ea6-07111aa9aeb1 | 17 | 2 | 质量线-质量活动 | other | not_started | medium | 0.00 | 100.00 | FS | 0 | 0 | 1 | 1606 | 2025-11-30T16:00:00.000Z | 2026-03-08T16:00:00.000Z | 0 | 99 | 3 | 1 | 2026-05-03T05:39:28.000Z | 2026-05-03T05:39:28.000Z | 323 | 张达 | MX20 | 2198 | delayed | not_started | delayed | bfc3da41-d8e0-40af-b0e1-d86a097bf324 | 65 |
| ff8faf61-7122-49f6-98ae-8914d98e2b1a | 17 | 3 | 导入自测 | other | not_started | medium | 0.00 | 100.00 | FS | 0 | 0 | 1 | 1606 | 2025-11-30T16:00:00.000Z | 2026-01-01T16:00:00.000Z | 0 | 33 | 3 | 1 | 2026-05-03T05:39:28.000Z | 2026-05-03T05:39:28.000Z | 324 | 张达 | MX20 | 2198 | delayed | not_started | delayed | b07479de-92ad-4299-9ea6-07111aa9aeb1 | 24 |
| bf6c4858-1352-4c92-9d65-eebe256743bf | 17 | 3 | 软件测试 | other | not_started | medium | 0.00 | 100.00 | FS | 0 | 0 | 1 | 1606 | 2026-01-04T16:00:00.000Z | 2026-03-18T16:00:00.000Z | 0 | 74 | 3 | 1 | 2026-05-03T05:39:28.000Z | 2026-05-03T05:39:28.000Z | 325 | 张达 | MX20 | 2198 | delayed | not_started | delayed | b07479de-92ad-4299-9ea6-07111aa9aeb1 | 49 |
| 8a7b2b26-b2fa-4e47-840d-e8f553709e56 | 17 | 3 | 硬件测试 | other | not_started | medium | 0.00 | 100.00 | FS | 0 | 0 | 1 | 1606 | 2026-01-04T16:00:00.000Z | 2026-03-12T16:00:00.000Z | 0 | 68 | 3 | 1 | 2026-05-03T05:39:28.000Z | 2026-05-03T05:39:28.000Z | 326 | 张达 | MX20 | 2198 | delayed | not_started | delayed | b07479de-92ad-4299-9ea6-07111aa9aeb1 | 45 |
| b429542e-c30c-43eb-8020-5e1ef126dcb8 | 17 | 2 | 物料线-备料 | other | not_started | medium | 0.00 | 100.00 | FS | 0 | 0 | 1 | 1606 | 2025-11-30T16:00:00.000Z | 2026-03-22T16:00:00.000Z | 0 | 113 | 3 | 1 | 2026-05-03T05:39:28.000Z | 2026-05-03T05:39:28.000Z | 327 | 张达 | MX20 | 2198 | delayed | not_started | delayed | bfc3da41-d8e0-40af-b0e1-d86a097bf324 | 75 |
| 3d5d6789-7d3f-4004-8ab0-ee0f65cbd50a | 17 | 3 | 测试备料 | other | not_started | medium | 0.00 | 100.00 | FS | 0 | 0 | 1 | 1606 | 2025-11-30T16:00:00.000Z | 2026-01-12T16:00:00.000Z | 0 | 44 | 3 | 1 | 2026-05-03T05:39:28.000Z | 2026-05-03T05:39:28.000Z | 328 | 张达 | MX20 | 2198 | delayed | not_started | delayed | b429542e-c30c-43eb-8020-5e1ef126dcb8 | 31 |
| a0efbdb6-1196-4a7b-ae4b-89f1acec7109 | 17 | 3 | 试产备料 | other | not_started | medium | 0.00 | 100.00 | FS | 0 | 0 | 1 | 1606 | 2025-11-30T16:00:00.000Z | 2026-03-22T16:00:00.000Z | 0 | 113 | 3 | 1 | 2026-05-03T05:39:28.000Z | 2026-05-03T05:39:28.000Z | 329 | 张达 | MX20 | 2198 | delayed | not_started | delayed | b429542e-c30c-43eb-8020-5e1ef126dcb8 | 75 |
| 9203ba80-6aaa-42a0-90d2-c37599349b5b | 17 | 2 | 合规线-归档 | other | not_started | medium | 0.00 | 100.00 | FS | 0 | 0 | 1 | 1606 | 2025-11-30T16:00:00.000Z | 2026-03-15T16:00:00.000Z | 0 | 106 | 3 | 1 | 2026-05-03T05:39:28.000Z | 2026-05-03T05:39:28.000Z | 330 | 张达 | MX20 | 2198 | delayed | not_started | delayed | bfc3da41-d8e0-40af-b0e1-d86a097bf324 | 70 |
| f7675d5b-6971-4a6a-8c34-35877949b0ad | 17 | 3 | 采委会通过 | other | not_started | medium | 0.00 | 100.00 | FS | 0 | 0 | 1 | 1606 | 2025-11-30T16:00:00.000Z | 2026-01-18T16:00:00.000Z | 0 | 50 | 3 | 1 | 2026-05-03T05:39:28.000Z | 2026-05-03T05:39:28.000Z | 331 | 张达 | MX20 | 2198 | delayed | not_started | delayed | 9203ba80-6aaa-42a0-90d2-c37599349b5b | 35 |
| bf182aa2-8cc9-4325-940b-72003c654ae7 | 17 | 3 | 选型通过 | other | not_started | medium | 0.00 | 100.00 | FS | 0 | 0 | 1 | 1606 | 2025-11-30T16:00:00.000Z | 2026-02-08T16:00:00.000Z | 0 | 71 | 3 | 1 | 2026-05-03T05:39:28.000Z | 2026-05-03T05:39:28.000Z | 332 | 张达 | MX20 | 2198 | delayed | not_started | delayed | 9203ba80-6aaa-42a0-90d2-c37599349b5b | 45 |
| e8a62bc3-93bc-44f8-be7d-8dd3c5cb7f3d | 17 | 3 | 认证通过 | other | not_started | medium | 0.00 | 100.00 | FS | 0 | 0 | 1 | 1606 | 2025-11-30T16:00:00.000Z | 2026-03-15T16:00:00.000Z | 0 | 106 | 3 | 1 | 2026-05-03T05:39:28.000Z | 2026-05-03T05:39:28.000Z | 333 | 张达 | MX20 | 2198 | delayed | not_started | delayed | 9203ba80-6aaa-42a0-90d2-c37599349b5b | 70 |
| 20ac2efb-95a7-4de4-a17a-5e0b5393c923 | 13 | 1 | 2169 DDR4 16G内存条改代 | material_import | not_started | medium | 0.00 | 100.00 | FS | 0 | 0 | 1 | 1606 | 2024-10-31T16:00:00.000Z | 2026-03-08T16:00:00.000Z | 0 | 494 | 3 | 1 | 2026-05-03T05:39:28.000Z | 2026-05-03T05:39:28.000Z | 334 | 张达 | 超高端全身机 | 2169 | delayed | not_started | delayed |  | 346 |
| fe08c7f1-b042-4a03-8d36-83cef236a788 | 13 | 2 | 质量线-质量活动 | other | not_started | medium | 0.00 | 100.00 | FS | 0 | 0 | 1 | 1606 | 2026-05-02T16:00:00.000Z | 2026-05-02T16:00:00.000Z | 0 | 1 | 3 | 1 | 2026-05-03T05:39:28.000Z | 2026-05-03T05:39:28.000Z | 335 | 张达 | 超高端全身机 | 2169 | delayed | not_started | delayed | 20ac2efb-95a7-4de4-a17a-5e0b5393c923 |  |
| bb9bf7d5-89d7-4a8e-89c5-5130f08e70eb | 13 | 3 | 导入自测 | other | not_started | medium | 0.00 | 100.00 | FS | 0 | 0 | 1 | 1606 | 2026-05-02T16:00:00.000Z | 2026-05-02T16:00:00.000Z | 0 | 1 | 3 | 1 | 2026-05-03T05:39:28.000Z | 2026-05-03T05:39:28.000Z | 336 | 张达 | 超高端全身机 | 2169 | delayed | not_started | delayed | fe08c7f1-b042-4a03-8d36-83cef236a788 |  |
| ac81e55d-5485-424b-8df8-94bcefe57b04 | 13 | 3 | 软件测试 | other | not_started | medium | 0.00 | 100.00 | FS | 0 | 0 | 1 | 1606 | 2025-11-30T16:00:00.000Z | 2026-01-18T16:00:00.000Z | 0 | 50 | 3 | 1 | 2026-05-03T05:39:28.000Z | 2026-05-03T05:39:28.000Z | 337 | 张达 | 超高端全身机 | 2169 | delayed | not_started | delayed | fe08c7f1-b042-4a03-8d36-83cef236a788 | 35 |
| d96c1399-03a7-49b1-a33c-b2af14eef599 | 13 | 3 | 硬件测试 | other | not_started | medium | 0.00 | 100.00 | FS | 0 | 0 | 1 | 1606 | 2025-11-30T16:00:00.000Z | 2026-01-18T16:00:00.000Z | 0 | 50 | 3 | 1 | 2026-05-03T05:39:28.000Z | 2026-05-03T05:39:28.000Z | 338 | 张达 | 超高端全身机 | 2169 | delayed | not_started | delayed | fe08c7f1-b042-4a03-8d36-83cef236a788 | 35 |
| c814e89f-a186-4550-b95f-c5dc8d24dbd5 | 13 | 2 | 物料线-备料 | other | not_started | medium | 0.00 | 100.00 | FS | 0 | 0 | 1 | 1606 | 2025-03-30T16:00:00.000Z | 2025-03-30T16:00:00.000Z | 0 | 1 | 3 | 1 | 2026-05-03T05:39:28.000Z | 2026-05-03T05:39:28.000Z | 339 | 张达 | 超高端全身机 | 2169 | delayed | not_started | delayed | 20ac2efb-95a7-4de4-a17a-5e0b5393c923 |  |
| 1471cffc-a268-4dac-b928-6d55b6098d50 | 13 | 3 | 可行性测试备料 | other | not_started | medium | 0.00 | 100.00 | FS | 0 | 0 | 1 | 1606 | 2025-11-02T16:00:00.000Z | 2025-11-02T16:00:00.000Z | 0 | 1 | 3 | 1 | 2026-05-03T05:39:28.000Z | 2026-05-03T05:39:28.000Z | 340 | 张达 | 超高端全身机 | 2169 | delayed | not_started | delayed | c814e89f-a186-4550-b95f-c5dc8d24dbd5 |  |

| id | project_id | wbs_level | description | task_type | status | priority | progress | full_time_ratio | dependency_type | delay_count | plan_change_count | progress_record_count | assignee_id | start_date | end_date | is_six_day_week | planned_duration | warning_days | version | created_at | updated_at | sort_order | assignee_name | project_name | project_code | computed_status | computed_execution_status | computed_time_status | parent_id | duration |
| --- | --- | --- | --- | --- | --- | --- | --- | --- | --- | --- | --- | --- | --- | --- | --- | --- | --- | --- | --- | --- | --- | --- | --- | --- | --- | --- | --- | --- | --- | --- |
| 4df5dc57-767c-4956-b5d1-0b74b02b8a24 | 13 | 3 | 测试备料 | other | not_started | medium | 0.00 | 100.00 | FS | 0 | 0 | 1 | 1606 | 2025-11-30T16:00:00.000Z | 2026-01-07T16:00:00.000Z | 0 | 39 | 3 | 1 | 2026-05-03T05:39:28.000Z | 2026-05-03T05:39:28.000Z | 341 | 张达 | 超高端全身机 | 2169 | delayed | not_started | delayed | c814e89f-a186-4550-b95f-c5dc8d24dbd5 | 28 |
| d22930d1-cbfe-40ad-8824-72548659f9f6 | 13 | 3 | 生产备料 | other | not_started | medium | 0.00 | 100.00 | FS | 0 | 0 | 1 | 1606 | 2025-11-30T16:00:00.000Z | 2026-02-08T16:00:00.000Z | 0 | 71 | 3 | 1 | 2026-05-03T05:39:28.000Z | 2026-05-03T05:39:28.000Z | 342 | 张达 | 超高端全身机 | 2169 | delayed | not_started | delayed | c814e89f-a186-4550-b95f-c5dc8d24dbd5 | 45 |
| 180e7288-63a9-4257-bb11-46633836dd30 | 13 | 2 | 合规线-归档 | other | not_started | medium | 0.00 | 100.00 | FS | 0 | 0 | 1 | 1606 | 2025-11-16T16:00:00.000Z | 2026-01-21T16:00:00.000Z | 0 | 67 | 3 | 1 | 2026-05-03T05:39:28.000Z | 2026-05-03T05:39:28.000Z | 343 | 张达 | 超高端全身机 | 2169 | delayed | not_started | delayed | 20ac2efb-95a7-4de4-a17a-5e0b5393c923 | 48 |
| 5103c47c-d91f-48dc-97da-d61fc26c4f83 | 13 | 3 | 采委会通过 | other | not_started | medium | 0.00 | 100.00 | FS | 0 | 0 | 1 | 1606 | 2025-11-16T16:00:00.000Z | 2026-01-18T16:00:00.000Z | 0 | 64 | 3 | 1 | 2026-05-03T05:39:28.000Z | 2026-05-03T05:39:28.000Z | 344 | 张达 | 超高端全身机 | 2169 | delayed | not_started | delayed | 180e7288-63a9-4257-bb11-46633836dd30 | 45 |
| 1e3a236e-c44d-4bbb-be59-8e91576032df | 13 | 3 | 选型通过 | other | not_started | medium | 0.00 | 100.00 | FS | 0 | 0 | 1 | 1606 | 2025-12-23T16:00:00.000Z | 2026-01-19T16:00:00.000Z | 0 | 28 | 3 | 1 | 2026-05-03T05:39:28.000Z | 2026-05-03T05:39:28.000Z | 345 | 张达 | 超高端全身机 | 2169 | delayed | not_started | delayed | 180e7288-63a9-4257-bb11-46633836dd30 | 19 |
| b7f30521-8a7e-4f1a-a697-cf0a6823b98b | 13 | 3 | 认证通过 | other | not_started | medium | 0.00 | 100.00 | FS | 0 | 0 | 1 | 1606 | 2025-12-29T16:00:00.000Z | 2026-01-21T16:00:00.000Z | 0 | 24 | 3 | 1 | 2026-05-03T05:39:28.000Z | 2026-05-03T05:39:28.000Z | 346 | 张达 | 超高端全身机 | 2169 | delayed | not_started | delayed | 180e7288-63a9-4257-bb11-46633836dd30 | 17 |
| fa18c679-2ee8-4876-87d0-d2262e323f30 | 13 | 1 | 无线探头新MCU固件开发 | firmware | not_started | medium | 0.00 | 100.00 | FS | 0 | 0 | 1 | 1606 | 2025-05-20T16:00:00.000Z | 2025-12-30T16:00:00.000Z | 0 | 225 | 3 | 1 | 2026-05-03T05:39:28.000Z | 2026-05-03T05:39:28.000Z | 347 | 张达 | 超高端全身机 | 2169 | delayed | not_started | delayed |  | 161 |
| 4857e0a2-d6c6-4f50-9008-1ab603e480a5 | 13 | 2 | 调试版本固件编写与发布 | other | not_started | medium | 0.00 | 100.00 | FS | 0 | 0 | 1 | 1606 | 2025-04-30T16:00:00.000Z | 2025-05-29T16:00:00.000Z | 0 | 30 | 3 | 1 | 2026-05-03T05:39:28.000Z | 2026-05-03T05:39:28.000Z | 348 | 张达 | 超高端全身机 | 2169 | delayed | not_started | delayed | fa18c679-2ee8-4876-87d0-d2262e323f30 | 22 |
| 25f61b4f-6c41-496c-ae71-d6330b67440b | 13 | 2 | 需求收集与评审 | other | not_started | medium | 0.00 | 100.00 | FS | 0 | 0 | 1 | 1606 | 2025-05-25T16:00:00.000Z | 2025-06-15T16:00:00.000Z | 0 | 22 | 3 | 1 | 2026-05-03T05:39:28.000Z | 2026-05-03T05:39:28.000Z | 349 | 张达 | 超高端全身机 | 2169 | delayed | not_started | delayed | fa18c679-2ee8-4876-87d0-d2262e323f30 | 16 |
| 72022c8e-24fa-4486-a160-0363cfa5ae1b | 13 | 2 | 固件方案设计 | other | not_started | medium | 0.00 | 100.00 | FS | 0 | 0 | 1 | 1606 | 2025-06-08T16:00:00.000Z | 2025-12-04T16:00:00.000Z | 0 | 180 | 3 | 1 | 2026-05-03T05:39:28.000Z | 2026-05-03T05:39:28.000Z | 350 | 张达 | 超高端全身机 | 2169 | delayed | not_started | delayed | fa18c679-2ee8-4876-87d0-d2262e323f30 | 130 |
| bb0d4019-c0ee-4dad-a330-675af0fb5dc2 | 13 | 3 | 编写代码 | other | not_started | medium | 0.00 | 100.00 | FS | 0 | 0 | 1 | 1606 | 2025-06-30T16:00:00.000Z | 2025-12-03T16:00:00.000Z | 0 | 157 | 3 | 1 | 2026-05-03T05:39:28.000Z | 2026-05-03T05:39:28.000Z | 351 | 张达 | 超高端全身机 | 2169 | delayed | not_started | delayed | 72022c8e-24fa-4486-a160-0363cfa5ae1b | 113 |
| 3c0775c9-a9df-4dc3-8d3b-9cebf2c8a8a1 | 13 | 3 | 正式版本初次发布 | other | not_started | medium | 0.00 | 100.00 | FS | 0 | 0 | 1 | 1606 | 2025-07-27T16:00:00.000Z | 2025-12-04T16:00:00.000Z | 0 | 131 | 3 | 1 | 2026-05-03T05:39:28.000Z | 2026-05-03T05:39:28.000Z | 352 | 张达 | 超高端全身机 | 2169 | delayed | not_started | delayed | 72022c8e-24fa-4486-a160-0363cfa5ae1b | 95 |
| b5b5b4fc-1d02-4192-ab2e-c8c670c03fac | 13 | 3 | 封闭故障与处理新增需求版本发布 | other | not_started | medium | 0.00 | 100.00 | FS | 0 | 0 | 1 | 1606 | 2025-12-03T16:00:00.000Z | 2026-01-05T16:00:00.000Z | 0 | 34 | 3 | 1 | 2026-05-03T05:39:28.000Z | 2026-05-03T05:39:28.000Z | 353 | 张达 | 超高端全身机 | 2169 | delayed | not_started | delayed | 72022c8e-24fa-4486-a160-0363cfa5ae1b | 23 |
| 946eef62-dbe0-44ab-83d2-617663572394 | 19 | 1 | 掌超硬件接口人 | contact | not_started | medium | 0.00 | 100.00 | FS | 0 | 0 | 1 | 1606 | 2025-06-30T16:00:00.000Z | 2026-12-13T16:00:00.000Z | 0 | 532 | 3 | 1 | 2026-05-03T05:39:28.000Z | 2026-05-03T05:39:28.000Z | 354 | 张达 | 掌超3.0 | 2159_3 | not_started | not_started | normal |  | 364 |
| 36a1ed70-48d9-410a-8abf-0ca518f11458 | 19 | 2 | 掌超平板 | other | not_started | medium | 0.00 | 100.00 | FS | 0 | 0 | 1 | 1606 | 2025-06-30T16:00:00.000Z | 2026-12-13T16:00:00.000Z | 0 | 532 | 3 | 1 | 2026-05-03T05:39:28.000Z | 2026-05-03T05:39:28.000Z | 355 | 张达 | 掌超3.0 | 2159_3 | not_started | not_started | normal | 946eef62-dbe0-44ab-83d2-617663572394 | 364 |
| 0636390c-ad5f-42be-b1ef-94b56c09e936 | 19 | 2 | 充电仓OEM | other | not_started | medium | 0.00 | 100.00 | FS | 0 | 0 | 1 | 1606 | 2025-06-30T16:00:00.000Z | 2026-12-13T16:00:00.000Z | 0 | 532 | 3 | 1 | 2026-05-03T05:39:28.000Z | 2026-05-03T05:39:28.000Z | 356 | 张达 | 掌超3.0 | 2159_3 | not_started | not_started | normal | 946eef62-dbe0-44ab-83d2-617663572394 | 364 |
| 6ae275e8-253b-48a2-a0e2-50ce491bc6d8 | 19 | 2 | 无线探头 | other | not_started | medium | 0.00 | 100.00 | FS | 0 | 0 | 1 | 1606 | 2025-06-30T16:00:00.000Z | 2026-12-13T16:00:00.000Z | 0 | 532 | 3 | 1 | 2026-05-03T05:39:28.000Z | 2026-05-03T05:39:28.000Z | 357 | 张达 | 掌超3.0 | 2159_3 | not_started | not_started | normal | 946eef62-dbe0-44ab-83d2-617663572394 | 364 |
| 376f6c59-88a4-43ef-8719-bd26dadb5b5a | 17 | 1 | MX20 EC固件 | firmware | not_started | medium | 0.00 | 100.00 | FS | 0 | 0 | 1 | 1608 | 2025-02-28T16:00:00.000Z | 2026-07-13T16:00:00.000Z | 0 | 501 | 3 | 1 | 2026-05-03T05:39:28.000Z | 2026-05-03T05:39:28.000Z | 358 | 叶协通 | MX20 | 2198 | not_started | not_started | normal |  | 347 |
| 9c32e27d-532d-47e6-9995-71ffa2f96bf3 | 17 | 2 | 需求阶段 | other | not_started | medium | 0.00 | 100.00 | FS | 0 | 0 | 1 | 1608 | 2025-03-20T16:00:00.000Z | 2025-03-31T16:00:00.000Z | 0 | 12 | 3 | 1 | 2026-05-03T05:39:28.000Z | 2026-05-03T05:39:28.000Z | 359 | 叶协通 | MX20 | 2198 | delayed | not_started | delayed | 376f6c59-88a4-43ef-8719-bd26dadb5b5a | 8 |
| 83290e0f-ed70-43c2-be81-a53f3c63ef49 | 17 | 3 | 需求收集 | other | not_started | medium | 0.00 | 100.00 | FS | 0 | 0 | 1 | 1608 | 2025-04-01T16:00:00.000Z | 2025-04-22T16:00:00.000Z | 0 | 22 | 3 | 1 | 2026-05-03T05:39:28.000Z | 2026-05-03T05:39:28.000Z | 360 | 叶协通 | MX20 | 2198 | delayed | not_started | delayed | 9c32e27d-532d-47e6-9995-71ffa2f96bf3 | 16 |
| 0de93a68-f118-4f69-9b4c-7e626ce38fea | 17 | 3 | 需求评审及更改 | other | not_started | medium | 0.00 | 100.00 | FS | 0 | 0 | 1 | 1608 | 2025-04-23T16:00:00.000Z | 2025-04-24T16:00:00.000Z | 0 | 2 | 3 | 1 | 2026-05-03T05:39:28.000Z | 2026-05-03T05:39:28.000Z | 361 | 叶协通 | MX20 | 2198 | delayed | not_started | delayed | 9c32e27d-532d-47e6-9995-71ffa2f96bf3 | 2 |
| 5108bb23-8da7-44ce-b0ad-24dec174c4a3 | 17 | 2 | 方案阶段 | other | not_started | medium | 0.00 | 100.00 | FS | 0 | 0 | 1 | 1608 | 2025-04-27T16:00:00.000Z | 2026-02-08T16:00:00.000Z | 0 | 288 | 3 | 1 | 2026-05-03T05:39:28.000Z | 2026-05-03T05:39:28.000Z | 362 | 叶协通 | MX20 | 2198 | delayed | not_started | delayed | 376f6c59-88a4-43ef-8719-bd26dadb5b5a | 200 |
| 4475ed41-9c6f-492f-b76e-9190a81bed00 | 17 | 3 | 嵌入式概要设计、嵌入式详细设计 | other | not_started | medium | 0.00 | 100.00 | FS | 0 | 0 | 1 | 1608 | 2025-04-27T16:00:00.000Z | 2026-02-15T16:00:00.000Z | 0 | 295 | 3 | 1 | 2026-05-03T05:39:28.000Z | 2026-05-03T05:39:28.000Z | 363 | 叶协通 | MX20 | 2198 | delayed | not_started | delayed | 5108bb23-8da7-44ce-b0ad-24dec174c4a3 | 205 |
| 5f830098-8ce2-49cf-ae1b-4fe9e0414d6e | 17 | 3 | 方案评审及更改 | other | not_started | medium | 0.00 | 100.00 | FS | 0 | 0 | 1 | 1608 | 2026-02-08T16:00:00.000Z | 2026-02-19T16:00:00.000Z | 0 | 12 | 3 | 1 | 2026-05-03T05:39:28.000Z | 2026-05-03T05:39:28.000Z | 364 | 叶协通 | MX20 | 2198 | delayed | not_started | delayed | 5108bb23-8da7-44ce-b0ad-24dec174c4a3 | 10 |
| 3b66ad0c-c683-4b0b-9a49-5ac2f30f56da | 17 | 2 | 固件编辑和调试阶段 | other | not_started | medium | 0.00 | 100.00 | FS | 0 | 0 | 1 | 1608 | 2025-04-23T16:00:00.000Z | 2026-02-15T16:00:00.000Z | 0 | 299 | 3 | 1 | 2026-05-03T05:39:28.000Z | 2026-05-03T05:39:28.000Z | 365 | 叶协通 | MX20 | 2198 | delayed | not_started | delayed | 376f6c59-88a4-43ef-8719-bd26dadb5b5a | 207 |
| 75199985-16b2-45ee-bb4b-39654755bd81 | 17 | 3 | 固件编辑 | other | not_started | medium | 0.00 | 100.00 | FS | 0 | 0 | 1 | 1608 | 2026-02-08T16:00:00.000Z | 2026-03-05T16:00:00.000Z | 0 | 26 | 3 | 1 | 2026-05-03T05:39:28.000Z | 2026-05-03T05:39:28.000Z | 366 | 叶协通 | MX20 | 2198 | delayed | not_started | delayed | 3b66ad0c-c683-4b0b-9a49-5ac2f30f56da | 20 |
| 255dff51-5450-4298-a5c6-abfd446c3df3 | 17 | 3 | 固件调试 | other | not_started | medium | 0.00 | 100.00 | FS | 0 | 0 | 1 | 1608 | 2026-02-01T16:00:00.000Z | 2026-03-03T16:00:00.000Z | 0 | 31 | 3 | 1 | 2026-05-03T05:39:28.000Z | 2026-05-03T05:39:28.000Z | 367 | 叶协通 | MX20 | 2198 | delayed | not_started | delayed | 3b66ad0c-c683-4b0b-9a49-5ac2f30f56da | 22 |
| 98d9b49f-c2e6-4cdf-994f-c12f9f30081b | 17 | 2 | 版本发布(按照版本发布时间填写) | other | not_started | medium | 0.00 | 100.00 | FS | 0 | 0 | 1 | 1608 | 2026-02-08T16:00:00.000Z | 2026-05-20T16:00:00.000Z | 0 | 102 | 3 | 1 | 2026-05-03T05:39:28.000Z | 2026-05-03T05:39:28.000Z | 368 | 叶协通 | MX20 | 2198 | not_started | not_started | normal | 376f6c59-88a4-43ef-8719-bd26dadb5b5a | 70 |
| ef6dac8f-cb63-4911-8f74-d76d57dbc285 | 17 | 3 | 可诊断性设计 | other | not_started | medium | 0.00 | 100.00 | FS | 0 | 0 | 1 | 1608 | 2026-03-03T16:00:00.000Z | 2026-04-28T16:00:00.000Z | 0 | 57 | 3 | 1 | 2026-05-03T05:39:28.000Z | 2026-05-03T05:39:28.000Z | 369 | 叶协通 | MX20 | 2198 | delayed | not_started | delayed | 98d9b49f-c2e6-4cdf-994f-c12f9f30081b | 40 |
| 9d78bb12-ec28-4fea-9262-560d371288ac | 17 | 3 | CodeReview | other | not_started | medium | 0.00 | 100.00 | FS | 0 | 0 | 1 | 1608 | 2026-05-17T16:00:00.000Z | 2026-06-14T16:00:00.000Z | 0 | 29 | 3 | 1 | 2026-05-03T05:39:28.000Z | 2026-05-03T05:39:28.000Z | 370 | 叶协通 | MX20 | 2198 | not_started | not_started | normal | 98d9b49f-c2e6-4cdf-994f-c12f9f30081b | 20 |
| 401f9e1f-e97f-4bd9-9a63-0bc8e758ad9a | 17 | 3 | 临时版本发布 | other | not_started | medium | 0.00 | 100.00 | FS | 0 | 0 | 1 | 1608 | 2025-04-01T16:00:00.000Z | 2025-04-01T16:00:00.000Z | 0 | 1 | 3 | 1 | 2026-05-03T05:39:28.000Z | 2026-05-03T05:39:28.000Z | 371 | 叶协通 | MX20 | 2198 | delayed | not_started | delayed | 98d9b49f-c2e6-4cdf-994f-c12f9f30081b | 1 |
| a55c4fd4-38e9-41ae-9e9f-53bb99d7cf11 | 17 | 3 | 正式版本发布(第一版) | other | not_started | medium | 0.00 | 100.00 | FS | 0 | 0 | 1 | 1608 | 2026-02-08T16:00:00.000Z | 2026-02-10T16:00:00.000Z | 0 | 3 | 3 | 1 | 2026-05-03T05:39:28.000Z | 2026-05-03T05:39:28.000Z | 372 | 叶协通 | MX20 | 2198 | delayed | not_started | delayed | 98d9b49f-c2e6-4cdf-994f-c12f9f30081b | 3 |
| a2aba4c9-6d16-4498-9d59-956e103d1de4 | 17 | 3 | 正式版本发布(第二版) | other | not_started | medium | 0.00 | 100.00 | FS | 0 | 0 | 1 | 1608 | 2026-02-11T16:00:00.000Z | 2026-05-11T16:00:00.000Z | 0 | 90 | 3 | 1 | 2026-05-03T05:39:28.000Z | 2026-05-03T05:39:28.000Z | 373 | 叶协通 | MX20 | 2198 | not_started | not_started | normal | 98d9b49f-c2e6-4cdf-994f-c12f9f30081b | 60 |
| d36fef3c-3c94-4cdb-b0e7-b8f1c24573eb | 17 | 1 | MX20 SM 固件 | firmware | not_started | medium | 0.00 | 100.00 | FS | 0 | 0 | 1 | 1608 | 2026-02-11T16:00:00.000Z | 2026-07-06T16:00:00.000Z | 0 | 146 | 3 | 1 | 2026-05-03T05:39:28.000Z | 2026-05-03T05:39:28.000Z | 374 | 叶协通 | MX20 | 2198 | not_started | not_started | normal |  | 99 |
| 05ebc562-a1bd-4feb-bf62-a7f48d94d968 | 17 | 2 | 需求阶段 | other | not_started | medium | 0.00 | 100.00 | FS | 0 | 0 | 1 | 1608 | 2025-02-28T16:00:00.000Z | 2025-03-10T16:00:00.000Z | 0 | 11 | 3 | 1 | 2026-05-03T05:39:28.000Z | 2026-05-03T05:39:28.000Z | 375 | 叶协通 | MX20 | 2198 | delayed | not_started | delayed | d36fef3c-3c94-4cdb-b0e7-b8f1c24573eb | 8 |
| be6cccf4-b4d6-4379-b3f4-fe15c541da6e | 17 | 3 | 需求收集 | other | not_started | medium | 0.00 | 100.00 | FS | 0 | 0 | 1 | 1608 | 2025-03-12T16:00:00.000Z | 2025-04-02T16:00:00.000Z | 0 | 22 | 3 | 1 | 2026-05-03T05:39:28.000Z | 2026-05-03T05:39:28.000Z | 376 | 叶协通 | MX20 | 2198 | delayed | not_started | delayed | 05ebc562-a1bd-4feb-bf62-a7f48d94d968 | 16 |
| 044109d7-297e-4b35-91d4-9a768baf4ec7 | 17 | 3 | 需求评审及更改 | other | not_started | medium | 0.00 | 100.00 | FS | 0 | 0 | 1 | 1608 | 2025-04-03T16:00:00.000Z | 2025-04-06T16:00:00.000Z | 0 | 4 | 3 | 1 | 2026-05-03T05:39:28.000Z | 2026-05-03T05:39:28.000Z | 377 | 叶协通 | MX20 | 2198 | delayed | not_started | delayed | 05ebc562-a1bd-4feb-bf62-a7f48d94d968 | 2 |
| 432621db-a2b9-4155-816b-4ee581bb74bf | 17 | 2 | 方案阶段 | other | not_started | medium | 0.00 | 100.00 | FS | 0 | 0 | 1 | 1608 | 2025-04-07T16:00:00.000Z | 2026-02-09T16:00:00.000Z | 0 | 309 | 3 | 1 | 2026-05-03T05:39:28.000Z | 2026-05-03T05:39:28.000Z | 378 | 叶协通 | MX20 | 2198 | delayed | not_started | delayed | d36fef3c-3c94-4cdb-b0e7-b8f1c24573eb | 215 |
| 8b75f854-9300-4b11-963d-e880c18a7dc5 | 17 | 3 | 嵌入式概要设计、嵌入式详细设计 | other | not_started | medium | 0.00 | 100.00 | FS | 0 | 0 | 1 | 1608 | 2025-04-07T16:00:00.000Z | 2026-02-16T16:00:00.000Z | 0 | 316 | 3 | 1 | 2026-05-03T05:39:28.000Z | 2026-05-03T05:39:28.000Z | 379 | 叶协通 | MX20 | 2198 | delayed | not_started | delayed | 432621db-a2b9-4155-816b-4ee581bb74bf | 220 |
| dd06caea-b9ed-4572-be79-5daaacd8cc9f | 17 | 3 | 方案评审及更改 | other | not_started | medium | 0.00 | 100.00 | FS | 0 | 0 | 1 | 1608 | 2026-02-09T16:00:00.000Z | 2026-02-22T16:00:00.000Z | 0 | 14 | 3 | 1 | 2026-05-03T05:39:28.000Z | 2026-05-03T05:39:28.000Z | 380 | 叶协通 | MX20 | 2198 | delayed | not_started | delayed | 432621db-a2b9-4155-816b-4ee581bb74bf | 10 |
| a8ab1eeb-a675-4638-8ed3-88d659c0884f | 17 | 2 | 固件编辑和调试阶段 | other | not_started | medium | 0.00 | 100.00 | FS | 0 | 0 | 1 | 1608 | 2025-04-03T16:00:00.000Z | 2026-02-12T16:00:00.000Z | 0 | 316 | 3 | 1 | 2026-05-03T05:39:28.000Z | 2026-05-03T05:39:28.000Z | 381 | 叶协通 | MX20 | 2198 | delayed | not_started | delayed | d36fef3c-3c94-4cdb-b0e7-b8f1c24573eb | 220 |
| 19b99f44-9867-4bb5-9f17-04873d3a9d7e | 17 | 3 | 固件编辑 | other | not_started | medium | 0.00 | 100.00 | FS | 0 | 0 | 1 | 1608 | 2026-02-23T16:00:00.000Z | 2026-03-24T16:00:00.000Z | 0 | 30 | 3 | 1 | 2026-05-03T05:39:28.000Z | 2026-05-03T05:39:28.000Z | 382 | 叶协通 | MX20 | 2198 | delayed | not_started | delayed | a8ab1eeb-a675-4638-8ed3-88d659c0884f | 22 |
| fd71c3d5-54a3-4757-9ba1-2ad63281a250 | 17 | 3 | 固件调试 | other | not_started | medium | 0.00 | 100.00 | FS | 0 | 0 | 1 | 1608 | 2026-03-25T16:00:00.000Z | 2026-04-26T16:00:00.000Z | 0 | 33 | 3 | 1 | 2026-05-03T05:39:28.000Z | 2026-05-03T05:39:28.000Z | 383 | 叶协通 | MX20 | 2198 | delayed | not_started | delayed | a8ab1eeb-a675-4638-8ed3-88d659c0884f | 22 |
| 917e740e-44db-4372-9619-79dcdd1469ad | 17 | 2 | 版本发布(按照版本发布时间填写) | other | not_started | medium | 0.00 | 100.00 | FS | 0 | 0 | 1 | 1608 | 2026-02-05T16:00:00.000Z | 2026-04-23T16:00:00.000Z | 0 | 78 | 3 | 1 | 2026-05-03T05:39:28.000Z | 2026-05-03T05:39:28.000Z | 384 | 叶协通 | MX20 | 2198 | delayed | not_started | delayed | d36fef3c-3c94-4cdb-b0e7-b8f1c24573eb | 55 |
| fc9db9c0-ace8-4cd4-b10c-22c6e0e32516 | 17 | 3 | 可诊断性设计 | other | not_started | medium | 0.00 | 100.00 | FS | 0 | 0 | 1 | 1608 | 2026-04-26T16:00:00.000Z | 2026-05-10T16:00:00.000Z | 0 | 15 | 3 | 1 | 2026-05-03T05:39:28.000Z | 2026-05-03T05:39:28.000Z | 385 | 叶协通 | MX20 | 2198 | not_started | not_started | normal | 917e740e-44db-4372-9619-79dcdd1469ad | 8 |
| 346ebffa-7410-4d78-b705-ad336057c307 | 17 | 3 | CodeReview | other | not_started | medium | 0.00 | 100.00 | FS | 0 | 0 | 1 | 1608 | 2026-04-23T16:00:00.000Z | 2026-07-21T16:00:00.000Z | 0 | 90 | 3 | 1 | 2026-05-03T05:39:28.000Z | 2026-05-03T05:39:28.000Z | 386 | 叶协通 | MX20 | 2198 | not_started | not_started | normal | 917e740e-44db-4372-9619-79dcdd1469ad | 60 |
| 9cdbfb3a-2e6b-4e78-b804-5d19bb543fd1 | 17 | 3 | 临时版本发布(第一版) | other | not_started | medium | 0.00 | 100.00 | FS | 0 | 0 | 1 | 1608 | 2025-03-12T16:00:00.000Z | 2025-03-12T16:00:00.000Z | 0 | 1 | 3 | 1 | 2026-05-03T05:39:28.000Z | 2026-05-03T05:39:28.000Z | 387 | 叶协通 | MX20 | 2198 | delayed | not_started | delayed | 917e740e-44db-4372-9619-79dcdd1469ad | 1 |
| 927e36ea-f80c-46db-ac96-945b52674d06 | 17 | 3 | 正式版本发布(第一版) | other | not_started | medium | 0.00 | 100.00 | FS | 0 | 0 | 1 | 1608 | 2026-03-25T16:00:00.000Z | 2026-04-08T16:00:00.000Z | 0 | 15 | 3 | 1 | 2026-05-03T05:39:28.000Z | 2026-05-03T05:39:28.000Z | 388 | 叶协通 | MX20 | 2198 | delayed | not_started | delayed | 917e740e-44db-4372-9619-79dcdd1469ad | 10 |
| db036e06-2eab-45ab-9a1e-0daf41641551 | 17 | 3 | 正式版本发布(第二版) | other | not_started | medium | 0.00 | 100.00 | FS | 0 | 0 | 1 | 1608 | 2026-04-08T16:00:00.000Z | 2026-04-21T16:00:00.000Z | 0 | 14 | 3 | 1 | 2026-05-03T05:39:28.000Z | 2026-05-03T05:39:28.000Z | 389 | 叶协通 | MX20 | 2198 | delayed | not_started | delayed | 917e740e-44db-4372-9619-79dcdd1469ad | 10 |
| e18a8aa7-2af4-4640-bb46-15fbb8694a5d | 17 | 1 | 主板ADC采样固件 | firmware | not_started | medium | 0.00 | 100.00 | FS | 0 | 0 | 1 | 1608 | 2026-05-03T16:00:00.000Z | 2026-10-08T16:00:00.000Z | 0 | 159 | 3 | 1 | 2026-05-03T05:39:28.000Z | 2026-05-03T05:39:28.000Z | 390 | 叶协通 | MX20 | 2198 | not_started | not_started | normal |  | 108 |
| ffdcddaf-84ef-4202-ae6e-aeff521a985f | 17 | 2 | 需求阶段 | other | not_started | medium | 0.00 | 100.00 | FS | 0 | 0 | 1 | 1608 | 2026-05-05T16:00:00.000Z | 2026-06-02T16:00:00.000Z | 0 | 29 | 3 | 1 | 2026-05-03T05:39:28.000Z | 2026-05-03T05:39:28.000Z | 391 | 叶协通 | MX20 | 2198 | not_started | not_started | normal | e18a8aa7-2af4-4640-bb46-15fbb8694a5d | 20 |
| 2d3d49e5-58b9-48b8-8a8c-b2e041175281 | 17 | 3 | 需求收集 | other | not_started | medium | 0.00 | 100.00 | FS | 0 | 0 | 1 | 1608 | 2026-06-02T16:00:00.000Z | 2026-06-03T16:00:00.000Z | 0 | 2 | 3 | 1 | 2026-05-03T05:39:28.000Z | 2026-05-03T05:39:28.000Z | 392 | 叶协通 | MX20 | 2198 | not_started | not_started | normal | ffdcddaf-84ef-4202-ae6e-aeff521a985f | 2 |
| 92126e7b-0556-4b00-828b-9dcafb749ab8 | 17 | 3 | 需求评审及更改 | other | not_started | medium | 0.00 | 100.00 | FS | 0 | 0 | 1 | 1608 | 2026-06-04T16:00:00.000Z | 2026-06-07T16:00:00.000Z | 0 | 4 | 3 | 1 | 2026-05-03T05:39:28.000Z | 2026-05-03T05:39:28.000Z | 393 | 叶协通 | MX20 | 2198 | not_started | not_started | normal | ffdcddaf-84ef-4202-ae6e-aeff521a985f | 2 |
| ebe37c6d-692e-46d8-b3ef-deca8fc3e10c | 17 | 2 | 方案阶段 | other | not_started | medium | 0.00 | 100.00 | FS | 0 | 0 | 1 | 1608 | 2026-05-03T16:00:00.000Z | 2026-06-15T16:00:00.000Z | 0 | 44 | 3 | 1 | 2026-05-03T05:39:28.000Z | 2026-05-03T05:39:28.000Z | 394 | 叶协通 | MX20 | 2198 | not_started | not_started | normal | e18a8aa7-2af4-4640-bb46-15fbb8694a5d | 30 |
| d834fe04-7436-4a4a-a533-4249c6181629 | 17 | 3 | 方案收集 | other | not_started | medium | 0.00 | 100.00 | FS | 0 | 0 | 1 | 1608 | 2026-06-14T16:00:00.000Z | 2026-06-22T16:00:00.000Z | 0 | 9 | 3 | 1 | 2026-05-03T05:39:28.000Z | 2026-05-03T05:39:28.000Z | 395 | 叶协通 | MX20 | 2198 | not_started | not_started | normal | ebe37c6d-692e-46d8-b3ef-deca8fc3e10c | 7 |
| fe8bc27b-6c64-4afe-a33f-21d923050b50 | 17 | 3 | 方案评审及更改 | other | not_started | medium | 0.00 | 100.00 | FS | 0 | 0 | 1 | 1608 | 2026-06-23T16:00:00.000Z | 2026-06-29T16:00:00.000Z | 0 | 7 | 3 | 1 | 2026-05-03T05:39:28.000Z | 2026-05-03T05:39:28.000Z | 396 | 叶协通 | MX20 | 2198 | not_started | not_started | normal | ebe37c6d-692e-46d8-b3ef-deca8fc3e10c | 5 |
| 9379000b-b08a-40b5-a3a7-593a2c08037e | 17 | 2 | 固件编辑和调试阶段 | other | not_started | medium | 0.00 | 100.00 | FS | 0 | 0 | 1 | 1608 | 2026-05-03T16:00:00.000Z | 2026-06-08T16:00:00.000Z | 0 | 37 | 3 | 1 | 2026-05-03T05:39:28.000Z | 2026-05-03T05:39:28.000Z | 397 | 叶协通 | MX20 | 2198 | not_started | not_started | normal | e18a8aa7-2af4-4640-bb46-15fbb8694a5d | 25 |
| c0258216-ed1f-4a22-8ac3-78d85f2a939a | 17 | 3 | 固件编辑 | other | not_started | medium | 0.00 | 100.00 | FS | 0 | 0 | 1 | 1608 | 2026-05-03T16:00:00.000Z | 2026-05-24T16:00:00.000Z | 0 | 22 | 3 | 1 | 2026-05-03T05:39:28.000Z | 2026-05-03T05:39:28.000Z | 398 | 叶协通 | MX20 | 2198 | not_started | not_started | normal | 9379000b-b08a-40b5-a3a7-593a2c08037e | 15 |
| b1cc1acd-b0c8-4f10-9511-9690190a92a1 | 17 | 3 | 固件调试 | other | not_started | medium | 0.00 | 100.00 | FS | 0 | 0 | 1 | 1608 | 2026-06-07T16:00:00.000Z | 2026-06-11T16:00:00.000Z | 0 | 5 | 3 | 1 | 2026-05-03T05:39:28.000Z | 2026-05-03T05:39:28.000Z | 399 | 叶协通 | MX20 | 2198 | not_started | not_started | normal | 9379000b-b08a-40b5-a3a7-593a2c08037e | 5 |
| 60c6f454-9717-44ec-b88a-9474f97473cd | 17 | 2 | 版本发布(按照版本发布时间填写) | other | not_started | medium | 0.00 | 100.00 | FS | 0 | 0 | 1 | 1608 | 2026-06-14T16:00:00.000Z | 2026-07-13T16:00:00.000Z | 0 | 30 | 3 | 1 | 2026-05-03T05:39:29.000Z | 2026-05-03T05:39:29.000Z | 400 | 叶协通 | MX20 | 2198 | not_started | not_started | normal | e18a8aa7-2af4-4640-bb46-15fbb8694a5d | 22 |
| 29688f79-3f00-4d14-8e2f-cb03bdeac5ec | 17 | 3 | CodeReview | other | not_started | medium | 0.00 | 100.00 | FS | 0 | 0 | 1 | 1608 | 2026-07-14T16:00:00.000Z | 2026-10-12T16:00:00.000Z | 0 | 91 | 3 | 1 | 2026-05-03T05:39:29.000Z | 2026-05-03T05:39:29.000Z | 401 | 叶协通 | MX20 | 2198 | not_started | not_started | normal | 60c6f454-9717-44ec-b88a-9474f97473cd | 60 |
| 3ecd6040-708a-4bb9-ad2c-ecb5da7dc3cb | 17 | 3 | 临时版本发布(第一版) | other | not_started | medium | 0.00 | 100.00 | FS | 0 | 0 | 1 | 1608 | 2026-06-14T16:00:00.000Z | 2026-06-15T16:00:00.000Z | 0 | 2 | 3 | 1 | 2026-05-03T05:39:29.000Z | 2026-05-03T05:39:29.000Z | 402 | 叶协通 | MX20 | 2198 | not_started | not_started | normal | 60c6f454-9717-44ec-b88a-9474f97473cd | 2 |
| 4a8c6eec-8acf-48dd-aca6-fc931a8a4b41 | 17 | 3 | 正式版本发布(第一版) | other | not_started | medium | 0.00 | 100.00 | FS | 0 | 0 | 1 | 1608 | 2026-06-07T16:00:00.000Z | 2026-07-16T16:00:00.000Z | 0 | 40 | 3 | 1 | 2026-05-03T05:39:29.000Z | 2026-05-03T05:39:29.000Z | 403 | 叶协通 | MX20 | 2198 | not_started | not_started | normal | 60c6f454-9717-44ec-b88a-9474f97473cd | 30 |
| de88d3db-c58b-46f9-81cb-cdcb17bada33 | 17 | 3 | 正式版本发布(第二版) | other | not_started | medium | 0.00 | 100.00 | FS | 0 | 0 | 1 | 1608 | 2026-07-19T16:00:00.000Z | 2026-07-30T16:00:00.000Z | 0 | 12 | 3 | 1 | 2026-05-03T05:39:29.000Z | 2026-05-03T05:39:29.000Z | 404 | 叶协通 | MX20 | 2198 | not_started | not_started | normal | 60c6f454-9717-44ec-b88a-9474f97473cd | 10 |
| 7c07b174-dab7-466f-ab17-f6b223a71fad | 25 | 1 | API-TEST-COOKIE | other | not_started | medium | 0.00 | 100.00 | FS | 0 | 0 | 1 |  | 2026-05-05T16:00:00.000Z | 2026-05-11T16:00:00.000Z | 0 | 7 | 3 | 2 | 2026-05-06T03:26:59.000Z | 2026-05-06T03:34:06.000Z | 400 |  | 测试项目-任务测试 | TEST-PROJ-001 | not_started | not_started | normal |  | 5 |
| 9bc7b360-a7f0-47d3-92fb-3634786799fe | 17 | 1 | 控制面板ADC采样固件 | firmware | not_started | medium | 0.00 | 100.00 | FS | 0 | 0 | 1 | 1608 | 2026-05-03T16:00:00.000Z | 2026-10-08T16:00:00.000Z | 0 | 159 | 3 | 1 | 2026-05-03T05:39:29.000Z | 2026-05-03T05:39:29.000Z | 405 | 叶协通 | MX20 | 2198 | not_started | not_started | normal |  | 108 |
| 1f9d9ae8-ad83-4c67-a0c2-f9f4251d194a | 17 | 2 | 需求阶段 | other | not_started | medium | 0.00 | 100.00 | FS | 0 | 0 | 1 | 1608 | 2026-05-05T16:00:00.000Z | 2026-06-02T16:00:00.000Z | 0 | 29 | 3 | 1 | 2026-05-03T05:39:29.000Z | 2026-05-03T05:39:29.000Z | 406 | 叶协通 | MX20 | 2198 | not_started | not_started | normal | 9bc7b360-a7f0-47d3-92fb-3634786799fe | 20 |
| 1141ba64-0d14-4445-9856-ad1cd3947883 | 17 | 3 | 需求收集 | other | not_started | medium | 0.00 | 100.00 | FS | 0 | 0 | 1 | 1608 | 2026-06-02T16:00:00.000Z | 2026-06-03T16:00:00.000Z | 0 | 2 | 3 | 1 | 2026-05-03T05:39:29.000Z | 2026-05-03T05:39:29.000Z | 407 | 叶协通 | MX20 | 2198 | not_started | not_started | normal | 1f9d9ae8-ad83-4c67-a0c2-f9f4251d194a | 2 |
| e9867b33-a169-4ffd-9309-4ff216e4a963 | 17 | 3 | 需求评审及更改 | other | not_started | medium | 0.00 | 100.00 | FS | 0 | 0 | 1 | 1608 | 2026-06-04T16:00:00.000Z | 2026-06-07T16:00:00.000Z | 0 | 4 | 3 | 1 | 2026-05-03T05:39:29.000Z | 2026-05-03T05:39:29.000Z | 408 | 叶协通 | MX20 | 2198 | not_started | not_started | normal | 1f9d9ae8-ad83-4c67-a0c2-f9f4251d194a | 2 |
| 3cba0b63-f064-4714-894c-0c26c4ad3d1d | 17 | 2 | 方案阶段 | other | not_started | medium | 0.00 | 100.00 | FS | 0 | 0 | 1 | 1608 | 2026-05-03T16:00:00.000Z | 2026-06-15T16:00:00.000Z | 0 | 44 | 3 | 1 | 2026-05-03T05:39:29.000Z | 2026-05-03T05:39:29.000Z | 409 | 叶协通 | MX20 | 2198 | not_started | not_started | normal | 9bc7b360-a7f0-47d3-92fb-3634786799fe | 30 |

| id | project_id | wbs_level | description | task_type | status | priority | progress | full_time_ratio | dependency_type | delay_count | plan_change_count | progress_record_count | assignee_id | start_date | end_date | is_six_day_week | planned_duration | warning_days | version | created_at | updated_at | sort_order | assignee_name | project_name | project_code | computed_status | computed_execution_status | computed_time_status | parent_id | duration |
| --- | --- | --- | --- | --- | --- | --- | --- | --- | --- | --- | --- | --- | --- | --- | --- | --- | --- | --- | --- | --- | --- | --- | --- | --- | --- | --- | --- | --- | --- | --- |
| eb1a32dc-a545-448a-a0a9-16b9343276ab | 17 | 3 | 方案收集 | other | not_started | medium | 0.00 | 100.00 | FS | 0 | 0 | 1 | 1608 | 2026-06-14T16:00:00.000Z | 2026-06-22T16:00:00.000Z | 0 | 9 | 3 | 1 | 2026-05-03T05:39:29.000Z | 2026-05-03T05:39:29.000Z | 410 | 叶协通 | MX20 | 2198 | not_started | not_started | normal | 3cba0b63-f064-4714-894c-0c26c4ad3d1d | 7 |
| e9255635-e2b1-426d-be52-1615a894aec7 | 17 | 3 | 方案评审及更改 | other | not_started | medium | 0.00 | 100.00 | FS | 0 | 0 | 1 | 1608 | 2026-06-23T16:00:00.000Z | 2026-06-29T16:00:00.000Z | 0 | 7 | 3 | 1 | 2026-05-03T05:39:29.000Z | 2026-05-03T05:39:29.000Z | 411 | 叶协通 | MX20 | 2198 | not_started | not_started | normal | 3cba0b63-f064-4714-894c-0c26c4ad3d1d | 5 |
| b017b8c6-3fe9-4681-8dc9-ea24b3186969 | 17 | 2 | 固件编辑和调试阶段 | other | not_started | medium | 0.00 | 100.00 | FS | 0 | 0 | 1 | 1608 | 2026-05-03T16:00:00.000Z | 2026-06-08T16:00:00.000Z | 0 | 37 | 3 | 1 | 2026-05-03T05:39:29.000Z | 2026-05-03T05:39:29.000Z | 412 | 叶协通 | MX20 | 2198 | not_started | not_started | normal | 9bc7b360-a7f0-47d3-92fb-3634786799fe | 25 |
| c659fdb2-ff14-46da-b59e-4c7f131c6a68 | 17 | 3 | 固件编辑 | other | not_started | medium | 0.00 | 100.00 | FS | 0 | 0 | 1 | 1608 | 2026-05-03T16:00:00.000Z | 2026-05-24T16:00:00.000Z | 0 | 22 | 3 | 1 | 2026-05-03T05:39:29.000Z | 2026-05-03T05:39:29.000Z | 413 | 叶协通 | MX20 | 2198 | not_started | not_started | normal | b017b8c6-3fe9-4681-8dc9-ea24b3186969 | 15 |
| 4278798a-159d-438c-98cf-9902b86a64ef | 17 | 3 | 固件调试 | other | not_started | medium | 0.00 | 100.00 | FS | 0 | 0 | 1 | 1608 | 2026-06-07T16:00:00.000Z | 2026-06-11T16:00:00.000Z | 0 | 5 | 3 | 1 | 2026-05-03T05:39:29.000Z | 2026-05-03T05:39:29.000Z | 414 | 叶协通 | MX20 | 2198 | not_started | not_started | normal | b017b8c6-3fe9-4681-8dc9-ea24b3186969 | 5 |
| 9562c946-4c1a-4cac-a7c0-e07c93229c7a | 17 | 2 | 版本发布(按照版本发布时间填写) | other | not_started | medium | 0.00 | 100.00 | FS | 0 | 0 | 1 | 1608 | 2026-06-14T16:00:00.000Z | 2026-07-13T16:00:00.000Z | 0 | 30 | 3 | 1 | 2026-05-03T05:39:29.000Z | 2026-05-03T05:39:29.000Z | 415 | 叶协通 | MX20 | 2198 | not_started | not_started | normal | 9bc7b360-a7f0-47d3-92fb-3634786799fe | 22 |
| 23e349ab-9073-4f84-aa3d-8e7e601010eb | 17 | 3 | CodeReview | other | not_started | medium | 0.00 | 100.00 | FS | 0 | 0 | 1 | 1608 | 2026-07-14T16:00:00.000Z | 2026-10-12T16:00:00.000Z | 0 | 91 | 3 | 1 | 2026-05-03T05:39:29.000Z | 2026-05-03T05:39:29.000Z | 416 | 叶协通 | MX20 | 2198 | not_started | not_started | normal | 9562c946-4c1a-4cac-a7c0-e07c93229c7a | 60 |
| 1f3d1d08-0618-4f5e-a452-36871ff83ae6 | 17 | 3 | 临时版本发布(第一版) | other | not_started | medium | 0.00 | 100.00 | FS | 0 | 0 | 1 | 1608 | 2026-06-14T16:00:00.000Z | 2026-06-15T16:00:00.000Z | 0 | 2 | 3 | 1 | 2026-05-03T05:39:29.000Z | 2026-05-03T05:39:29.000Z | 417 | 叶协通 | MX20 | 2198 | not_started | not_started | normal | 9562c946-4c1a-4cac-a7c0-e07c93229c7a | 2 |
| e95b1804-1316-409a-84a8-055f8ca5fa1c | 17 | 3 | 正式版本发布(第一版) | other | not_started | medium | 0.00 | 100.00 | FS | 0 | 0 | 1 | 1608 | 2026-06-07T16:00:00.000Z | 2026-07-16T16:00:00.000Z | 0 | 40 | 3 | 1 | 2026-05-03T05:39:29.000Z | 2026-05-03T05:39:29.000Z | 418 | 叶协通 | MX20 | 2198 | not_started | not_started | normal | 9562c946-4c1a-4cac-a7c0-e07c93229c7a | 30 |
| 8cfba69c-1204-414e-bb7f-54b77e13f42e | 17 | 3 | 正式版本发布(第二版) | other | not_started | medium | 0.00 | 100.00 | FS | 0 | 0 | 1 | 1608 | 2026-07-19T16:00:00.000Z | 2026-07-30T16:00:00.000Z | 0 | 12 | 3 | 1 | 2026-05-03T05:39:29.000Z | 2026-05-03T05:39:29.000Z | 419 | 叶协通 | MX20 | 2198 | not_started | not_started | normal | 9562c946-4c1a-4cac-a7c0-e07c93229c7a | 10 |
| 9f0e3933-300e-4467-a881-0c770f9b0e4c | 17 | 1 | 2198 控制面板固件 | firmware | not_started | medium | 0.00 | 100.00 | FS | 0 | 0 | 1 | 1608 | 2026-02-05T16:00:00.000Z | 2026-06-17T16:00:00.000Z | 0 | 133 | 3 | 1 | 2026-05-03T05:39:29.000Z | 2026-05-03T05:39:29.000Z | 420 | 叶协通 | MX20 | 2198 | not_started | not_started | normal |  | 90 |
| 24fac5a6-de1f-42d3-b3b2-29aa6a685d1a | 17 | 2 | 变更需求收集和评审 | other | not_started | medium | 0.00 | 100.00 | FS | 0 | 0 | 1 | 1608 | 2026-02-08T16:00:00.000Z | 2026-04-12T16:00:00.000Z | 0 | 64 | 3 | 1 | 2026-05-03T05:39:29.000Z | 2026-05-03T05:39:29.000Z | 421 | 叶协通 | MX20 | 2198 | delayed | not_started | delayed | 9f0e3933-300e-4467-a881-0c770f9b0e4c | 45 |
| 607cffe6-1dae-4f7a-adf9-d8405c4d3411 | 17 | 3 | 变更方案收集和评审 | other | not_started | medium | 0.00 | 100.00 | FS | 0 | 0 | 1 | 1608 | 2026-04-12T16:00:00.000Z | 2026-05-21T16:00:00.000Z | 0 | 40 | 3 | 1 | 2026-05-03T05:39:29.000Z | 2026-05-03T05:39:29.000Z | 422 | 叶协通 | MX20 | 2198 | not_started | not_started | normal | 24fac5a6-de1f-42d3-b3b2-29aa6a685d1a | 27 |
| 24aa8a2c-41f0-4035-a134-4be96254d179 | 17 | 2 | 版本发布(按照版本发布时间填写) | other | not_started | medium | 0.00 | 100.00 | FS | 0 | 0 | 1 | 1608 | 2026-05-19T16:00:00.000Z | 2026-06-09T16:00:00.000Z | 0 | 22 | 3 | 1 | 2026-05-03T05:39:29.000Z | 2026-05-03T05:39:29.000Z | 423 | 叶协通 | MX20 | 2198 | not_started | not_started | normal | 9f0e3933-300e-4467-a881-0c770f9b0e4c | 15 |
| 000bc91c-0700-4087-9311-565dc55f5f5e | 17 | 2 | 联调版本发布 | other | not_started | medium | 0.00 | 100.00 | FS | 0 | 0 | 1 | 1608 | 2026-02-09T16:00:00.000Z | 2026-04-20T16:00:00.000Z | 0 | 71 | 3 | 1 | 2026-05-03T05:39:29.000Z | 2026-05-03T05:39:29.000Z | 424 | 叶协通 | MX20 | 2198 | delayed | not_started | delayed | 9f0e3933-300e-4467-a881-0c770f9b0e4c | 50 |
| 7fb4e9e3-7753-4b42-91b6-9932d05cb92a | 17 | 2 | 临时版本发布 | other | not_started | medium | 0.00 | 100.00 | FS | 0 | 0 | 1 | 1608 | 2026-05-19T16:00:00.000Z | 2026-05-24T16:00:00.000Z | 0 | 6 | 3 | 1 | 2026-05-03T05:39:29.000Z | 2026-05-03T05:39:29.000Z | 425 | 叶协通 | MX20 | 2198 | not_started | not_started | normal | 9f0e3933-300e-4467-a881-0c770f9b0e4c | 4 |
| 56391807-1c80-4a6d-8768-e64093b3c660 | 17 | 2 | 正式版本发布(第一版) | other | not_started | medium | 0.00 | 100.00 | FS | 0 | 0 | 1 | 1608 | 2026-05-25T16:00:00.000Z | 2026-05-26T16:00:00.000Z | 0 | 2 | 3 | 1 | 2026-05-03T05:39:29.000Z | 2026-05-03T05:39:29.000Z | 426 | 叶协通 | MX20 | 2198 | not_started | not_started | normal | 9f0e3933-300e-4467-a881-0c770f9b0e4c | 2 |
| 1d556e78-feb1-4858-8312-862dce76a0a7 | 17 | 2 | 正式版本发布(第二版) | other | not_started | medium | 0.00 | 100.00 | FS | 0 | 0 | 1 | 1608 | 2026-05-27T16:00:00.000Z | 2026-07-08T16:00:00.000Z | 0 | 43 | 3 | 1 | 2026-05-03T05:39:29.000Z | 2026-05-03T05:39:29.000Z | 427 | 叶协通 | MX20 | 2198 | not_started | not_started | normal | 9f0e3933-300e-4467-a881-0c770f9b0e4c | 30 |
| 7ac78b15-7b50-486d-b29d-395b783289c7 | 17 | 1 | 2198 控制面板、TGC和编码器板卡 | board | not_started | medium | 0.00 | 100.00 | FS | 0 | 0 | 1 | 1608 | 2026-02-05T16:00:00.000Z | 2026-06-17T16:00:00.000Z | 0 | 133 | 3 | 1 | 2026-05-03T05:39:29.000Z | 2026-05-03T05:39:29.000Z | 428 | 叶协通 | MX20 | 2198 | not_started | not_started | normal |  | 90 |
| 83a85ae7-5aa4-4124-9def-a05a70ac3ba4 | 17 | 2 | 原理图质量活动 | other | not_started | medium | 0.00 | 100.00 | FS | 0 | 0 | 1 | 1608 | 2026-02-08T16:00:00.000Z | 2026-03-12T16:00:00.000Z | 0 | 33 | 3 | 1 | 2026-05-03T05:39:29.000Z | 2026-05-03T05:39:29.000Z | 429 | 叶协通 | MX20 | 2198 | delayed | not_started | delayed | 7ac78b15-7b50-486d-b29d-395b783289c7 | 25 |
| 2826f853-42f3-4216-b180-cc69d8040dad | 17 | 3 | PCB布局 | other | not_started | medium | 0.00 | 100.00 | FS | 0 | 0 | 1 | 1608 | 2026-03-15T16:00:00.000Z | 2026-03-19T16:00:00.000Z | 0 | 5 | 3 | 1 | 2026-05-03T05:39:29.000Z | 2026-05-03T05:39:29.000Z | 430 | 叶协通 | MX20 | 2198 | delayed | not_started | delayed | 83a85ae7-5aa4-4124-9def-a05a70ac3ba4 | 5 |
| 7c3cf17a-0fb3-472e-833b-dc11d05cc0f1 | 17 | 2 | PCB走线 | other | not_started | medium | 0.00 | 100.00 | FS | 0 | 0 | 1 | 1608 | 2026-03-22T16:00:00.000Z | 2026-03-24T16:00:00.000Z | 0 | 3 | 3 | 1 | 2026-05-03T05:39:29.000Z | 2026-05-03T05:39:29.000Z | 431 | 叶协通 | MX20 | 2198 | delayed | not_started | delayed | 7ac78b15-7b50-486d-b29d-395b783289c7 | 3 |
| d3f74f47-260d-46ab-9f19-174393e24890 | 17 | 2 | PCB投板和PCBA打样 | other | not_started | medium | 0.00 | 100.00 | FS | 0 | 0 | 1 | 1608 | 2026-03-25T16:00:00.000Z | 2026-05-18T16:00:00.000Z | 0 | 55 | 3 | 1 | 2026-05-03T05:39:29.000Z | 2026-05-03T05:39:29.000Z | 432 | 叶协通 | MX20 | 2198 | not_started | not_started | normal | 7ac78b15-7b50-486d-b29d-395b783289c7 | 35 |
| c4db6f5d-d951-43ac-be44-675580c0de58 | 17 | 2 | 板卡硬件测试 | other | delay_warning | medium | 0.00 | 100.00 | FS | 0 | 0 | 1 | 1608 | 2026-03-22T16:00:00.000Z | 2026-05-06T16:00:00.000Z | 0 | 46 | 3 | 3 | 2026-05-03T05:39:29.000Z | 2026-05-05T17:00:00.000Z | 433 | 叶协通 | MX20 | 2198 | delay_warning | not_started | warning | 7ac78b15-7b50-486d-b29d-395b783289c7 | 30 |
| 80c22138-80ac-44b3-8e8b-b9399975e1a2 | 17 | 2 | 板卡PCB板PLM归档 | other | delay_warning | medium | 0.00 | 100.00 | FS | 0 | 0 | 1 | 1608 | 2026-05-03T16:00:00.000Z | 2026-05-05T16:00:00.000Z | 0 | 3 | 3 | 3 | 2026-05-03T05:39:29.000Z | 2026-05-05T17:00:00.000Z | 434 | 叶协通 | MX20 | 2198 | delay_warning | not_started | warning | 7ac78b15-7b50-486d-b29d-395b783289c7 | 2 |
| 1546a2fa-7ae6-4f96-aac7-ea409b053f76 | 17 | 2 | 板卡PCBA归档 | other | not_started | medium | 0.00 | 100.00 | FS | 0 | 0 | 1 | 1608 | 2026-05-05T16:00:00.000Z | 2026-06-16T16:00:00.000Z | 0 | 43 | 3 | 1 | 2026-05-03T05:39:29.000Z | 2026-05-03T05:39:29.000Z | 435 | 叶协通 | MX20 | 2198 | not_started | not_started | normal | 7ac78b15-7b50-486d-b29d-395b783289c7 | 30 |
| d5be8a2e-398e-4971-954f-1ecc8b8d3303 | 16 | 1 | 2188 心脏机ECG固件联调 | firmware | not_started | medium | 0.00 | 100.00 | FS | 0 | 0 | 1 | 1608 | 2025-11-30T16:00:00.000Z | 2026-05-13T16:00:00.000Z | 0 | 165 | 3 | 1 | 2026-05-03T05:39:29.000Z | 2026-05-03T05:39:29.000Z | 436 | 叶协通 | 超高端心脏机 | 2188 | not_started | not_started | normal |  | 109 |
| 5934185c-8811-4352-b4e7-abdbbc39d1ea | 16 | 2 | 需求收集 | other | not_started | medium | 0.00 | 100.00 | FS | 0 | 0 | 1 | 1608 | 2025-11-30T16:00:00.000Z | 2025-12-30T16:00:00.000Z | 0 | 31 | 3 | 1 | 2026-05-03T05:39:29.000Z | 2026-05-03T05:39:29.000Z | 437 | 叶协通 | 超高端心脏机 | 2188 | delayed | not_started | delayed | d5be8a2e-398e-4971-954f-1ecc8b8d3303 | 23 |
| 65c6e50e-fc5a-4f9c-92cb-d460902647b9 | 16 | 2 | 固件需求评审 | other | not_started | medium | 0.00 | 100.00 | FS | 0 | 0 | 1 | 1608 | 2025-12-31T16:00:00.000Z | 2026-01-20T16:00:00.000Z | 0 | 21 | 3 | 1 | 2026-05-03T05:39:29.000Z | 2026-05-03T05:39:29.000Z | 438 | 叶协通 | 超高端心脏机 | 2188 | delayed | not_started | delayed | d5be8a2e-398e-4971-954f-1ecc8b8d3303 | 15 |
| 44f46879-b625-4043-af0b-ae01a35918a6 | 16 | 2 | 代码移植和编译 | other | not_started | medium | 0.00 | 100.00 | FS | 0 | 0 | 1 | 1608 | 2025-12-31T16:00:00.000Z | 2026-01-25T16:00:00.000Z | 0 | 26 | 3 | 1 | 2026-05-03T05:39:29.000Z | 2026-05-03T05:39:29.000Z | 439 | 叶协通 | 超高端心脏机 | 2188 | delayed | not_started | delayed | d5be8a2e-398e-4971-954f-1ecc8b8d3303 | 18 |
| e839dbb9-71f6-4ea3-a712-769d7fa3a0c2 | 16 | 2 | 固件调试测试 | other | not_started | medium | 0.00 | 100.00 | FS | 0 | 0 | 1 | 1608 | 2026-01-26T16:00:00.000Z | 2026-04-22T16:00:00.000Z | 0 | 87 | 3 | 1 | 2026-05-03T05:39:29.000Z | 2026-05-03T05:39:29.000Z | 440 | 叶协通 | 超高端心脏机 | 2188 | delayed | not_started | delayed | d5be8a2e-398e-4971-954f-1ecc8b8d3303 | 57 |
| 3c488d33-7b76-434c-b8ae-27c11bf5cf9d | 16 | 2 | 在多普勒下自测 | other | not_started | medium | 0.00 | 100.00 | FS | 0 | 0 | 1 | 1608 | 2026-04-15T16:00:00.000Z | 2026-05-10T16:00:00.000Z | 0 | 26 | 3 | 1 | 2026-05-03T05:39:29.000Z | 2026-05-03T05:39:29.000Z | 441 | 叶协通 | 超高端心脏机 | 2188 | not_started | not_started | normal | d5be8a2e-398e-4971-954f-1ecc8b8d3303 | 15 |
| b971bbfe-05f4-4772-8f6e-b89b7160d25f | 16 | 2 | 固件方案评审 | other | not_started | medium | 0.00 | 100.00 | FS | 0 | 0 | 1 | 1608 | 2026-05-06T16:00:00.000Z | 2026-05-12T16:00:00.000Z | 0 | 7 | 3 | 1 | 2026-05-03T05:39:29.000Z | 2026-05-03T05:39:29.000Z | 442 | 叶协通 | 超高端心脏机 | 2188 | not_started | not_started | normal | d5be8a2e-398e-4971-954f-1ecc8b8d3303 | 5 |
| ff25f018-57e1-4eef-b996-c302a4493d35 | 16 | 2 | 版本发布(按照版本发布时间填写) | other | not_started | medium | 0.00 | 100.00 | FS | 0 | 0 | 1 | 1608 | 2026-01-26T16:00:00.000Z | 2026-04-22T16:00:00.000Z | 0 | 87 | 3 | 1 | 2026-05-03T05:39:29.000Z | 2026-05-03T05:39:29.000Z | 443 | 叶协通 | 超高端心脏机 | 2188 | delayed | not_started | delayed | d5be8a2e-398e-4971-954f-1ecc8b8d3303 | 57 |
| ad8b9c4c-2b29-417c-90df-97fb213450f6 | 16 | 2 | 版本发布 | other | not_started | medium | 0.00 | 100.00 | FS | 0 | 0 | 1 | 1608 | 2026-01-26T16:00:00.000Z | 2026-05-21T16:00:00.000Z | 0 | 116 | 3 | 1 | 2026-05-03T05:39:29.000Z | 2026-05-03T05:39:29.000Z | 444 | 叶协通 | 超高端心脏机 | 2188 | not_started | not_started | normal | d5be8a2e-398e-4971-954f-1ecc8b8d3303 | 75 |
| 3cedd752-602c-4d84-8319-377d01b37c06 | 16 | 2 | 临时版本发布(第一版) | other | not_started | medium | 0.00 | 100.00 | FS | 0 | 0 | 1 | 1608 | 2026-05-11T16:00:00.000Z | 2026-06-01T16:00:00.000Z | 0 | 22 | 3 | 1 | 2026-05-03T05:39:29.000Z | 2026-05-03T05:39:29.000Z | 445 | 叶协通 | 超高端心脏机 | 2188 | not_started | not_started | normal | d5be8a2e-398e-4971-954f-1ecc8b8d3303 | 15 |
| 3578e16f-9d2b-4b1b-b1df-dbf0eba4cfeb | 16 | 2 | 临时版本发布(第二版) | other | not_started | medium | 0.00 | 100.00 | FS | 0 | 0 | 1 | 1608 | 2026-06-01T16:00:00.000Z | 2026-06-21T16:00:00.000Z | 0 | 21 | 3 | 1 | 2026-05-03T05:39:29.000Z | 2026-05-03T05:39:29.000Z | 446 | 叶协通 | 超高端心脏机 | 2188 | not_started | not_started | normal | d5be8a2e-398e-4971-954f-1ecc8b8d3303 | 15 |
| 68affcb1-2669-4c12-874a-138614bdb5f9 | 16 | 1 | 2188 心脏机控制面板固件 | firmware | not_started | medium | 0.00 | 100.00 | FS | 0 | 0 | 1 | 1608 | 2025-06-22T16:00:00.000Z | 2026-06-14T16:00:00.000Z | 0 | 358 | 3 | 1 | 2026-05-03T05:39:29.000Z | 2026-05-03T05:39:29.000Z | 447 | 叶协通 | 超高端心脏机 | 2188 | not_started | not_started | normal |  | 245 |
| bf201274-3192-49a1-8f1a-7132b94619c5 | 16 | 2 | 2188控制面板需求和硬件方案评审 | other | not_started | medium | 0.00 | 100.00 | FS | 0 | 0 | 1 | 1608 | 2025-06-22T16:00:00.000Z | 2025-09-04T16:00:00.000Z | 0 | 75 | 3 | 1 | 2026-05-03T05:39:29.000Z | 2026-05-03T05:39:29.000Z | 448 | 叶协通 | 超高端心脏机 | 2188 | delayed | not_started | delayed | 68affcb1-2669-4c12-874a-138614bdb5f9 | 55 |
| e41d5a13-d415-4c5c-8725-14200f3d4175 | 16 | 2 | 2188控制面板正式版本发布(第一版) | other | delay_warning | medium | 0.00 | 100.00 | FS | 0 | 0 | 1 | 1608 | 2026-02-28T16:00:00.000Z | 2026-05-05T16:00:00.000Z | 0 | 67 | 3 | 3 | 2026-05-03T05:39:29.000Z | 2026-05-05T17:00:00.000Z | 449 | 叶协通 | 超高端心脏机 | 2188 | delay_warning | not_started | warning | 68affcb1-2669-4c12-874a-138614bdb5f9 | 45 |
| 34793f6f-3681-44a8-9c43-90c54f6492e1 | 16 | 2 | 2188控制面板正式版本发布(第二版) | other | not_started | medium | 0.00 | 100.00 | FS | 0 | 0 | 1 | 1608 | 2026-05-03T16:00:00.000Z | 2026-06-15T16:00:00.000Z | 0 | 44 | 3 | 1 | 2026-05-03T05:39:29.000Z | 2026-05-03T05:39:29.000Z | 450 | 叶协通 | 超高端心脏机 | 2188 | not_started | not_started | normal | 68affcb1-2669-4c12-874a-138614bdb5f9 | 30 |
| 449fb3ea-1faa-4dfb-b8d6-f97365dfa691 | 16 | 1 | 2188 心脏机组合按键板MCU选型和测试 | board | not_started | medium | 0.00 | 100.00 | FS | 0 | 0 | 1 | 1608 | 2025-11-02T16:00:00.000Z | 2026-07-14T16:00:00.000Z | 0 | 255 | 3 | 1 | 2026-05-03T05:39:29.000Z | 2026-05-03T05:39:29.000Z | 451 | 叶协通 | 超高端心脏机 | 2188 | not_started | not_started | normal |  | 172 |
| 7f0c9ec8-8fba-4ada-90e2-5b3dbcfcef8d | 16 | 2 | 2188组合按键板需求评审 | other | not_started | medium | 0.00 | 100.00 | FS | 0 | 0 | 1 | 1608 | 2025-11-06T16:00:00.000Z | 2025-11-09T16:00:00.000Z | 0 | 4 | 3 | 1 | 2026-05-03T05:39:29.000Z | 2026-05-03T05:39:29.000Z | 452 | 叶协通 | 超高端心脏机 | 2188 | delayed | not_started | delayed | 449fb3ea-1faa-4dfb-b8d6-f97365dfa691 | 2 |
| 4cb29b4a-967e-4f41-babc-2cd1ef445e91 | 16 | 2 | 2188组合按键按键板MCU选型 | other | not_started | medium | 0.00 | 100.00 | FS | 0 | 0 | 1 | 1608 | 2026-01-07T16:00:00.000Z | 2026-02-03T16:00:00.000Z | 0 | 28 | 3 | 1 | 2026-05-03T05:39:29.000Z | 2026-05-03T05:39:29.000Z | 453 | 叶协通 | 超高端心脏机 | 2188 | delayed | not_started | delayed | 449fb3ea-1faa-4dfb-b8d6-f97365dfa691 | 15 |
| 18b31565-9df7-44d1-9b99-8970e662c897 | 16 | 2 | 2188组合按键动画显示测试 | other | not_started | medium | 0.00 | 100.00 | FS | 0 | 0 | 1 | 1608 | 2026-01-28T16:00:00.000Z | 2027-09-06T16:00:00.000Z | 0 | 587 | 3 | 1 | 2026-05-03T05:39:29.000Z | 2026-05-03T05:39:29.000Z | 454 | 叶协通 | 超高端心脏机 | 2188 | not_started | not_started | normal | 449fb3ea-1faa-4dfb-b8d6-f97365dfa691 | 405 |
| a89937e6-6351-4b9e-9c2d-2572791cbb3c | 15 | 1 | 2180项目组合按键板更板和演示固件调试 | board | not_started | medium | 0.00 | 100.00 | FS | 0 | 0 | 1 | 1608 | 2025-03-18T16:00:00.000Z | 2026-05-13T16:00:00.000Z | 0 | 422 | 3 | 1 | 2026-05-03T05:39:29.000Z | 2026-05-03T05:39:29.000Z | 455 | 叶协通 | 超高端妇产机 | 2180 | not_started | not_started | normal |  | 292 |
| b41fbd49-69f2-4d4b-9237-b60bc73f5bd4 | 15 | 2 | PCB板归档和PCBA归档流程 | other | delay_warning | medium | 0.00 | 100.00 | FS | 0 | 0 | 1 | 1608 | 2026-04-30T16:00:00.000Z | 2026-05-06T16:00:00.000Z | 0 | 7 | 3 | 3 | 2026-05-03T05:39:29.000Z | 2026-05-05T17:00:00.000Z | 456 | 叶协通 | 超高端妇产机 | 2180 | delay_warning | not_started | warning | a89937e6-6351-4b9e-9c2d-2572791cbb3c | 3 |
| 5437a621-f963-4dff-aec9-b3bad59c9180 | 15 | 2 | 版本发布(按照版本发布时间填写) | other | not_started | medium | 0.00 | 100.00 | FS | 0 | 0 | 1 | 1608 | 2026-04-12T16:00:00.000Z | 2026-05-14T16:00:00.000Z | 0 | 33 | 3 | 1 | 2026-05-03T05:39:29.000Z | 2026-05-03T05:39:29.000Z | 457 | 叶协通 | 超高端妇产机 | 2180 | not_started | not_started | normal | a89937e6-6351-4b9e-9c2d-2572791cbb3c | 22 |
| a90ac1da-831e-4876-a385-d9857fdd1c34 | 15 | 3 | CodeReview | other | not_started | medium | 0.00 | 100.00 | FS | 0 | 0 | 1 | 1608 | 2026-05-12T16:00:00.000Z | 2026-08-04T16:00:00.000Z | 0 | 85 | 3 | 1 | 2026-05-03T05:39:29.000Z | 2026-05-03T05:39:29.000Z | 458 | 叶协通 | 超高端妇产机 | 2180 | not_started | not_started | normal | 5437a621-f963-4dff-aec9-b3bad59c9180 | 60 |
| 0c86fbd4-15ad-4c3c-85c2-a9c76e974fa1 | 15 | 3 | 临时版本发布(第一版) | other | not_started | medium | 0.00 | 100.00 | FS | 0 | 0 | 1 | 1608 | 2026-08-30T16:00:00.000Z | 2026-08-31T16:00:00.000Z | 0 | 2 | 3 | 1 | 2026-05-03T05:39:29.000Z | 2026-05-03T05:39:29.000Z | 459 | 叶协通 | 超高端妇产机 | 2180 | not_started | not_started | normal | 5437a621-f963-4dff-aec9-b3bad59c9180 | 2 |
| 78c1894b-63d3-42ba-ae0e-25a45295fd74 | 15 | 3 | 正式版本发布(第一版) | other | not_started | medium | 0.00 | 100.00 | FS | 0 | 0 | 1 | 1608 | 2026-11-01T16:00:00.000Z | 2026-12-10T16:00:00.000Z | 0 | 40 | 3 | 1 | 2026-05-03T05:39:29.000Z | 2026-05-03T05:39:29.000Z | 460 | 叶协通 | 超高端妇产机 | 2180 | not_started | not_started | normal | 5437a621-f963-4dff-aec9-b3bad59c9180 | 30 |
| 054cc747-0659-4887-8f69-d154a2646305 | 15 | 3 | 正式版本发布(第二版) | other | not_started | medium | 0.00 | 100.00 | FS | 0 | 0 | 1 | 1608 | 2026-12-13T16:00:00.000Z | 2026-12-24T16:00:00.000Z | 0 | 12 | 3 | 1 | 2026-05-03T05:39:29.000Z | 2026-05-03T05:39:29.000Z | 461 | 叶协通 | 超高端妇产机 | 2180 | not_started | not_started | normal | 5437a621-f963-4dff-aec9-b3bad59c9180 | 10 |
| f01c0895-c454-4c12-86e2-5e00af207d76 | 15 | 1 | 2180项目组合按键板更板和演示固件调试 | board | not_started | medium | 0.00 | 100.00 | FS | 0 | 0 | 1 | 1608 | 2025-03-18T16:00:00.000Z | 2026-03-08T16:00:00.000Z | 0 | 356 | 3 | 1 | 2026-05-03T05:39:29.000Z | 2026-05-03T05:39:29.000Z | 462 | 叶协通 | 超高端妇产机 | 2180 | delayed | not_started | delayed |  | 248 |
| 07327e62-200e-4bf4-9c2f-953aeb03f229 | 15 | 2 | PCB板归档和PCBA归档流程 | other | not_started | medium | 0.00 | 100.00 | FS | 0 | 0 | 1 | 1608 | 2026-01-11T16:00:00.000Z | 2026-02-26T16:00:00.000Z | 0 | 47 | 3 | 1 | 2026-05-03T05:39:29.000Z | 2026-05-03T05:39:29.000Z | 463 | 叶协通 | 超高端妇产机 | 2180 | delayed | not_started | delayed | f01c0895-c454-4c12-86e2-5e00af207d76 | 30 |
| 32055df4-104d-4d61-9fec-fc905e6fe1cb | 16 | 1 | 2188 心脏机ECG固件联调 | firmware | not_started | medium | 0.00 | 100.00 | FS | 0 | 0 | 1 | 1608 | 2025-11-30T16:00:00.000Z | 2026-04-08T16:00:00.000Z | 0 | 130 | 3 | 1 | 2026-05-03T05:39:29.000Z | 2026-05-03T05:39:29.000Z | 464 | 叶协通 | 超高端心脏机 | 2188 | delayed | not_started | delayed |  | 87 |
| 01cc6ab7-e326-40ee-b59b-6c11273a7d1b | 16 | 2 | 需求收集 | other | not_started | medium | 0.00 | 100.00 | FS | 0 | 0 | 1 | 1608 | 2025-11-30T16:00:00.000Z | 2025-12-30T16:00:00.000Z | 0 | 31 | 3 | 1 | 2026-05-03T05:39:29.000Z | 2026-05-03T05:39:29.000Z | 465 | 叶协通 | 超高端心脏机 | 2188 | delayed | not_started | delayed | 32055df4-104d-4d61-9fec-fc905e6fe1cb | 23 |
| fbf2acb4-641b-4b1c-946c-a76ea2337293 | 16 | 2 | 固件需求评审 | other | not_started | medium | 0.00 | 100.00 | FS | 0 | 0 | 1 | 1608 | 2025-12-31T16:00:00.000Z | 2026-01-20T16:00:00.000Z | 0 | 21 | 3 | 1 | 2026-05-03T05:39:29.000Z | 2026-05-03T05:39:29.000Z | 466 | 叶协通 | 超高端心脏机 | 2188 | delayed | not_started | delayed | 32055df4-104d-4d61-9fec-fc905e6fe1cb | 15 |
| fcd5863b-3d29-49bb-afe0-3cbe58ad32ef | 16 | 2 | 代码移植和编译 | other | not_started | medium | 0.00 | 100.00 | FS | 0 | 0 | 1 | 1608 | 2025-12-31T16:00:00.000Z | 2026-01-25T16:00:00.000Z | 0 | 26 | 3 | 1 | 2026-05-03T05:39:29.000Z | 2026-05-03T05:39:29.000Z | 467 | 叶协通 | 超高端心脏机 | 2188 | delayed | not_started | delayed | 32055df4-104d-4d61-9fec-fc905e6fe1cb | 18 |
| a80c2ed7-8b1e-46e3-9603-9143473e71f1 | 16 | 2 | 固件调试测试 | other | not_started | medium | 0.00 | 100.00 | FS | 0 | 0 | 1 | 1608 | 2026-01-26T16:00:00.000Z | 2026-02-25T16:00:00.000Z | 0 | 31 | 3 | 1 | 2026-05-03T05:39:29.000Z | 2026-05-03T05:39:29.000Z | 468 | 叶协通 | 超高端心脏机 | 2188 | delayed | not_started | delayed | 32055df4-104d-4d61-9fec-fc905e6fe1cb | 18 |
| f9dc1ea9-4d04-41d5-a881-17c07ae45209 | 16 | 2 | 在多普勒下自测 | other | not_started | medium | 0.00 | 100.00 | FS | 0 | 0 | 1 | 1608 | 2026-02-19T16:00:00.000Z | 2026-03-11T16:00:00.000Z | 0 | 21 | 3 | 1 | 2026-05-03T05:39:29.000Z | 2026-05-03T05:39:29.000Z | 469 | 叶协通 | 超高端心脏机 | 2188 | delayed | not_started | delayed | 32055df4-104d-4d61-9fec-fc905e6fe1cb | 15 |
| ec2d036d-4ff1-4ee6-8552-cb0117f0e338 | 16 | 2 | 版本发布(按照版本发布时间填写) | other | not_started | medium | 0.00 | 100.00 | FS | 0 | 0 | 1 | 1608 | 2026-01-26T16:00:00.000Z | 2026-03-15T16:00:00.000Z | 0 | 49 | 3 | 1 | 2026-05-03T05:39:29.000Z | 2026-05-03T05:39:29.000Z | 470 | 叶协通 | 超高端心脏机 | 2188 | delayed | not_started | delayed | 32055df4-104d-4d61-9fec-fc905e6fe1cb | 30 |
| 84c71044-fb87-4c07-a301-834607948317 | 16 | 2 | 版本发布 | other | not_started | medium | 0.00 | 100.00 | FS | 0 | 0 | 1 | 1608 | 2026-01-26T16:00:00.000Z | 2026-02-04T16:00:00.000Z | 0 | 10 | 3 | 1 | 2026-05-03T05:39:29.000Z | 2026-05-03T05:39:29.000Z | 471 | 叶协通 | 超高端心脏机 | 2188 | delayed | not_started | delayed | 32055df4-104d-4d61-9fec-fc905e6fe1cb | 3 |
| 8aea26dd-6bf0-42cf-b99f-0e4182bd859a | 16 | 2 | 临时版本发布(第一版) | other | not_started | medium | 0.00 | 100.00 | FS | 0 | 0 | 1 | 1608 | 2026-01-29T16:00:00.000Z | 2026-02-22T16:00:00.000Z | 0 | 25 | 3 | 1 | 2026-05-03T05:39:29.000Z | 2026-05-03T05:39:29.000Z | 472 | 叶协通 | 超高端心脏机 | 2188 | delayed | not_started | delayed | 32055df4-104d-4d61-9fec-fc905e6fe1cb | 15 |
| 7b5b6cf7-2aa1-48a0-9174-42037b9dd0fa | 16 | 2 | 临时版本发布(第二版) | other | not_started | medium | 0.00 | 100.00 | FS | 0 | 0 | 1 | 1608 | 2026-02-19T16:00:00.000Z | 2026-03-11T16:00:00.000Z | 0 | 21 | 3 | 1 | 2026-05-03T05:39:29.000Z | 2026-05-03T05:39:29.000Z | 473 | 叶协通 | 超高端心脏机 | 2188 | delayed | not_started | delayed | 32055df4-104d-4d61-9fec-fc905e6fe1cb | 15 |
| 11cc1088-2e70-49cf-a683-389946930460 | 16 | 1 | 2188 心脏机控制面板固件 | firmware | not_started | medium | 0.00 | 100.00 | FS | 0 | 0 | 1 | 1608 | 2025-06-22T16:00:00.000Z | 2026-06-14T16:00:00.000Z | 0 | 358 | 3 | 1 | 2026-05-03T05:39:29.000Z | 2026-05-03T05:39:29.000Z | 474 | 叶协通 | 超高端心脏机 | 2188 | not_started | not_started | normal |  | 245 |
| 28338aa8-8872-4e07-8ef5-65552bdd209d | 16 | 2 | 2188控制面板需求和硬件方案评审 | other | not_started | medium | 0.00 | 100.00 | FS | 0 | 0 | 1 | 1608 | 2025-06-22T16:00:00.000Z | 2025-09-04T16:00:00.000Z | 0 | 75 | 3 | 1 | 2026-05-03T05:39:29.000Z | 2026-05-03T05:39:29.000Z | 475 | 叶协通 | 超高端心脏机 | 2188 | delayed | not_started | delayed | 11cc1088-2e70-49cf-a683-389946930460 | 55 |
| f269a366-89d1-4aff-b9a2-14a0ed8850ed | 16 | 2 | 2188控制面板正式版本发布(第一版) | other | not_started | medium | 0.00 | 100.00 | FS | 0 | 0 | 1 | 1608 | 2026-02-28T16:00:00.000Z | 2026-04-09T16:00:00.000Z | 0 | 41 | 3 | 1 | 2026-05-03T05:39:29.000Z | 2026-05-03T05:39:29.000Z | 476 | 叶协通 | 超高端心脏机 | 2188 | delayed | not_started | delayed | 11cc1088-2e70-49cf-a683-389946930460 | 30 |
| 6f134d9c-3eca-461d-bc4c-ad65fd321130 | 16 | 2 | 2188控制面板正式版本发布(第二版) | other | not_started | medium | 0.00 | 100.00 | FS | 0 | 0 | 1 | 1608 | 2026-04-12T16:00:00.000Z | 2026-05-26T16:00:00.000Z | 0 | 45 | 3 | 1 | 2026-05-03T05:39:29.000Z | 2026-05-03T05:39:29.000Z | 477 | 叶协通 | 超高端心脏机 | 2188 | not_started | not_started | normal | 11cc1088-2e70-49cf-a683-389946930460 | 30 |
| 5fd910b1-bff5-462a-9559-35bb221bb5d4 | 16 | 1 | 2188 心脏机组合按键板MCU选型和测试 | board | not_started | medium | 0.00 | 100.00 | FS | 0 | 0 | 1 | 1608 | 2025-11-02T16:00:00.000Z | 2026-07-14T16:00:00.000Z | 0 | 255 | 3 | 1 | 2026-05-03T05:39:29.000Z | 2026-05-03T05:39:29.000Z | 478 | 叶协通 | 超高端心脏机 | 2188 | not_started | not_started | normal |  | 172 |
| bd47742a-005e-47d5-afc9-f5256c5adb13 | 16 | 2 | 2188组合按键板需求评审 | other | not_started | medium | 0.00 | 100.00 | FS | 0 | 0 | 1 | 1608 | 2025-11-06T16:00:00.000Z | 2025-11-09T16:00:00.000Z | 0 | 4 | 3 | 1 | 2026-05-03T05:39:29.000Z | 2026-05-03T05:39:29.000Z | 479 | 叶协通 | 超高端心脏机 | 2188 | delayed | not_started | delayed | 5fd910b1-bff5-462a-9559-35bb221bb5d4 | 2 |

| id | project_id | wbs_level | description | task_type | status | priority | progress | full_time_ratio | dependency_type | delay_count | plan_change_count | progress_record_count | assignee_id | start_date | end_date | is_six_day_week | planned_duration | warning_days | version | created_at | updated_at | sort_order | assignee_name | project_name | project_code | computed_status | computed_execution_status | computed_time_status | parent_id | duration | predecessor_id |
| --- | --- | --- | --- | --- | --- | --- | --- | --- | --- | --- | --- | --- | --- | --- | --- | --- | --- | --- | --- | --- | --- | --- | --- | --- | --- | --- | --- | --- | --- | --- | --- |
| fefcbba1-475a-4aaa-8601-a0211536b41d | 16 | 2 | 2188组合按键按键板MCU选型 | other | not_started | medium | 0.00 | 100.00 | FS | 0 | 0 | 1 | 1608 | 2026-01-07T16:00:00.000Z | 2026-02-03T16:00:00.000Z | 0 | 28 | 3 | 1 | 2026-05-03T05:39:29.000Z | 2026-05-03T05:39:29.000Z | 480 | 叶协通 | 超高端心脏机 | 2188 | delayed | not_started | delayed | 5fd910b1-bff5-462a-9559-35bb221bb5d4 | 15 |  |
| 7399f4b4-178f-4681-a5d1-869dc093e9db | 16 | 2 | 2188组合按键动画显示测试 | other | not_started | medium | 0.00 | 100.00 | FS | 0 | 0 | 1 | 1608 | 2026-01-28T16:00:00.000Z | 2026-02-22T16:00:00.000Z | 0 | 26 | 3 | 1 | 2026-05-03T05:39:29.000Z | 2026-05-03T05:39:29.000Z | 481 | 叶协通 | 超高端心脏机 | 2188 | delayed | not_started | delayed | 5fd910b1-bff5-462a-9559-35bb221bb5d4 | 15 |  |
| 1a6fccdc-2870-4e29-98da-02b98da813b6 | 15 | 1 | 2180项目组合按键板更板和演示固件调试 | board | not_started | medium | 0.00 | 100.00 | FS | 0 | 0 | 1 | 1608 | 2025-03-18T16:00:00.000Z | 2026-02-08T16:00:00.000Z | 0 | 328 | 3 | 1 | 2026-05-03T05:39:29.000Z | 2026-05-03T05:39:29.000Z | 482 | 叶协通 | 超高端妇产机 | 2180 | delayed | not_started | delayed |  | 228 |  |
| 50ebeaa6-7d27-4b89-a7fa-73465b8f63cc | 15 | 2 | PCB板归档和PCBA归档流程 | other | not_started | medium | 0.00 | 100.00 | FS | 0 | 0 | 1 | 1608 | 2026-02-01T16:00:00.000Z | 2026-02-04T16:00:00.000Z | 0 | 4 | 3 | 1 | 2026-05-03T05:39:29.000Z | 2026-05-03T05:39:29.000Z | 483 | 叶协通 | 超高端妇产机 | 2180 | delayed | not_started | delayed | 1a6fccdc-2870-4e29-98da-02b98da813b6 | 3 |  |
| 7f811609-acc7-485c-b670-401e84e01345 | 25 | 1 | TC-TASK-11-CHAIN-A-1778040036801 | other | not_started | medium | 0.00 | 100.00 | FS | 0 | 0 | 1 |  | 2026-05-05T16:00:00.000Z | 2026-05-11T16:00:00.000Z | 0 | 7 | 3 | 1 | 2026-05-06T04:00:36.000Z | 2026-05-06T04:00:36.000Z | 500 |  | 测试项目-任务测试 | TEST-PROJ-001 | not_started | not_started | normal |  | 5 |  |
| 8b598145-a97a-4ed4-8f03-6cbb6119421e | 25 | 1 | TC-TASK-11-CHAIN-B-1778040036851 | other | not_started | medium | 0.00 | 100.00 | FS | 0 | 0 | 1 |  | 2026-05-12T16:00:00.000Z | 2026-05-14T16:00:00.000Z | 0 | 3 | 3 | 1 | 2026-05-06T04:00:36.000Z | 2026-05-06T04:00:36.000Z | 600 |  | 测试项目-任务测试 | TEST-PROJ-001 | not_started | not_started | normal |  | 3 | 7f811609-acc7-485c-b670-401e84e01345 |
| 9eb8afdc-6875-42f1-8ea2-edb5d18b35c5 | 25 | 1 | TC-TASK-11-CHAIN-C-1778040036906 | other | not_started | medium | 0.00 | 100.00 | FS | 0 | 0 | 1 |  | 2026-05-15T16:00:00.000Z | 2026-05-19T16:00:00.000Z | 0 | 5 | 3 | 1 | 2026-05-06T04:00:36.000Z | 2026-05-06T04:00:36.000Z | 700 |  | 测试项目-任务测试 | TEST-PROJ-001 | not_started | not_started | normal |  | 4 | 8b598145-a97a-4ed4-8f03-6cbb6119421e |
| 86d67abb-47ba-4e51-bb29-5556577cfe6b | 24 | 1 | 测试任务_自动刷新_1777904196231 | other | not_started | medium | 0.00 | 100.00 | FS | 0 | 0 | 1 |  | 2026-05-03T16:00:00.000Z | 2026-05-03T16:00:00.000Z | 0 | 1 | 3 | 2 | 2026-05-04T14:16:38.000Z | 2026-05-05T00:48:07.000Z | 1600 |  | 预研项目 | X_1 | delayed | not_started | delayed |  |  |  |
| d3d440cb-f347-4224-ae6c-bea766ed3cf4 | 24 | 1 | 测试任务B-WBS重算验证 | other | not_started | medium | 0.00 | 100.00 | FS | 0 | 0 | 1 |  | 2026-05-04T16:00:00.000Z | 2026-05-04T16:00:00.000Z | 0 | 1 | 3 | 1 | 2026-05-05T04:46:23.000Z | 2026-05-05T04:46:23.000Z | 1800 |  | 预研项目 | X_1 | delayed | not_started | delayed |  |  |  |
